# NCIA 3.0 LDAP

Schedule from MS Project, 2008-02-19 to 2008-03-25, A marks actual dates.
NCIA 3.0 LDAP
NCI

## Calendars

- Standard: Mon-Fri 08:00-12:00, 13:00-17:00; Sat-Sun off.

## Resources

| Resource |
| --- |
| Quality Assurance |
| NCIA Dev Team |
| SYS |
| Jill |
| EVS Team |
| Claire |
| Kober |
| OSU |
| Dbauer |
| Cblake |
| Dpalmer |
| Jfreymann |
| Abasu |
| Jzeng |
| Open Developer |
| Qpan |
| Tle |
| Yhu |
| Ywu |
| Project Manager |
| Technical Lead |
| Application Support |
| Cblake? |
| Tech Write |

## Schedule

| ID | WBS | Task | Duration | Start | Finish | Predecessors | Complete | Baseline start | Baseline finish | Baseline duration | Constraint | Resources | Work | Actual work |
| --- | --- | --- | --- | --- | --- | --- | --- | --- | --- | --- | --- | --- | --- | --- |
| 1 | 1 | **Release 3.0 - LDAP** | 25.25d | 2008-02-19 08:00 A | 2008-03-25 10:00 A |  | 100% | 2008-02-19 08:00 | 2008-03-21 13:30 | 23.56d |  | Jzeng [50%]; Dpalmer | 1103.5h | 1103.5h |
| 2 | 1.1 | **Inception** | 2.12d | 2008-02-19 08:00 A | 2008-02-21 09:00 A |  | 100% | 2008-02-19 08:00 | 2008-02-21 09:00 | 2.12d |  |  | 14.5h | 14.5h |
| 3 | 1.1.1 | Solution and LOE | 3h | 2008-02-19 08:00 A | 2008-02-19 11:00 A |  | 100% | 2008-02-19 08:00 | 2008-02-19 11:00 | 3h | must start on 2008-02-19 08:00 | Jzeng | 3h | 3h |
| 4 | 1.1.2 | Obtain Approval of Solution | 1h | 2008-02-19 11:00 A | 2008-02-19 12:00 A | 3 | 100% | 2008-02-19 11:00 | 2008-02-19 12:00 | 1h |  | Jzeng; Dpalmer | 2h | 2h |
| 5 | 1.1.3 | Develop Project Plan and Review | 3h | 2008-02-19 13:00 A | 2008-02-19 16:00 A | 4 | 100% | 2008-02-19 13:00 | 2008-02-19 16:00 | 3h |  | Dpalmer [60%]; Jzeng [30%]; Cblake [60%] | 4.5h | 4.5h |
| 6 | 1.1.4 | Release Kick Off Meeting | 1h | 2008-02-21 08:00 A | 2008-02-21 09:00 A | 5FS+1d | 100% | 2008-02-21 08:00 | 2008-02-21 09:00 | 1h | must start on 2008-02-21 08:00 | Dpalmer; Jzeng; Cblake; Application Support; Quality Assurance | 5h | 5h |
| 7 | 1.2 | **Elaboration** | 0.25d | 2008-02-19 16:00 A | 2008-02-20 09:00 A | 5 | 100% | 2008-02-19 16:00 | 2008-02-20 09:00 | 0.25d |  |  | 3h | 3h |
| 8 | 1.2.1 | Update Use Case | 2h | 2008-02-19 16:00 A | 2008-02-20 09:00 A |  | 100% | 2008-02-19 16:00 | 2008-02-20 09:00 | 2h |  | Dpalmer; Jzeng [50%] | 3h | 3h |
| 9 | 1.3 | **Construction** | 9.25d | 2008-02-20 09:00 A | 2008-03-04 11:00 A | 7 | 100% | 2008-02-20 09:00 | 2008-03-05 12:00 | 10.38d |  |  | 259.2h | 259.2h |
| 10 | 1.3.1 | Assign Developer Tasks in Gforge | 2h | 2008-02-20 09:00 A | 2008-02-20 11:00 A |  | 100% | 2008-02-20 09:00 | 2008-02-20 11:00 | 2h |  | Dpalmer; Jzeng [50%] | 3h | 3h |
| 11 | 1.3.2 | **Develop Solution** | 9d | 2008-02-20 09:00 A | 2008-03-04 09:00 A |  | 100% | 2008-02-20 09:00 | 2008-03-04 09:00 | 9d |  | Qpan [75%]; Tle [80%]; Jzeng [10%] | 252.2h | 252.2h |
| 12 | 1.3.2.1 | Convert to LDAP | 72h | 2008-02-20 09:00 A | 2008-03-04 09:00 A |  | 100% | 2008-02-20 09:00 | 2008-03-04 09:00 | 72h |  | Jzeng | 72h | 72h |
| 13 | 1.3.2.2 | Convert to Central NCI UPT | 32h | 2008-02-20 09:00 A | 2008-02-26 09:00 A |  | 100% | 2008-02-20 09:00 | 2008-02-26 09:00 | 32h |  | Jzeng | 32h | 32h |
| 14 | 1.3.2.3 | Meet with Technical Write about Updates | 2h | 2008-02-27 09:00 A | 2008-02-27 11:00 A | 12FS-4d | 100% | 2008-02-27 09:00 | 2008-02-27 11:00 | 2h |  | Jzeng [50%]; Tech Write | 3h | 3h |
| 15 | 1.3.2.4 | Update On Line Help | 24h | 2008-02-27 11:00 A | 2008-03-03 11:00 A | 14 | 100% | 2008-02-27 11:00 | 2008-03-03 11:00 | 24h |  | Jzeng [50%]; Tech Write | 36h | 36h |
| 16 | 1.3.3 | Verify QA Test Script | 2h | 2008-03-04 09:00 A | 2008-03-04 11:00 A | 11 | 100% |  |  |  |  | Jzeng [50%]; Cblake [50%] | 2h | 2h |
| 17 | 1.3.4 | Request QA Deployment | 1h | 2008-03-04 08:00 A | 2008-03-04 09:00 A | 16FS-1h | 100% | 2008-03-04 13:00 | 2008-03-04 14:00 | 1h |  | Jzeng; Cblake | 2h | 2h |
| 18 | 1.4 | **Transition** | 15d | 2008-02-27 08:00 A | 2008-03-18 17:00 A | 9 | 100% | 2008-02-27 08:00 | 2008-03-21 13:30 | 17.56d |  |  | 350.8h | 350.8h |
| 19 | 1.4.1 | Deploy to QA | 8h | 2008-03-05 08:00 A | 2008-03-05 17:00 A |  | 100% | 2008-03-05 13:00 | 2008-03-06 12:00 | 8h | must start on 2008-03-05 08:00 | Cblake | 8h | 8h |
| 20 | 1.4.2 | **QA Testing** | 7d | 2008-02-27 08:00 A | 2008-03-06 17:00 A | 19 | 100% | 2008-02-27 08:00 | 2008-03-07 12:00 | 7.5d |  | Ywu | 67h | 67h |
| 21 | 1.4.2.1 | Setup LDAP Accounts in QA | 3h | 2008-02-27 08:00 A | 2008-02-27 11:00 A |  | 100% | 2008-02-27 08:00 | 2008-02-27 11:00 | 3h | must start on 2008-02-27 08:00 | Quality Assurance | 3h | 3h |
| 22 | 1.4.2.2 | Conduct LDAP Testing | 1d | 2008-03-06 08:00 A | 2008-03-06 17:00 A | 19 | 100% | 2008-03-06 13:00 | 2008-03-07 12:00 | 8h |  | Quality Assurance | 8h | 8h |
| 23 | 1.4.3 | Resolve QA Findings | 24h | 2008-03-07 08:00 A | 2008-03-11 17:00 A | 20FS-1h | 100% | 2008-03-07 11:00 | 2008-03-10 16:00 | 12h | must start on 2008-03-07 08:00 | NCIA Dev Team | 24h | 24h |
| 24 | 1.4.4 | Request Stage Deployment | 8h | 2008-03-12 08:00 A | 2008-03-12 17:00 A | 23 | 100% | 2008-03-07 16:00 | 2008-03-10 09:00 | 2h | start no earlier than 2008-02-17 08:00 | Ywu | 8h | 8h |
| 25 | 1.4.5 | Deploy to Stage | 8h | 2008-03-12 08:00 A | 2008-03-12 17:00 A | 24 | 100% | 2008-03-10 09:00 | 2008-03-12 09:00 | 16h |  | Cblake; SYS | 16h | 16h |
| 26 | 1.4.6 | Verify Stage | 8h | 2008-03-12 08:00 A | 2008-03-12 17:00 A | 25 | 100% | 2008-03-12 09:00 | 2008-03-12 12:00 | 3h |  | Cblake | 8h | 8h |

Notes:
- 5: Project Plan reviewed and approved by Jennifer and Carl.
- 6: Identify NCI areas that will need to be involved in supporting this release from QA through Production. Such as Database, Systems, Application Support, Customers, etc. / Attendees: / Fee, Craig, Nguyen, Cuong, Zeng, Jennifer, Blake, Carl
- 11: This is the final list of FR and BUGs that have been determined by the customer as being in the release.
- 12: Per the requirements defined in the Solution document
- 13: Per the requirements defined in the Solution document
- 15: Provide Technical Write with updates to on line help
- 16: Need to review the Test scripts prepared by QA from the release Use Cases.

| ID | WBS | Task | Type | Duration | Start | Finish | Predecessors | Complete | Baseline start | Baseline finish | Baseline duration | Constraint | Resources | Work | Actual work |
| --- | --- | --- | --- | --- | --- | --- | --- | --- | --- | --- | --- | --- | --- | --- | --- |
| 27 | 1.4.7 | **Convert User in Production to LDAP** |  | 5d | 2008-03-06 08:00 A | 2008-03-12 17:00 A |  | 100% | 2008-02-27 08:00 | 2008-02-29 17:00 | 3d |  | Application Support | 88.8h | 88.8h |
| 28 | 1.4.7.1 | Compile List and Action Items |  | 5d | 2008-03-06 08:00 A | 2008-03-12 17:00 A |  | 100% | 2008-02-27 08:00 | 2008-02-29 17:00 | 3d | must start on 2008-02-27 08:00 | Application Support | 40h | 40h |
| 29 | 1.4.7.2 | Write E-Mail Text, Anand to Approval |  | 8h | 2008-03-12 08:00 A | 2008-03-12 17:00 A |  | 100% | 2008-02-28 08:00 | 2008-02-28 11:00 | 3h | must start on 2008-02-28 08:00 | Application Support; Abasu [10%] | 8.8h | 8.8h |
| 30 | 1.4.8 | **UAT** |  | 6d | 2008-03-05 08:00 A | 2008-03-12 17:00 A |  | 100% | 2008-03-05 13:00 | 2008-03-13 12:00 | 6d |  | Cblake | 75h | 75h |
| 31 | 1.4.8.1 | UAT Plan - Test Script - Notify Participants |  | 24h | 2008-03-05 09:00 A | 2008-03-10 09:00 A | 25FS-5d | 100% | 2008-03-05 13:00 | 2008-03-05 15:00 | 2h |  | Cblake | 2h | 2h |
| 32 | 1.4.8.2 | Review UAT Plan |  | 1h | 2008-03-05 08:00 A | 2008-03-05 09:00 A | 31SF | 100% | 2008-03-05 13:00 | 2008-03-05 14:00 | 1h |  | Cblake; Dpalmer | 2h | 2h |
| 33 | 1.4.8.3 | Setup LDAP Accounts in Stage |  | 8h | 2008-03-12 08:00 A | 2008-03-12 17:00 A | 25 | 100% | 2008-03-12 09:00 | 2008-03-12 10:00 | 1h |  | Application Support; Cblake | 16h | 16h |
| 34 | 1.4.8.4 | Conduct UAT |  | 8h | 2008-03-12 08:00 A | 2008-03-12 17:00 A | 26 | 100% | 2008-03-12 13:00 | 2008-03-13 12:00 | 8h |  | Cblake | 8h | 8h |
| 35 | 1.4.9 | Develop Production Implementation Steps |  | 4h | 2008-03-07 08:00 A | 2008-03-07 12:00 A | 20 | 100% | 2008-03-07 13:00 | 2008-03-07 17:00 | 4h |  | Cblake; Dpalmer | 8h | 8h |
| 36 | 1.4.10 | Resolve UAT Findings |  | 8h | 2008-03-12 08:00 A | 2008-03-12 17:00 A | 30 | 100% | 2008-03-13 13:00 | 2008-03-18 12:00 | 24h |  | NCIA Dev Team | 8h | 8h |
| 37 | 1.4.11 | Create Production LDAP Accounts and UPT via Central UPT |  | 5d | 2008-03-12 08:00 A | 2008-03-18 17:00 A |  | 100% | 2008-03-05 13:00 | 2008-03-12 12:00 | 5d |  | Application Support | 40h | 40h |
| 38 | 1.5 | **Production** |  | 8.25d | 2008-03-13 08:00 A | 2008-03-25 10:00 A |  | 100% | 2008-03-18 13:00 | 2008-03-21 13:30 | 3.06d |  | Cblake; Dpalmer | 173h | 173h |
| 39 | 1.5.1 | Verify All FRs and BUGs have Cleared QA and UAT |  | 1h | 2008-03-13 08:00 A | 2008-03-13 09:00 A | 36 | 100% | 2008-03-18 13:00 | 2008-03-18 14:00 | 1h |  | Cblake | 1h | 1h |
| 40 | 1.5.2 | Production Implementation Meeting |  | 1h | 2008-03-18 08:00 A | 2008-03-18 09:00 A | 39 | 100% | 2008-03-18 15:00 | 2008-03-18 16:00 | 1h |  | Cblake; Dpalmer | 2h | 2h |
| 41 | 1.5.3 | Investigate PermGen Error (13241) |  | 3d | 2008-03-19 08:00 A | 2008-03-21 17:00 A | 40 | 100% |  |  |  | must start on 2008-03-19 08:00 | Jzeng [50%] | 12h | 12h |
| 42 | 1.5.4 | Request Production Deployment |  | 1d | 2008-03-24 08:00 A | 2008-03-24 17:00 A | 37, 41 | 100% | 2008-03-18 16:00 | 2008-03-18 17:00 | 1h |  | Ywu; Cblake; Dpalmer | 24h | 24h |
| 43 | 1.5.5 | Maintenance Page and Deploy to Production | milestone | 0d | 2008-03-25 08:00 A | 2008-03-25 08:00 A | 42 | 100% | 2008-03-19 08:30 | 2008-03-21 08:30 | 16h | must start on 2008-03-25 08:00 | SYS; Dpalmer [50%] |  |  |
| 44 | 1.5.6 | Verify Production |  | 2h | 2008-03-25 08:00 A | 2008-03-25 10:00 A | 43 | 100% | 2008-03-21 08:30 | 2008-03-21 13:30 | 4h |  | Jzeng | 2h | 2h |
| 45 | 1.5.7 | Send Out LDAP Notifications to Converted Account Holders | milestone | 0h | 2008-03-25 10:00 A | 2008-03-25 10:00 A | 44 | 100% | 2008-03-21 08:30 | 2008-03-21 10:30 | 2h |  | Application Support |  |  |

Notes:
- 31: ·Use Case / ·Script / ·UAT Participants
- 37: Send out e-mails / Add / Update LDAP and UPT accounts per response
- 40: ·All NCI areas that are involved in the successful deployment of the release. / ·Review Production Implementation Steps / ·Confirm Implementation Date / ·Define Verification Team / ·Review Hot Team / ·Review Production Recovery
- 41: This error occurred after deploying build to stage. Causes memeory not to be release and eventually prings down the server.
- 45: After the account has been created, Systems Group sends 2 emails with credentials, not one.~ One with user ID, another with password.
