# NCIA

Schedule from MS Project, 2008-02-21 to 2008-05-02, A marks actual dates.
Release 3.5
After 03/20/2008 Status Meeting

## Calendars

- Standard: Mon-Fri 08:00-12:00, 13:00-17:00; Sat-Sun off.

## Resources

| Resource |
| --- |
| Dpalmer |
| Jzeng |
| Tle |
| Qpan |
| Cblake |
| Abasu |
| Jfreymann |
| Lholeman |
| Ywu |
| Lgurses |
| Development Team |
| Systems Group |
| Ekascic |
| Tech Writer |
| Quality Assurance |
| NCIA Dev Team |
| SYS |
| Application Support |
| OSU |
| Pyen |

## Schedule

| ID | WBS | Task | Duration | Start | Finish | Predecessors | Complete | Remaining | Baseline start | Baseline finish | Baseline duration | Total slack | Constraint | Resources | Work | Actual work |
| --- | --- | --- | --- | --- | --- | --- | --- | --- | --- | --- | --- | --- | --- | --- | --- | --- |
| 1 | 1 | **NCIA 3.5** | 49.75d? | 2008-02-21 08:00 A | 2008-04-30 15:00 |  | 84% | 7.79d? | 2008-02-21 08:00 | 2008-05-02 10:00 | 51.25d? | 1.25d |  |  | 1667.01h | 1556.46h |
| 2 | 1.1 | **Inception Phase** | 15d? | 2008-02-21 08:00 A | 2008-03-12 17:00 A |  | 100% |  | 2008-02-21 08:00 | 2008-03-12 17:00 | 15d? |  |  |  | 569.3h | 569.3h |
| 3 | 1 | **Project Management** | 5.25d | 2008-02-21 08:00 A | 2008-02-28 10:00 A |  | 100% |  | 2008-02-21 08:00 | 2008-02-28 10:00 | 5.25d |  |  |  | 52.5h | 52.5h |
| 4 | 1.1.1.1 | Plan the project | 5d | 2008-02-21 08:00 A | 2008-02-27 17:00 A |  | 100% |  | 2008-02-21 08:00 | 2008-02-27 17:00 | 5d |  |  | Dpalmer | 40h | 40h |
| 5 | 1.1.1.2 | Review and Priortize Requirements with Customer | 2.5h | 2008-02-22 08:00 A | 2008-02-22 10:30 A |  | 100% |  | 2008-02-22 08:00 | 2008-02-22 10:30 | 2.5h |  | start no earlier than 2008-02-22 08:00 | Dpalmer | 2.5h | 2.5h |
| 6 | 1.1.1.3 | Inception Kick Off Meeting | 2h | 2008-02-28 08:00 A | 2008-02-28 10:00 A |  | 100% |  | 2008-02-28 08:00 | 2008-02-28 10:00 | 2h |  | must start on 2008-02-28 08:00 | Dpalmer; Jzeng; Tle; Qpan | 8h | 8h |
| 7 | 1.1.1.4 | Obtain CCB Approval | 2h | 2008-02-21 08:00 A | 2008-02-21 10:00 A |  | 100% |  | 2008-02-21 08:00 | 2008-02-21 10:00 | 2h |  |  | Jfreymann | 2h | 2h |
| 8 | 3 | **Requirements** | 11d | 2008-02-25 10:30 A | 2008-03-11 10:30 A |  | 100% |  | 2008-02-25 10:30 | 2008-03-11 10:30 | 11d |  |  |  | 87.2h | 87.2h |
| 9 | 3.1 | Define Release Scope | 2d | 2008-02-25 10:30 A | 2008-02-27 10:30 A | 5FS+1d | 100% |  | 2008-02-25 10:30 | 2008-02-27 10:30 | 2d |  |  | Dpalmer | 16h | 16h |
| 10 | 4.1 | FR Review and Calrification | 9d | 2008-02-27 10:30 A | 2008-03-11 10:30 A | 9 | 100% |  | 2008-02-27 10:30 | 2008-03-11 10:30 | 9d |  |  | Dpalmer [5.5%]; Jzeng [27.3%]; Lholeman [27.3%] | 43.2h | 43.2h |
| 11 | 1.1.2.3 | Identify Use Case Naming Standards and Procedures | 2h | 2008-02-29 10:30 A | 2008-02-29 13:30 A | 9FS+2d | 100% |  | 2008-02-29 10:30 | 2008-02-29 13:30 | 2h |  |  | Lholeman; Jzeng | 4h | 4h |
| 12 | 3.6 | Determine NCIA Requirements Management Plan | 3d | 2008-02-29 08:00 A | 2008-03-04 17:00 A |  | 100% |  | 2008-02-29 08:00 | 2008-03-04 17:00 | 3d |  | must start on 2008-02-29 08:00 | Dpalmer | 24h | 24h |
| 13 | 4 | **Analysis and Design** | 1d | 2008-03-11 10:30 A | 2008-03-12 10:30 A |  | 100% |  | 2008-03-11 10:30 | 2008-03-12 10:30 | 1d |  |  |  | 6h | 6h |
| 14 | 1.1.1.3.6.1 | Identify and Review Software Architecture Document | 1d | 2008-03-11 10:30 A | 2008-03-12 10:30 A | 8 | 100% |  | 2008-03-11 10:30 | 2008-03-12 10:30 | 1d |  |  | Jzeng [25%]; Dpalmer [50%] | 6h | 6h |
| 15 | 1.1.4 | **Implementation** | 1d | 2008-03-11 08:00 A | 2008-03-11 17:00 A |  | 100% |  | 2008-03-11 08:00 | 2008-03-11 17:00 | 1d |  |  |  | 8h | 8h |
| 16 | 1.1.4.1 | Establish SVN Document Folder Structure | 1d | 2008-03-11 08:00 A | 2008-03-11 17:00 A | 25 | 100% |  | 2008-03-11 08:00 | 2008-03-11 17:00 | 1d |  |  | Cblake | 8h | 8h |
| 17 | 5 | **Test** | 5d | 2008-02-29 08:00 A | 2008-03-06 17:00 A |  | 100% |  | 2008-02-29 08:00 | 2008-03-06 17:00 | 5d |  |  |  | 80h | 80h |
| 18 | 1.1.5.1 | Identify Existing Test Case for Use Case | 5d | 2008-02-29 08:00 A | 2008-03-06 17:00 A |  | 100% |  | 2008-02-29 08:00 | 2008-03-06 17:00 | 5d |  | must start on 2008-02-29 08:00 | Jzeng [50%]; Lholeman [50%]; Qpan [50%]; Tle [50%] | 80h | 80h |
| 19 | 7 | **Configuration & Change Management** | 13d | 2008-02-22 08:00 A | 2008-03-11 17:00 A |  | 100% |  | 2008-02-22 08:00 | 2008-03-11 17:00 | 13d |  |  |  | 229.6h | 229.6h |
| 20 | 1.1.6.1 | **Convert from CVS to SVN (11444)** | 12d | 2008-02-22 08:00 A | 2008-03-10 17:00 A |  | 100% |  | 2008-02-22 08:00 | 2008-03-10 17:00 | 12d |  |  |  | 193.6h | 193.6h |
| 21 | 1.1.6.1.1 | **Documents** | 12d | 2008-02-22 08:00 A | 2008-03-10 17:00 A |  | 100% |  | 2008-02-22 08:00 | 2008-03-10 17:00 | 12d |  |  |  | 145.6h | 145.6h |
| 22 | 1.1.6.1.1.1 | Inventory Current CVS Folder Structure | 2d | 2008-02-22 08:00 A | 2008-02-25 17:00 A |  | 100% |  | 2008-02-22 08:00 | 2008-02-25 17:00 | 2d |  | start no earlier than 2008-02-22 08:00 | Cblake | 16h | 16h |
| 23 | 1.1.6.1.1.2 | Identify Exsting Documents to be move to SVN | 4d | 2008-02-26 08:00 A | 2008-02-29 17:00 A | 22 | 100% |  | 2008-02-26 08:00 | 2008-02-29 17:00 | 4d |  |  | Cblake | 32h | 32h |
| 24 | 1.1.6.1.1.3 | Define the Documents | 5d | 2008-02-29 08:00 A | 2008-03-06 17:00 A | 23FS-1d | 100% |  | 2008-02-29 08:00 | 2008-03-06 17:00 | 5d |  |  | Cblake; Jzeng [50%]; Dpalmer [50%] | 80h | 80h |
| 25 | 1.1.6.1.1.4 | Define Document Home Folder and Folder Structure | 2d | 2008-03-07 08:00 A | 2008-03-10 17:00 A | 24 | 100% |  | 2008-03-07 08:00 | 2008-03-10 17:00 | 2d |  |  | Cblake; Dpalmer [10%] | 17.6h | 17.6h |

Notes:
- 8: Derive requirments from Feature Requests and BUGs
- 10: ·Identify the Use Case for FR and BUGs that have enough information to determine the Use Case. / ·For FR and BUGs that do not have information these will have a Tracker status of "Need Clarification". Run Gforge report for these and schedule a meeting with customers for clarification. / ·No Use Case exists then will place a Use Case Section in the Use Case document and Bubble diagram in EA. / ·Develop detail requirements / ·Revise the LOE / ·Organize into Iterations for elaberation phase
- 11: ·This addresses the document and EA. / ·Are there any caBIG naming standards available. / ·Determine how we will handle Use Cases as one document or in multiple documents with each document representing a Use Case, this is the method being used by caArray. / Update the NCIA Standards and Procedures by adding a Use Case section in the Naming Standards. Review and approved by Jennifer.
- 12: NCIA Requirements Management Plan.doc
- 13: Describe the multiple archtecture views
- 14: Do we have a Software Architecture document or Architecture information in EA? / caArray has an example. / Determine what we need. / Template and Outline
- 15: Software Development, Unti Test, Intergration
- 18: ·Inventory Junit and Selenium test cases and match to Use Case / ·Privode gap report for Use Cases with no Test Case and Test Case with no Use Case
- 20: 11444
- 22: Tracker Task 2311 / Deliverible: 11444-Proposed Conversion Plan.doc
- 23: Provide a list of the documets that will be retained and migrated into the new SVC structure / Deliverible: 11444-Proposed Conversion Plan.doc, Mappings for the existing /ncia-docs/ content to the new SVN docs subdirectories section
- 24: Define the documents that will be maintained for the system and release. / See Section 10.60 in Standards and Procedures
- 25: 11444-Proposed SVN DirectoryStructure for NCIA-dgp.ppt

| ID | WBS | Task | Type | Duration | Start | Finish | Predecessors | Complete | Remaining | Baseline start | Baseline finish | Baseline duration | Total slack | Free slack | Constraint | Deadline | Resources | Work | Actual work |
| --- | --- | --- | --- | --- | --- | --- | --- | --- | --- | --- | --- | --- | --- | --- | --- | --- | --- | --- | --- |
| 26 | 1.1.6.1.2 | **Source Code** |  | 4d | 2008-02-25 08:00 A | 2008-02-28 17:00 A |  | 100% |  | 2008-02-25 08:00 | 2008-02-28 17:00 | 4d |  |  |  |  |  | 48h | 48h |
| 27 | 1.1.6.1.2.1 | Inventory CVS Folder Structure |  | 2d | 2008-02-25 08:00 A | 2008-02-26 17:00 A |  | 100% |  | 2008-02-25 08:00 | 2008-02-26 17:00 | 2d |  |  | start no earlier than 2008-02-25 08:00 |  | Jzeng [50%]; Cblake | 24h | 24h |
| 28 | 1.1.6.1.2.2 | Identify Source Code and Folder to be Brought into SVN |  | 2d | 2008-02-27 08:00 A | 2008-02-28 17:00 A | 27 | 100% |  | 2008-02-27 08:00 | 2008-02-28 17:00 | 2d |  |  | start no earlier than 2008-02-25 08:00 |  | Jzeng [50%]; Cblake | 24h | 24h |
| 29 | 1.1.6.2 | Formulate Configuration-Change Management Plan |  | 3d | 2008-03-07 08:00 A | 2008-03-11 17:00 A | 24 | 100% |  | 2008-03-07 08:00 | 2008-03-11 17:00 | 3d |  |  |  |  | Dpalmer [50%]; Cblake | 36h | 36h |
| 30 | 1.1.7 | **Deployment** |  | 15d | 2008-02-21 08:00 A | 2008-03-12 17:00 A |  | 100% |  | 2008-02-21 08:00 | 2008-03-12 17:00 | 15d |  |  |  |  |  | 66h | 66h |
| 31 | 1.1.7.1 | **Release Consistant Build Method Through Tiers** |  | 15d | 2008-02-21 08:00 A | 2008-03-12 17:00 A |  | 100% |  | 2008-02-21 08:00 | 2008-03-12 17:00 | 15d |  |  |  |  |  | 66h | 66h |
| 32 | 1.1.7.1.1 | Obtain User Ids Development Team |  | 2h | 2008-02-21 08:00 A | 2008-02-21 10:00 A |  | 100% |  | 2008-02-21 08:00 | 2008-02-21 10:00 | 2h |  |  |  |  | Cblake | 2h | 2h |
| 33 | 1.1.7.1.2 | Define Requirements for Development Tier |  | 3d | 2008-03-03 08:00 A | 2008-03-05 17:00 A | 28FS+1d | 100% |  | 2008-03-03 08:00 | 2008-03-05 17:00 | 3d |  |  |  |  | Cblake; Lgurses | 48h | 48h |
| 34 | 1.1.7.1.3 | Define Requirements for QA Tier |  | 2d | 2008-03-11 08:00 A | 2008-03-12 17:00 A | 33FS+3d | 100% |  | 2008-03-11 08:00 | 2008-03-12 17:00 | 2d |  |  |  |  | Cblake [50%]; Ywu [50%] | 16h | 16h |
| 35 | 1.1.8 | Inception Review |  | 1d? | 2008-03-12 08:00 A | 2008-03-12 17:00 A |  | 100% |  | 2008-03-12 08:00 | 2008-03-12 17:00 | 1d? |  |  | must start on 2008-03-12 08:00 |  | Dpalmer [83.3%]; Jzeng [83.3%]; Tle [83.3%]; Qpan [83.3%]; Abasu [83.3%]; Lholeman [83.3%] | 40h | 40h |
| 36 | 1.3 | **Elaboration Phase** |  | 19d? | 2008-03-11 08:00 A | 2008-04-04 17:00 | 35 | 94% | 1.13d? | 2008-03-11 08:00 | 2008-04-04 16:43 | 18.97d | 0d |  |  | 2007-08-27 17:00 |  | 613.71h | 593.55h |
| 37 | 1 | **Project Management** |  | 6.25d | 2008-03-11 08:00 A | 2008-03-19 10:00 A | 2 | 100% |  | 2008-03-11 08:00 | 2008-03-19 10:00 | 6.25d |  |  |  |  | Dpalmer | 73.6h | 73.6h |
| 38 | 1.2.1.1 | Elaboration Project Plan |  | 6d | 2008-03-11 08:00 A | 2008-03-18 17:00 A |  | 100% |  | 2008-03-11 08:00 | 2008-03-18 17:00 | 6d |  |  | must start on 2008-03-11 08:00 |  | Dpalmer [35%]; Jzeng [10%] | 21.6h | 21.6h |
| 39 | 1.2.1.2 | Release 3.5 Kick Off Meeting |  | 2h | 2008-03-19 08:00 A | 2008-03-19 10:00 A | 38 | 100% |  | 2008-03-19 08:00 | 2008-03-19 10:00 | 2h |  |  | must start on 2008-03-19 08:00 |  | Dpalmer | 2h | 2h |
| 40 | 1.3.1 | **Iteration 1** |  | 17d? | 2008-03-13 08:00 A | 2008-04-04 17:00 |  | 94% | 1.07d? | 2008-03-13 08:00 | 2008-04-04 16:43 | 16.97d | 0d |  |  |  |  | 540.11h | 519.96h |
| 41 | 1.3.1.2 | **Requirements** |  | 16d | 2008-03-14 08:00 A | 2008-04-04 17:00 |  | 71% | 4.67d | 2008-03-14 08:00 | 2008-03-21 09:00 | 5.12d | 0d |  |  |  |  | 108h | 87.85h |
| 42 | 1.2.2.1.1 | Update Use Case for Add DICOM Button to Study Results Page for Local Series (8009) |  | 16h | 2008-03-14 08:00 A | 2008-03-17 17:00 A |  | 100% |  | 2008-03-14 08:00 | 2008-03-17 17:00 | 16h |  |  | start no earlier than 2008-03-14 08:00 |  | Lholeman | 16h | 16h |
| 43 | 1.2.2.1.2 | Update Use Case for Specify the date range on search page (7052) |  | 16h | 2008-03-17 13:00 A | 2008-03-19 12:00 A | 42 | 100% |  | 2008-03-17 13:00 | 2008-03-19 12:00 | 16h |  |  |  |  | Lholeman | 16h | 16h |
| 44 | 1.2.2.1.3 | Update Use Case for Modify Search Page Contrast dropdowns to checkboxes (7998) |  | 4h | 2008-03-19 13:00 A | 2008-03-19 17:00 A | 43 | 100% |  | 2008-03-19 13:00 | 2008-03-19 17:00 | 4h |  |  |  |  | Lholeman | 4h | 4h |
| 45 | 1.2.2.1.4 | Update Use Case for Adjust search results per page, # of results presented on 1 screen (7184) |  | 5h | 2008-03-20 09:00 A | 2008-03-20 15:00 A | 44 | 100% |  | 2008-03-20 09:00 | 2008-03-20 15:00 | 5h |  |  |  |  | Lholeman | 5h | 5h |
| 46 | 1.2.2.1.5 | Update Use Case for Increase length of Time FTP Download Files Stay on Server (11271) |  | 2h | 2008-03-20 15:00 A | 2008-03-20 17:00 A | 45 | 100% |  | 2008-03-20 15:00 | 2008-03-20 17:00 | 2h |  |  |  |  | Lholeman | 2h | 2h |
| 47 | 1.2.2.1.6 | Modify Per Requirement Change Use Case for Increase length of Time FTP Download Files Stay on Server (11271) |  | 2h | 2008-03-24 08:00 A | 2008-03-24 10:00 A | 46 | 100% |  |  |  |  |  |  | must start on 2008-03-24 08:00 |  | Lholeman | 2h | 2h |
| 48 | 1.2.2.1.7 | Obtain Use Case from Peter Yen (6867) | milestone | 0d | 2008-03-20 08:00 A | 2008-03-20 17:00 A | 47 | 100% |  | 2008-03-19 17:00 | 2008-03-19 17:00 | 0d |  |  | must finish on 2008-03-19 17:00 |  | Pyen; Dpalmer |  |  |
| 49 | 1.2.2.1.8 | Develop Use Case for NCIA System to Support Grid Data Transfer of Archive Data using caGrid Infrastructure(6867) |  | 9d | 2008-03-24 17:00 A | 2008-04-04 17:00 | 48FS+2d | 65% | 3.15d | 2008-03-25 08:00 | 2008-03-31 17:00 | 5d | -4d | 0d |  |  | Lholeman [50%]; Jzeng [10%]; OSU; Pyen [5%] | 37h | 24.4h |
| 50 | 1.2.2.1.9 | Update Use Case for Save and Maintain Query |  | 32h | 2008-03-24 08:00 A | 2008-03-27 17:00 |  | 90% | 3.2h |  |  |  | 0d |  | must start on 2008-03-24 08:00 |  | Lholeman [25%] | 8h | 7.2h |
| 51 | 1.2.2.1.10 | Update Use Case for Add Link for DCEMRI Analytic Software (12234) |  | 4.5d | 2008-03-31 08:00 A | 2008-04-04 12:00 | 50 | 25% | 3.38d |  |  |  | -158.5d | 0d |  |  | Lholeman [25%] | 9h | 2.25h |
| 52 | 1.2.2.1.11 | Review Use Cases with Developer |  | 3h | 2008-03-20 08:00 A | 2008-03-20 11:00 A | 48 | 100% |  | 2008-03-20 08:00 | 2008-03-20 11:00 | 3h |  |  |  |  | Lholeman | 3h | 3h |
| 53 | 1.2.2.1.12 | Submit Use Cases to QA |  | 1h | 2008-03-21 08:00 A | 2008-03-21 09:00 A | 42 | 100% |  | 2008-03-21 08:00 | 2008-03-21 09:00 | 1h |  |  | must start on 2008-03-21 08:00 |  | Lholeman; Cblake; Ywu | 3h | 3h |
| 54 | 1.2.2.1.13 | Determine Consistant Build (10583) |  | 1h | 2008-03-19 08:00 A | 2008-03-19 09:00 A |  | 100% |  | 2008-03-19 08:00 | 2008-03-19 09:00 | 1h |  |  | start no earlier than 2008-03-19 08:00 |  | Jzeng; Cblake; Ekascic | 3h | 3h |

Notes:
- 29: NCIA Configuration Management Plan.doc
- 31: 10583
- 32: Carl has these
- 33: Define and develop the automated build from Development to QA / Redo the build scripts to have consistent build and deploy environment across the tiers. The Build and Deploy team lead by Paul and Levent (Stelligent Inc.) have been charged with building a consistent build and deploy process for all our products.
- 34: Define and develop the automated build from QA to Stage
- 35: Did we do what we said we were going to do? / What lessons did we learn?
- 39: Includes all NCI areas that will be involved in supporting or providing services for the 3.5 Release.
- 41: Refine Requirement / Transist Rquirement to Use Case / Review Use Case with Developers
- 47: Update Use Case / Requirements / Notify QA of Change
- 50: Intergrating this into the Search Use Case
- 54: * ·;; ·;; Meet with LSD team to determine what has to be done to implement the consistent build and status when their product will be ready. / NCIA / Stelligent Team Kickoff / Suggested agenda: / ·Any introductions / 1Present revised NCIA directory structure on SVN for code / 2Based on an initial discussion with Stelligent on March 13th, review the timeline for the 1 month effort and determine any milestone dates: / ·Week 1: Examine and define scope of effort to revise Ant scripts, gap report indicative of what needs to be done / 1Week 2: Create automated Ant build / 2Week 3: Incorporate use of AntHillPro / 3Week 4: Transition phaseany documentation (guide), any LSD considerations / ·Any other business / Update 3.5 Project Plan

| ID | WBS | Task | Type | Duration | Start | Finish | Predecessors | Complete | Baseline start | Baseline finish | Baseline duration | Constraint | Resources | Work | Actual work |
| --- | --- | --- | --- | --- | --- | --- | --- | --- | --- | --- | --- | --- | --- | --- | --- |
| 55 | 1.3.1.3 | **Analysis and Design** |  | 17d | 2008-03-13 08:00 A | 2008-04-04 17:00 A |  | 100% | 2008-03-17 13:00 | 2008-04-04 16:43 | 14.47d |  |  | 302.7h | 302.7h |
| 56 | 1.2.2.2.1 | Add DICOM Button to Study Results Page for Local Series (8009) |  | 43.95h | 2008-03-17 13:00 A | 2008-03-24 16:56 A | 42 | 100% | 2008-03-17 13:00 | 2008-03-31 16:56 | 44.14h |  | Qpan [70%]; Ekascic [20%] | 38h | 38h |
| 57 | 1.2.2.2.2 | Specify the date range on search page (7052) |  | 75.95h | 2008-03-19 13:00 A | 2008-04-02 11:43 A | 43 | 100% | 2008-03-19 13:00 | 2008-04-04 16:43 | 95.95h |  | Qpan [40%]; Tle [50%] | 52h | 52h |
| 58 | 1.2.2.2.3 | Modify Search Page Image Contrast dropdowns to checkboxes (7998) |  | 34.4h | 2008-03-20 08:00 A | 2008-03-28 10:24 A | 44 | 100% | 2008-03-20 08:00 | 2008-03-27 17:00 | 48h |  | Ekascic [50%] | 24h | 24h |
| 59 | 1.2.2.2.4 | Adjust search results per page, # of results presented on 1 screen (7184) |  | 40h | 2008-03-28 08:00 A | 2008-04-03 17:00 A | 58 | 100% |  |  |  |  | Tle [25%] | 10h | 10h |
| 60 | 1.2.2.2.5 | Automated Build through all tiers (10583) |  | 13d | 2008-03-19 08:00 A | 2008-04-04 17:00 A |  | 100% | 2008-03-19 08:00 | 2008-03-26 17:00 | 6d | finish no earlier than 2008-04-04 17:00 | Ekascic [22.8%] | 10.96h | 10.96h |
| 61 | 1.2.2.2.6 | Research and Testing-NCIA System to Support Grid Data Transfer of Archive Data using caGrid Infrastructure (6867) |  | 17d | 2008-03-13 08:00 A | 2008-04-04 17:00 A |  | 100% | 2008-03-10 08:00 | 2008-04-04 17:00 | 20d | start no earlier than 2008-03-10 08:00 | Jzeng [14.8%]; Tle [65%]; Lholeman [10%]; Dpalmer [10%] | 121.34h | 121.34h |
| 62 | 1.2.2.2.7 | PermGen Error Occuring on 3.1.1 Release (13241) |  | 5d | 2008-03-26 08:00 A | 2008-04-01 17:00 A |  | 100% |  |  |  | must start on 2008-03-26 08:00 | Jzeng | 40h | 40h |
| 63 | 1.2.2.2.8 | Research and Identify Requirements for moving NCIA to new MIRC Clinical Trial Processing (CTP) (8005 ) |  | 4d | 2008-03-27 08:00 A | 2008-04-01 17:00 A |  | 100% |  |  |  |  | Jzeng [5%]; Tle [15%] | 6.4h | 6.4h |
| 64 | 1.3.1.4 | **Implementation** |  | 13.3d | 2008-03-13 08:00 A | 2008-04-01 10:24 A |  | 100% | 2008-03-13 08:00 | 2008-03-24 17:00 | 8d |  |  | 69.4h | 69.4h |
| 65 | 1.2.2.3.1 | **NCIA System** |  | 13.3d | 2008-03-13 08:00 A | 2008-04-01 10:24 A |  | 100% | 2008-03-13 08:00 | 2008-03-24 17:00 | 8d |  |  | 12h | 12h |
| 66 | 1.2.2.3.1.1 | Correct Text Message on Visualize Image More Than 2 Selected (12683) |  | 0.5d | 2008-03-13 08:00 A | 2008-03-13 12:00 A |  | 100% | 2008-03-13 08:00 | 2008-03-14 17:00 | 2d |  | Jzeng | 4h | 4h |
| 67 | 1.2.2.3.1.2 | Increase length of Time FTP Download Files Stay on Server (11271) |  | 2d | 2008-03-21 17:00 A | 2008-03-25 17:00 A | 46FS+1d | 100% | 2008-03-21 08:00 | 2008-03-24 17:00 | 2d |  | Tle [25%]; Systems Group | 4h | 4h |
| 68 | 1.2.2.3.1.3 | Correct Title in Search Series Result Page (10159) |  | 26.4h | 2008-03-27 08:00 A | 2008-04-01 10:24 A |  | 100% |  |  |  |  | Tle [35%] | 4h | 4h |
| 69 | 1.2.2.3.2 | **SVN Migration (11444)** |  | 4.25d | 2008-03-14 08:00 A | 2008-03-20 10:00 A |  | 100% | 2008-03-14 08:00 | 2008-03-20 10:00 | 4.25d |  |  | 57.4h | 57.4h |
| 70 | 1.2.2.3.2.1 | Migrate Documents to SVN |  | 3d | 2008-03-14 08:00 A | 2008-03-18 17:00 A |  | 100% | 2008-03-14 08:00 | 2008-03-18 17:00 | 3d | must start on 2008-03-14 08:00 | Cblake; Jzeng [50%] | 36h | 36h |
| 71 | 1.2.2.3.2.2 | Commit All Code to CVS |  | 2h | 2008-03-19 08:00 A | 2008-03-19 10:00 A | 70 | 100% | 2008-03-19 08:00 | 2008-03-19 10:00 | 2h |  | Tle; Qpan; Ekascic; Jzeng; Cblake [20%] | 8.4h | 8.4h |
| 72 | 1.2.2.3.2.3 | Migrate Source Code to SVN |  | 1d | 2008-03-19 10:00 A | 2008-03-20 10:00 A | 71 | 100% | 2008-03-19 10:00 | 2008-03-20 10:00 | 1d |  | Cblake [25%]; Jzeng [25%]; Systems Group [25%] | 6h | 6h |
| 73 | 1.2.2.3.2.4 | Convert Installation Guide, Build, Deployment documentation |  | 6h | 2008-03-19 08:00 A | 2008-03-19 15:00 A | 70 | 100% | 2008-03-19 08:00 | 2008-03-19 12:00 | 4h |  | Cblake | 6h | 6h |
| 74 | 1.2.2.3.2.5 | Send Notifications |  | 1h | 2008-03-18 08:00 A | 2008-03-18 09:00 A | 73 | 100% | 2008-03-18 08:00 | 2008-03-18 09:00 | 1h | must start on 2008-03-18 08:00 | Cblake | 1h | 1h |
| 75 | 1.3.1.5 | **Test** |  | 8d | 2008-03-13 08:00 A | 2008-03-24 17:00 A |  | 100% | 2008-03-13 08:00 | 2008-03-20 15:00 | 5.75d |  |  | 48h | 48h |
| 76 | 1.2.2.4.1 | Developers Test SVN With My Eclips |  | 4h | 2008-03-20 10:00 A | 2008-03-20 15:00 A | 72 | 100% | 2008-03-20 10:00 | 2008-03-20 15:00 | 4h |  | Tle; Qpan; Ekascic; Jzeng | 16h | 16h |
| 77 | 1.2.2.4.2 | Perform Build to QA from SVN | milestone | 0d | 2008-03-20 15:00 A | 2008-03-20 15:00 A | 76 | 100% | 2008-03-20 15:00 | 2008-03-20 15:00 | 0d |  | Jzeng |  |  |
| 78 | 1.2.2.4.3 | Remote search download failed (11778) |  | 8d | 2008-03-13 08:00 A | 2008-03-24 17:00 A |  | 100% | 2008-03-13 08:00 | 2008-03-14 17:00 | 2d |  | Tle [50%] | 32h | 32h |

Notes:
- 55: Describes and defines the Architectural view / Idenitfy, Develop, Update for / ·Architecture Document / ·Sequence Diagram / ·Class Diagram / that are affected by the 3.5 FRs / Product (Coded) Prototypes for UI and obtain customer approval.
- 57: Performance Analysis and Testing / Prototype
- 60: Scope https://gforge.nci.nih.gov/plugins/scmsvn/viewcvs.php/trunk/docs/requirements/3.5%20Release/Automated_Build_Scope.doc?root=ncia&view=log
- 61: Working with OSU staff for technology and NCIA Analyst (Larry Holeman) for requirements. Determine and define the technology, architecture, requirements, and Use Case for NCIA to accept a caGRID query service request for NCIA DICOM metadata or Images and be able to return either to the requester using the caGRID. / Requirements / Use Case / Architecture Diagram and Definition / Technology Definition
- 62: Deployed as release 3.1.2
- 63: Understand the new MIRC Clinical Trial Processing (CTP) software / Risk / Benefit (Performance, volumn of data) / Determine how to interface it with the NCIA System / Estimate the LOE / Broad list of tasks to accomplish / Conversions / Impact and conversion on the submitter community who are currently using Field Center / Change in our current collection set up SOP / Pass NCIA Appscan
- 64: Software Development, Unit Test / Code / Test Scripts / Test (Junit and Selenium) / Walk Thru (Code Review) / JSF page, flow, view series page, popup page, backend change / Deploy to QA
- 67: Through QA / Code / Configuration Change / Check after 20 days
- 72: Systems Group (Wayne) performs conversion process from CVS HEAD between 8-10am, then re-pointing GForge to new SVN location.
- 73: Installation Guide, Build and Deployment documentation links need to be updated to point to new locations on the GForge SVN under GForge SCM tab
- 74: Notify Peter Yan and SCI Group of revisions to documentation as a result of modified links to the documents on SVN
- 75: Developers Intergration Testing / Describes the scripts, test execution, and defect tracking and produces metrics (Numbers used as a measurement for standard of quality )
- 76: Developers connect to SVN repository in Eclipse using either Subclipse Or Subversive / Perform a build to QA

| ID | WBS | Task | Type | Duration | Start | Finish | Predecessors | Complete | Remaining | Baseline start | Baseline finish | Baseline duration | Total slack | Free slack | Constraint | Resources | Work | Actual work |
| --- | --- | --- | --- | --- | --- | --- | --- | --- | --- | --- | --- | --- | --- | --- | --- | --- | --- | --- |
| 79 | 1.3.1.6 | **Environment** |  | 3d | 2008-03-13 08:00 A | 2008-03-17 17:00 A |  | 100% |  | 2008-03-13 08:00 | 2008-03-17 17:00 | 3d |  |  |  |  | 12h | 12h |
| 80 | 1.2.2.5.1 | Determine State of Test Data |  | 3d | 2008-03-13 08:00 A | 2008-03-17 17:00 A |  | 100% |  | 2008-03-13 08:00 | 2008-03-17 17:00 | 3d |  |  |  | Jzeng [50%] | 12h | 12h |
| 81 | 1.3.1.7 | Configuration and Change Management |  | 1d? | 2008-03-13 08:00 A | 2008-03-13 17:00 A |  | 100% |  | 2008-03-19 10:00 | 2008-03-24 10:00 | 3d |  |  |  |  |  |  |
| 82 | 1.2.3 | Elaboration Phase Review | milestone | 0d | 2008-04-04 17:00 A | 2008-04-04 17:00 A | 64, 55 | 100% |  | 2008-03-20 15:00 | 2008-03-20 15:00 | 0d |  |  |  |  |  |  |
| 83 | 1.4 | **Construction Phase** |  | 11d | 2008-04-04 08:00 A | 2008-04-18 17:00 | 82 | 71% | 3.2d | 2008-03-20 15:00 | 2008-04-23 17:00 | 24.25d | 9d |  |  |  | 312h | 273.1h |
| 84 | 1.4.1 | **Iteration 1** |  | 11d | 2008-04-04 08:00 A | 2008-04-18 17:00 |  | 70% | 3.27d | 2008-03-20 15:00 | 2008-04-23 17:00 | 24.25d | 9d |  |  |  | 299.4h | 260.5h |
| 85 | 1.4.1.1 | Project Management | milestone | 0d | 2008-04-05 08:00 A | 2008-04-05 17:00 A |  | 100% |  | 2008-03-20 15:00 | 2008-03-21 15:00 | 1d |  |  |  | Dpalmer [50%]; Jzeng [10%] |  |  |
| 86 | 1.4.1.2 | **Requirements** |  | 10d | 2008-04-07 08:00 A | 2008-04-18 17:00 |  | 41% | 5.94d | 2008-03-21 09:00 | 2008-03-21 09:00 | 0d | 6d |  |  |  | 69h | 40.66h |
| 87 | 1.3.1.2.1 | QA Use Case Response |  | 1d | 2008-04-07 08:00 A | 2008-04-07 17:00 A | 53 | 100% |  | 2008-03-21 09:00 | 2008-03-21 09:00 | 0d |  |  |  | Lholeman [50%]; Jzeng [50%]; Ywu [50%] | 12h | 12h |
| 88 | 1.3.1.2.2 | Continue Use Case for NCIA System to Support Grid Data Transfer of Archive Data using caGrid Infrastructure(6867) |  | 10d | 2008-04-07 08:00 A | 2008-04-18 17:00 |  | 72% | 2.8d | 2008-03-25 08:00 | 2008-03-31 17:00 | 5d | 0d |  | must start on 2008-04-07 08:00 | Lholeman [35%]; Jzeng [10%]; OSU; Pyen [5%] | 34h | 26.16h |
| 89 | 1.3.1.2.3 | Update Use Case for Save and Maintain Query |  | 4h | 2008-04-08 08:00 A | 2008-04-08 12:00 A |  | 100% |  |  |  |  |  |  | start no earlier than 2008-04-08 08:00 | Lholeman [25%] | 1h | 1h |
| 90 | 1.3.1.2.4 | Update Use Case for Cinetool for thumbnail viewing in GUI (7208) |  | 8d | 2008-04-08 13:00 | 2008-04-18 12:00 | 89 |  |  |  |  |  | 5.5d | 0d |  | Lholeman [25%] | 16h |  |
| 91 | 1.3.1.2.5 | Update Use Case for Add Link for DCEMRI Analytic Software (12234) |  | 5d | 2008-04-11 13:00 A | 2008-04-18 12:00 | 89FS+3d | 25% | 3.75d |  |  |  | 5.5d | 0d |  | Lholeman [15%] | 6h | 1.5h |
| 92 | 1.4.1.3 | **Analysis and Design** |  | 10d | 2008-04-07 08:00 A | 2008-04-18 17:00 A |  | 100% |  | 2008-03-27 08:00 | 2008-04-23 17:00 | 20d |  |  |  |  | 30.4h | 30.4h |
| 93 | 1.3.1.3.1 | Automated Build through all tiers (10583) |  | 10d | 2008-04-07 08:00 A | 2008-04-18 17:00 A | 60 | 100% |  | 2008-03-27 08:00 | 2008-04-23 17:00 | 20d |  |  |  | Ekascic [20%] | 8h | 8h |
| 94 | 1.3.1.3.2 | Update the NCIA Architecture Diagram for GDT (6867) |  | 8d | 2008-04-09 08:00 A | 2008-04-18 17:00 A |  | 100% |  |  |  |  |  |  | must start on 2008-04-09 08:00 | Cblake [35%] | 22.4h | 22.4h |
| 95 | 1.4.1.4 | **Implementation** |  | 7.5d | 2008-04-07 08:00 A | 2008-04-16 12:00 A |  | 100% |  | 2008-03-20 15:00 | 2008-04-09 13:35 | 13.82d |  |  |  |  | 69h | 69h |
| 96 | 1.3.1.4.1 | Add DICOM Button to Study Results Page for Local Series (8009) |  | 40h | 2008-04-07 08:00 A | 2008-04-11 17:00 A |  | 100% |  | 2008-03-20 15:00 | 2008-04-03 15:00 | 70h |  |  |  | Qpan [10%]; Ekascic [30%] | 10h | 10h |
| 97 | 1.3.1.4.2 | Specify the date range on search page (7052) |  | 47.06h | 2008-04-07 08:00 A | 2008-04-14 16:03 A |  | 100% |  | 2008-03-20 15:00 | 2008-04-09 13:35 | 70.59h |  |  |  | Qpan [85%] | 40h | 40h |
| 98 | 1.3.1.4.3 | Modify Search Page Image Contrast dropdowns to checkboxes (7998) |  | 13.33h | 2008-04-07 08:00 A | 2008-04-10 09:20 A |  | 100% |  | 2008-03-20 15:00 | 2008-03-25 15:00 | 24h |  |  |  | Ekascic [30%] | 4h | 4h |
| 99 | 1.3.1.4.4 | Adjust search results per page, # of results presented on 1 screen (7184) |  | 28.57h | 2008-04-07 08:00 A | 2008-04-10 13:34 A |  | 100% |  | 2008-03-20 15:00 | 2008-03-31 16:08 | 57.14h |  |  |  | Tle [35%] | 10h | 10h |
| 100 | 1.3.1.4.5 | The selected terms are moved back to Available box after clicking "Display" button (13219) |  | 16h | 2008-04-11 08:00 A | 2008-04-16 12:00 A | 99 | 100% |  |  |  |  |  |  |  | Ekascic [25%] | 4h | 4h |
| 101 | 1.3.1.4.6 | The names of selected remote sites are concatenated in 'REMOTE SITE(S) SELECTED' box without delimiter (13221) |  | 10h | 2008-04-11 08:00 A | 2008-04-14 10:00 A |  | 100% |  |  |  |  |  |  | must start on 2008-04-11 08:00 | Jzeng [10%] | 1h | 1h |
| 102 | 1.3.1.5 | NCIA System to Perform Grid Data Transfer for SIIM Demo (12793) (6867) |  | 10d | 2008-04-07 08:00 A | 2008-04-18 17:00 A | 61 | 100% |  |  |  |  |  |  |  | Tle [65%] | 52h | 52h |

Notes:
- 79: Infrastructure required to develop the system release
- 80: Do not need to update our data for testing. / Determine the state of the test data required to conduct sucessful testing of the Use Cases and Test scripts for each tier to insure it is sufficent to support testing all User Cases.
- 82: What did we plan to do / What did we accompish / What / Develop/Update / 5 Use Cases / 2 bugs / 2 builds / Sequence Diagrams / Class Diagrams
- 87: QA has reviewed Use Case and may have response.
- 89: Intergrating this into the Search Use Case
- 92: Objects / Sequence Diagram / Class Diagram
- 93: * .; ; ·;; ·Week 2: Create automated Ant build / 1Week 3: Incorporate use of AntHillPro / 2Week 4: Transition phaseany documentation (guide), any LSD considerations
- 95: Software Development, Unit Test / Code / Test Scripts / Test (Junit and Selenium) / Walk Thru (Code Review) / JSF page, flow, view series page, popup page, backend change / Deploy to QA
- 96: JSF page, flow, view series page, popup page, backend change / Code Review
- 102: a) a query method that takes in a valid CQL query and returns the resulting metadata as a~CQLResultSet/ b)a retrieve method that takes in a valid CQL query and returns the images via the caGrid Transfer Service / Test Case 1: / Get meta data associated with patients cases for a particular trial / Test Case 2: / From results of Test Case 1 give studies associated with Patient X / Test Case 3: / From Test Case 2 series associated with study X / Test Case 4: / From Test Case 3 provide all metadata for images associated with series X / Test Case 5: / For Test Case 1 collection, provide a list of patients that have CT-Scans done with a Siemens Machine. / Test Case 6: / From a new collection give all data for patients that have a dual modality (like PET and CT or Chest X-Ray and CT) / Test Case 7: / From Collection in Test Case 6 give me the series UID for all PET series / Test Case 8: / Download images for results at series level

| ID | WBS | Task | Type | Duration | Start | Finish | Predecessors | Complete | Remaining | Baseline start | Baseline finish | Baseline duration | Total slack | Constraint | Resources | Work | Actual work |
| --- | --- | --- | --- | --- | --- | --- | --- | --- | --- | --- | --- | --- | --- | --- | --- | --- | --- |
| 103 | 1.4.1.5 | **Test** |  | 10.5d | 2008-04-04 08:00 A | 2008-04-18 12:00 |  | 34% | 6.89d | 2008-04-01 08:00 | 2008-04-14 13:35 | 9.57d | 9.5d |  |  | 33h | 33h |
| 104 | 1.3.1.6.1 | Verify QA Test Scripts |  | 9.5h | 2008-04-04 08:00 A | 2008-04-07 09:30 A |  | 100% |  | 2008-04-01 08:00 | 2008-04-01 11:00 | 3h |  | must start on 2008-04-04 08:00 | Jzeng [83.3%]; Dpalmer [16.7%]; Lholeman | 6h | 6h |
| 105 | 1.3.1.6.2 | Conduct Integration Test |  | 3d | 2008-04-15 13:00 A | 2008-04-18 12:00 A | 95FS-1d | 100% |  | 2008-04-09 13:35 | 2008-04-14 13:35 | 3d |  |  | Lholeman [25%]; Tle [25%]; Qpan [25%]; Ekascic [25%]; Jzeng [25%] | 27h | 27h |
| 106 | 1.3.1.6.3 | Testing and Research for moving NCIA to new MIRC Clinical Trial Processing (CTP) (8005 ) |  | 8d | 2008-04-07 08:00 | 2008-04-16 17:00 |  |  |  |  |  |  | 11d |  |  |  |  |
| 107 | 1.3.1.7 | Update On Line Help |  | 5d | 2008-04-14 08:00 A | 2008-04-18 17:00 A | 95FS-3d | 100% |  | 2008-04-04 13:35 | 2008-04-11 13:35 | 5d |  |  | Tech Writer [80%]; Jzeng [5%] | 34h | 34h |
| 108 | 1.4.1.6 | Environment | milestone | 0d | 2008-04-04 17:00 A | 2008-04-04 17:00 A |  | 100% |  | 2008-03-20 15:00 | 2008-03-20 15:00 | 0d |  |  |  |  |  |
| 109 | 1.3.1.7 | **Configuration and Change Management** |  | 4d | 2008-04-15 08:00 A | 2008-04-18 17:00 |  | 14% | 3.43d | 2008-03-19 10:00 | 2008-03-24 10:00 | 3d | 9d |  |  | 12h | 1.44h |
| 110 | 1.3.1.9.1 | Update NCIA Requirements Management Plan |  | 3d | 2008-04-15 08:00 A | 2008-04-17 17:00 |  | 20% | 2.4d | 2008-03-19 10:00 | 2008-03-24 10:00 | 3d | 10d |  | Dpalmer [10%] | 2.4h | 0.48h |
| 111 | 1.3.1.9.2 | Update Configuration-Change Management Plan |  | 2d | 2008-04-17 08:00 A | 2008-04-18 17:00 |  | 10% | 1.8d | 2008-03-19 10:00 | 2008-03-24 10:00 | 3d | 0d | must start on 2008-04-17 08:00 | Dpalmer [20%] | 3.2h | 0.32h |
| 112 | 1.3.1.9.3 | Update Software Architecture Document |  | 2d | 2008-04-17 08:00 A | 2008-04-18 17:00 |  | 10% | 1.8d | 2008-03-19 10:00 | 2008-03-24 10:00 | 3d | 0d | must start on 2008-04-17 08:00 | Dpalmer [20%]; Jzeng [20%] | 6.4h | 0.64h |
| 113 | 1.3.2 | Review UAT Plan - Test Script - Notify Participants |  | 2d | 2008-04-07 08:00 A | 2008-04-08 17:00 A |  | 100% |  | 2008-03-20 15:00 | 2008-03-20 16:00 | 1h |  | must start on 2008-04-07 08:00 | Cblake [10%]; Dpalmer [10%]; Lholeman [15%] | 5.6h | 5.6h |
| 114 | 1.3.3 | Construction Review and Agreement to Proceed to Transition | milestone | 0h | 2008-04-17 08:00 A | 2008-04-17 08:00 A | 105 | 100% |  | 2008-04-14 13:35 | 2008-04-14 13:35 | 0h |  | must start on 2008-04-17 08:00 | Development Team |  |  |
| 115 | 1.3.4 | Production Deployment and Coordination Meeting |  | 1h | 2008-04-18 08:00 A | 2008-04-18 09:00 A |  | 100% |  | 2008-04-17 09:35 | 2008-04-17 10:35 | 1h |  | must start on 2008-04-18 08:00 | Cblake; Dpalmer; Jfreymann; Development Team; Systems Group; Application Support; Abasu | 7h | 7h |
| 116 | 1.5 | **Transition Phase** |  | 8.75d | 2008-04-18 08:00 A | 2008-04-30 15:00 |  | 59% | 3.56d | 2008-04-14 13:35 | 2008-04-21 15:35 | 5.25d | 1.25d |  |  | 172h | 120.5h |
| 117 | 1.4.1 | Automated Build through all tiers (10583) |  | 4d | 2008-04-21 08:00 A | 2008-04-24 17:00 | 93 | 38% | 2.5d | 2008-03-27 08:00 | 2008-04-23 17:00 | 20d | 5d |  | Ekascic [20%] | 3.2h | 1.6h |
| 118 | 1.4.2 | NCIA System to Perform Grid Data Transfer for SIIM Demo (12793) (6867) |  | 4d | 2008-04-21 08:00 A | 2008-04-24 17:00 A | 102 | 100% |  |  |  |  |  |  | Tle [65%] | 20.8h | 20.8h |
| 119 | 1.4.3 | Update Use Case for Cinetool for thumbnail viewing in GUI (7208) |  | 3d | 2008-04-21 13:00 A | 2008-04-24 12:00 | 90FS+1d | 5% | 2.85d |  |  |  | 5.5d |  | Lholeman [25%] | 6h | 0.3h |
| 120 | 1.4.4 | Update Use Case for Add Link for DCEMRI Analytic Software (12234) |  | 4d | 2008-04-18 13:00 A | 2008-04-24 12:00 | 91 | 25% | 3d |  |  |  | 5.5d |  | Lholeman [25%] | 8h | 2h |
| 121 | 1.4.5 | **Iteration 1** |  | 4.25d | 2008-04-18 08:00 A | 2008-04-24 10:00 |  | 98% | 0.08d |  |  |  | 0d |  |  | 88h | 86.8h |
| 122 | 1.4.5.1 | Deploy to QA |  | 1d | 2008-04-18 08:00 A | 2008-04-18 17:00 A | 114 | 100% |  | 2008-04-14 13:35 | 2008-04-14 14:35 | 1h |  | must start on 2008-04-18 08:00 | Cblake | 8h | 8h |
| 123 | 1.4.5.2 | **QA Testing** |  | 3d | 2008-04-21 08:00 A | 2008-04-23 17:00 A |  | 100% |  | 2008-04-14 14:35 | 2008-04-16 14:35 | 2d |  |  | Ywu | 64h | 64h |
| 124 | 1.4.5.2.1 | Conduct QA Testing |  | 3d | 2008-04-21 08:00 A | 2008-04-23 17:00 A | 122 | 100% |  | 2008-04-14 14:35 | 2008-04-16 14:35 | 2d |  |  | Quality Assurance | 24h | 24h |
| 125 | 1.4.5.2.2 | Resolve QA Findings |  | 2d | 2008-04-22 08:00 A | 2008-04-23 17:00 A | 124FS-2d | 100% |  | 2008-04-14 14:35 | 2008-04-16 14:35 | 2d |  |  | NCIA Dev Team | 16h | 16h |
| 126 | 1.4.5.3 | Send out Advanced Site Down E-Mail Notification to User Community |  | 0.5h | 2008-04-22 08:00 A | 2008-04-22 08:30 A |  | 100% |  |  |  |  |  | must start on 2008-04-22 08:00 | Application Support | 0.5h | 0.5h |
| 127 | 1.4.5.4 | Deploy to Stage and Verify |  | 0.5d | 2008-04-23 08:00 A | 2008-04-23 12:00 A |  | 100% |  | 2008-04-16 14:35 | 2008-04-17 09:35 | 0.5d |  | must start on 2008-04-22 08:00 | Cblake [18.8%]; SYS [18.8%] | 1.5h | 1.5h |

Notes:
- 103: Developers Intergration Testing / Describes the scripts, test execution, and defect tracking and produces metrics (Numbers used as a measurement for standard of quality )
- 104: Review the test Cases developed by QA from the 3.5 Use Cases to insure functionality is being tested.
- 105: Development Team perform full system test in development
- 106: 1. LOE / 2.Get the source for CTP from John Perry (johnperry@dls.net ) / 3.Useful information regarding this program can be found at the MIRC Wiki site http://mircwiki.rsna.org/index.php?title=MIRC_Clinical_Trial_Processor/ 4.Build and install this program from scratch to local machine for testing. / 5.Run the appscan to see if there is any security issues. / 6.Work with John on how to handle the anonymization that NCIA currently has. / 7.Work with John on how to submit images/annotation using Field Center or File Sender. / 8.Work with John on how to handle submission for current clients (who is currently used Field Center and Anonymization service that works with MIRC to submit images to us). What would happen with their current idtable.properties file? / 9.Some test images for submission can be found at L:NCICBNCIAReference DataSetRegular directory / 10.Performance testing
- 113: ·Use Case / ·QA Test Script / ·UAT Participants / ·UAT Roles / ·Stage Check List / 2115 E. Jefferson/5th Floor/Conference Room 5012 / 9:30 - 10:30
- 114: Agenda item for regular team status meeting: / Weekly NCIA Status Meeting w/ Anand Basu / 2115 E. Jefferson/5th Floor/Conference Room 5001 / 1pm / Review NCIA Use Cases
- 115: 2115 E. Jefferson/5th Floor/Conference Room 5001 / 10:30-11 / All NCI areas that are involved in the successful deployment of the release. / ·Review Production Implementation Steps / ·What Services will be open and close (MIRC, WEB, QC, Cedara, etc) / ·Identify User Community to be Notified / ·Confirm Implementation Date / ·Define Verification Team / ·Review Production Recovery
- 116: Construction Completed. / Release auditor begins release deployment from the Development through Production.
- 117: * .; ; ·;; ·Week 2: Create automated Ant build / 1Week 3: Incorporate use of AntHillPro / 2Week 4: Transition phaseany documentation (guide), any LSD considerations
- 118: a) a query method that takes in a valid CQL query and returns the resulting metadata as a~CQLResultSet/ b)a retrieve method that takes in a valid CQL query and returns the images via the caGrid Transfer Service / Test Case 1: / Get meta data associated with patients cases for a particular trial / Test Case 2: / From results of Test Case 1 give studies associated with Patient X / Test Case 3: / From Test Case 2 series associated with study X / Test Case 4: / From Test Case 3 provide all metadata for images associated with series X / Test Case 5: / For Test Case 1 collection, provide a list of patients that have CT-Scans done with a Siemens Machine. / Test Case 6: / From a new collection give all data for patients that have a dual modality (like PET and CT or Chest X-Ray and CT) / Test Case 7: / From Collection in Test Case 6 give me the series UID for all PET series / Test Case 8: / Download images for results at series level
- 122: This is our first automated build so time alloted for trouble shooting the automated build.
- 124: This should be regression Testing

| ID | WBS | Task | Type | Duration | Start | Finish | Predecessors | Complete | Remaining | Baseline start | Baseline finish | Baseline duration | Total slack | Free slack | Constraint | Resources | Work | Actual work |
| --- | --- | --- | --- | --- | --- | --- | --- | --- | --- | --- | --- | --- | --- | --- | --- | --- | --- | --- |
| 128 | 1.4.5.5 | **UAT** |  | 0.5d | 2008-04-23 08:00 A | 2008-04-23 12:00 A |  | 100% |  | 2008-04-17 10:35 | 2008-04-17 16:35 | 0.62d |  |  |  | Cblake | 11h | 11h |
| 129 | 1.4.5.5.1 | Conduct UAT |  | 4h | 2008-04-23 08:00 A | 2008-04-23 12:00 A |  | 100% |  | 2008-04-17 10:35 | 2008-04-17 15:35 | 4h |  |  | must start on 2008-04-23 08:00 | Cblake | 4h | 4h |
| 130 | 1.4.5.5.2 | Resolve UAT Findings |  | 4h | 2008-04-23 08:00 A | 2008-04-23 12:00 A | 129 | 100% |  | 2008-04-17 10:35 | 2008-04-17 16:35 | 5h |  |  | must start on 2008-04-23 08:00 | NCIA Dev Team | 4h | 4h |
| 131 | 1.4.5.6 | Deploy to Stage and Verify |  | 2h | 2008-04-24 08:00 A | 2008-04-24 10:00 |  | 40% | 1.2h |  |  |  | 0d |  | must start on 2008-04-24 08:00 | Cblake | 2h | 0.8h |
| 132 | 1.4.5.7 | **Production** |  | 0.06d | 2008-04-24 08:00 A | 2008-04-24 08:30 A |  | 100% |  | 2008-04-18 09:35 | 2008-04-21 15:35 | 1.62d |  |  |  | Cblake | 1h | 1h |
| 133 | 1.4.5.7.1 | Determine Go No Go |  | 0.5h | 2008-04-24 08:00 A | 2008-04-24 08:30 A |  | 100% |  |  |  |  |  |  | must start on 2008-04-24 08:00 | Abasu | 0.5h | 0.5h |
| 134 | 1.4.6 | **Iteration 2** |  | 3.75d | 2008-04-25 08:00 A | 2008-04-30 15:00 |  | 35% | 2.45d |  |  |  | 1.25d |  |  |  | 46h | 9h |
| 135 | 1.4.6.1 | **Implement** |  | 0.62d | 2008-04-25 08:00 A | 2008-04-25 14:00 A |  | 100% |  |  |  |  |  |  |  |  | 5h | 5h |
| 136 | 1.4.6.1.1 | Fix date range validation (13792), tool tip text (13781), data range text (13780), and background color (13783) |  | 4h | 2008-04-25 08:00 A | 2008-04-25 12:00 A |  | 100% |  |  |  |  |  |  | must start on 2008-04-25 08:00 | Jzeng | 4h | 4h |
| 137 | 1.4.6.1.2 | Request Build/Deploy to QA |  | 1h | 2008-04-25 13:00 A | 2008-04-25 14:00 A | 136 | 100% |  |  |  |  |  |  |  | Cblake | 1h | 1h |
| 138 | 1.4.6.2 | **QA Testing** |  | 0.5d | 2008-04-25 14:00 A | 2008-04-28 09:00 A |  | 100% |  |  |  |  |  |  |  |  | 4h | 4h |
| 139 | 1.4.6.2.1 | Test date range validation (13792), tool tip text (13781), data range text (13780), and background color (13783) |  | 3h | 2008-04-25 14:00 A | 2008-04-25 17:00 A | 137 | 100% |  |  |  |  |  |  |  | Ywu | 3h | 3h |
| 140 | 1.4.6.2.2 | Request Build/Deploy to Stage |  | 1h | 2008-04-28 08:00 A | 2008-04-28 09:00 A | 139 | 100% |  |  |  |  |  |  |  | Cblake | 1h | 1h |
| 141 | 1.4.6.3 | **UTA** |  | 1.12d | 2008-04-28 09:00 | 2008-04-29 10:00 |  |  |  |  |  |  | 0d |  |  |  | 14h |  |
| 142 | 1.4.6.3.1 | Test date range validation (13792), tool tip text (13781), data range text (13780), and background color (13783) |  | 4h | 2008-04-28 09:00 | 2008-04-28 14:00 | 140 |  |  |  |  |  | 0.38d |  |  | Cblake; Lholeman; Jfreymann | 12h |  |
| 143 | 1.4.6.3.2 | Request Build/Deploy to Production |  | 2h | 2008-04-29 08:00 | 2008-04-29 10:00 | 142 |  |  |  |  |  | 0d |  | must start on 2008-04-29 08:00 | Cblake | 2h |  |
| 144 | 1.4.6.4 | **Production** |  | 1.5d | 2008-04-29 10:00 | 2008-04-30 15:00 | 130 |  |  | 2008-04-18 09:35 | 2008-04-21 15:35 | 1.62d | 0.75d |  |  | Cblake | 23h |  |
| 145 | 1.4.6.4.1 | Send out Site Down E-Mail Notification to User Community |  | 0.5h | 2008-04-29 10:00 | 2008-04-29 10:30 | 143 |  |  |  |  |  | 2.69d |  |  | Application Support | 0.5h |  |
| 146 | 1.4.6.4.2 | Post Maintenance Page and Submit Deployment Request |  | 4h | 2008-04-29 10:00 | 2008-04-29 15:00 | 143 |  |  | 2008-04-18 09:35 | 2008-04-21 09:35 | 1d | 2.25d |  |  | Cblake [37.5%]; SYS [37.5%] | 3h |  |
| 147 | 1.4.6.4.3 | Deploy to Production |  | 4h | 2008-04-30 08:00 | 2008-04-30 12:00 | 143 |  |  |  |  |  | 0d |  | must start on 2008-04-30 08:00 | SYS | 4h |  |
| 148 | 1.4.6.4.4 | Verify Production |  | 1h | 2008-04-30 13:00 | 2008-04-30 14:00 | 147 |  |  | 2008-04-21 09:35 | 2008-04-21 14:35 | 4h | 0.38d | 0d |  | Cblake | 1h |  |
| 149 | 1.4.6.4.5 | Remove Maintenance Page |  | 1h | 2008-04-30 14:00 | 2008-04-30 15:00 | 148 |  |  | 2008-04-21 14:35 | 2008-04-21 15:35 | 1h | 0.25d | 0d |  | Cblake; Systems Group | 2h |  |
| 150 | 1.4.6.4.6 | Send out Site Available E-Mail Notification to User Community |  | 0.5h | 2008-04-30 08:00 | 2008-04-30 08:30 | 149FS-1d |  |  |  |  |  | 0d |  | must start on 2008-04-30 08:00 | Application Support | 0.5h |  |
| 152 | 2 | Lessons Learned | milestone | 0h | 2008-05-02 08:00 | 2008-05-02 08:00 |  |  |  | 2008-05-02 08:00 | 2008-05-02 10:00 | 2h | 0d |  | must start on 2008-05-02 08:00 | Dpalmer; Development Team; Quality Assurance; Abasu; Jfreymann; Lholeman; Cblake; Application Support |  |  |

Notes:
- 129: 2115 E. Jefferson/5th Floor/Conference Room 5012 / 3 - 5 / QA Test Script / UI Testing / Functional testing not UI / Rolls
- 149: If system verified remove the Maintenance Page
- 152: Review of the release activities and provide ideas on how to improve the process and delivered product.
