# NCIA

Schedule from MS Project, 2008-04-28 to 2008-06-03, A marks actual dates.
Release 3.6
First Draft

## Calendars

- Standard: Mon-Fri 08:00-12:00, 13:00-17:00; Sat-Sun off.

## Resources

| Resource |
| --- |
| Dpalmer |
| Jzeng |
| Tle |
| Qpan |
| Cblake |
| Abasu |
| Jfreymann |
| Lholeman |
| Ywu |
| Lgurses |
| Development Team |
| Systems Group |
| Ekascic |
| Tech Writer |
| Quality Assurance |
| NCIA Dev Team |
| SYS |
| Application Support |
| OSU |
| Pyen |
| panq |
| Stelligent |
| Eric |
| Jennifer |
| Carl |
| Systems |
| Levent |
| Wayne |
| Dev Team |
| Jkirby |

## Schedule

| ID | WBS | Task | Type | Duration | Start | Finish | Predecessors | Complete | Remaining | Baseline start | Baseline finish | Baseline duration | Total slack | Constraint | Deadline | Resources | Work | Actual work |
| --- | --- | --- | --- | --- | --- | --- | --- | --- | --- | --- | --- | --- | --- | --- | --- | --- | --- | --- |
| 1 | 1 | **NCIA 3.6** |  | 27d | 2008-04-28 08:00 A | 2008-06-03 17:00 |  | 99% | 0.32d | 2008-02-21 08:00 | 2008-05-02 10:00 | 51.25d? | 0d |  |  |  | 473.86h | 455.62h |
| 2 | 1.1 | **Inception Phase** |  | 1.25d | 2008-04-28 08:00 A | 2008-04-29 10:00 A |  | 100% |  | 2008-02-21 08:00 | 2008-03-12 17:00 | 15d? |  |  |  |  | 12h | 12h |
| 3 | 1 | **Project Management** |  | 1.25d | 2008-04-28 08:00 A | 2008-04-29 10:00 A |  | 100% |  | 2008-02-21 08:00 | 2008-02-28 10:00 | 5.25d |  |  |  |  | 4h | 4h |
| 4 | 1.1.1.1 | Plan the project |  | 2h | 2008-04-29 08:00 A | 2008-04-29 10:00 A |  | 100% |  | 2008-02-21 08:00 | 2008-02-27 17:00 | 5d |  | must start on 2008-04-29 08:00 |  | Dpalmer | 2h | 2h |
| 5 | 1.1.1.2 | Review and Priortize |  | 2h | 2008-04-28 08:00 A | 2008-04-28 10:00 A |  | 100% |  | 2008-02-22 08:00 | 2008-02-22 10:30 | 2.5h |  | must start on 2008-04-30 08:00 |  | Dpalmer | 2h | 2h |
| 6 | 3 | **Requirements** |  | 1d | 2008-04-28 08:00 A | 2008-04-28 17:00 A |  | 100% |  | 2008-02-25 10:30 | 2008-03-11 10:30 | 11d |  |  |  |  | 8h | 8h |
| 7 | 3.1 | Use Case for When downloading from 2+ remote sites, text on manage data basket notes 1 email instead of 2 email (13779) |  | 3h | 2008-04-28 08:00 A | 2008-04-28 11:00 A |  | 100% |  | 2008-02-25 10:30 | 2008-02-27 10:30 | 2d |  |  |  | Lholeman | 3h | 3h |
| 8 | 4.1 | Use Case for Visualize Images text on study results page shouldn't be displayed when viewing remote site results (13778) |  | 3h | 2008-04-28 11:00 A | 2008-04-28 15:00 A | 7 | 100% |  | 2008-02-27 10:30 | 2008-03-11 10:30 | 9d |  |  |  | Lholeman | 3h | 3h |
| 9 | 1.1.2.3 | Use Case for Form validation on visibility date range in search page doesn't catch all invalid dates (13792) |  | 2h | 2008-04-28 15:00 A | 2008-04-28 17:00 A | 8 | 100% |  |  |  |  |  |  |  | Lholeman | 2h | 2h |
| 10 | 1.1.2.4 | Review Use Cases with Developer | milestone | 0h | 2008-04-28 17:00 A | 2008-04-28 17:00 A | 9 | 100% |  | 2008-03-20 08:00 | 2008-03-20 11:00 | 3h |  |  |  | Lholeman |  |  |
| 11 | 1.3 | **Elaboration Phase** |  | 0.25d | 2008-04-29 10:00 A | 2008-04-29 12:00 A | 2 | 100% |  | 2008-03-11 08:00 | 2008-04-04 16:43 | 18.97d |  |  | 2007-08-27 17:00 |  | 3.45h | 3.45h |
| 12 | 1 | **Project Management** |  | 0.12d | 2008-04-29 10:00 A | 2008-04-29 11:00 A | 2 | 100% |  | 2008-03-11 08:00 | 2008-03-19 10:00 | 6.25d |  |  |  | Dpalmer | 1.45h | 1.45h |
| 13 | 1.2.1.1 | Elaboration Project Plan |  | 1h | 2008-04-29 10:00 A | 2008-04-29 11:00 A |  | 100% |  | 2008-03-11 08:00 | 2008-03-18 17:00 | 6d |  |  |  | Dpalmer [35%]; Jzeng [10%] | 0.45h | 0.45h |
| 14 | 1.3.1 | **Iteration 1** |  | 0.25d | 2008-04-29 10:00 A | 2008-04-29 12:00 A |  | 100% |  | 2008-03-13 08:00 | 2008-04-04 16:43 | 16.97d |  |  |  |  | 2h | 2h |
| 15 | 4 | **Analysis and Design** |  | 0.25d | 2008-04-29 10:00 A | 2008-04-29 12:00 A |  | 100% |  | 2008-03-11 10:30 | 2008-03-12 10:30 | 1d |  |  |  |  | 2h | 2h |
| 16 | 1.2.2.1.1 | Develop LOE and Resource Assignment |  | 2h | 2008-04-29 10:00 A | 2008-04-29 12:00 A |  | 100% |  |  |  |  |  |  |  | Jzeng | 2h | 2h |
| 17 | 1.4 | **Construction Phase** |  | 13.06d | 2008-04-29 13:00 A | 2008-05-16 13:30 A | 11 | 100% |  | 2008-03-20 15:00 | 2008-04-23 17:00 | 24.25d |  |  |  |  | 222.1h | 222.1h |
| 18 | 1.4.1 | **Iteration 1** |  | 13.06d | 2008-04-29 13:00 A | 2008-05-16 13:30 A |  | 100% |  | 2008-03-20 15:00 | 2008-04-23 17:00 | 24.25d |  |  |  |  | 212.5h | 212.5h |
| 19 | 1.3.1.1 | **Requirements** |  | 4d | 2008-05-05 08:00 A | 2008-05-08 17:00 A |  | 100% |  |  |  |  |  |  |  |  | 18h | 18h |
| 20 | 1.3.1.1.1 | (13976) Develop Use Case for 1.1 Core Service & Query Service |  | 4d | 2008-05-05 08:00 A | 2008-05-08 17:00 A |  | 100% |  |  |  |  |  | must start on 2008-05-05 08:00 |  | Lholeman [50%]; Cblake [25%] | 18h | 18h |
| 21 | 1.3.1.2 | **Requirements** |  | 0.12d | 2008-05-01 08:00 A | 2008-05-01 09:00 A |  | 100% |  | 2008-03-14 08:00 | 2008-03-21 09:00 | 5.12d |  |  |  |  | 3h | 3h |
| 22 | 1.3.1.2.1 | Submit Use Cases to QA |  | 1h | 2008-05-01 08:00 A | 2008-05-01 09:00 A |  | 100% |  | 2008-03-21 08:00 | 2008-03-21 09:00 | 1h |  | must start on 2008-05-01 08:00 |  | Lholeman; Cblake; Ywu | 3h | 3h |
| 23 | 4 | **Analysis and Design** |  | 0.84d | 2008-05-01 09:00 A | 2008-05-01 16:43 A |  | 100% |  | 2008-03-11 10:30 | 2008-03-12 10:30 | 1d |  |  |  |  | 8h | 8h |
| 24 | 1.3.1.3.1 | QA Develop Test Case |  | 5.73h | 2008-05-01 09:00 A | 2008-05-01 15:43 A |  | 100% |  |  |  |  |  |  |  | Quality Assurance; Lholeman [5%] | 6h | 6h |
| 25 | 1.3.1.3.2 | Review QA Test Cases |  | 1h | 2008-05-01 15:43 A | 2008-05-01 16:43 A | 24 | 100% |  |  |  |  |  |  |  | Lholeman; Quality Assurance | 2h | 2h |

Notes:
- 6: Derive requirments from Feature Requests and BUGs
- 8: ·Identify the Use Case for FR and BUGs that have enough information to determine the Use Case. / ·For FR and BUGs that do not have information these will have a Tracker status of "Need Clarification". Run Gforge report for these and schedule a meeting with customers for clarification. / ·No Use Case exists then will place a Use Case Section in the Use Case document and Bubble diagram in EA. / ·Develop detail requirements / ·Revise the LOE / ·Organize into Iterations for elaberation phase
- 15: Describe the multiple archtecture views
- 21: Refine Requirement / Transist Rquirement to Use Case / Review Use Case with Developers
- 23: Describe the multiple archtecture views

| ID | WBS | Task | Type | Duration | Start | Finish | Predecessors | Complete | Baseline start | Baseline finish | Baseline duration | Constraint | Resources | Work | Actual work |
| --- | --- | --- | --- | --- | --- | --- | --- | --- | --- | --- | --- | --- | --- | --- | --- |
| 26 | 1.3.1.4 | **Implementation** |  | 13.06d | 2008-04-29 13:00 A | 2008-05-16 13:30 A |  | 100% | 2008-03-11 08:00 | 2008-03-11 17:00 | 1d |  |  | 156.3h | 156.3h |
| 27 | 1.3.1.4.1 | Develop UAT Test Case, Plan, and Participants |  | 1d | 2008-05-13 08:00 A | 2008-05-13 17:00 A | 15 | 100% |  |  |  | must start on 2008-05-13 08:00 | Cblake | 8h | 8h |
| 28 | 3.1 | (13779) When downloading from 2+ remote sites, text on manage data basket notes 1 email instead of 2 email |  | 13.33h | 2008-04-29 13:00 A | 2008-05-01 09:20 A |  | 100% | 2008-02-25 10:30 | 2008-02-27 10:30 | 2d |  | Jzeng [30%] | 4h | 4h |
| 29 | 1.3.1.4.3 | (13756) Can not configure index server url and port number for NCIAQueryService |  | 2d | 2008-05-01 09:20 A | 2008-05-05 09:20 A | 28 | 100% | 2008-03-11 08:00 | 2008-03-11 17:00 | 1d |  | Jzeng [30%] | 4.8h | 4.8h |
| 30 | 4.1 | (13778) Visualize Images text on study results page shouldn't be displayed when viewing remote site results |  | 18.4h | 2008-04-29 13:00 A | 2008-05-01 15:24 A | 9 | 100% | 2008-02-27 10:30 | 2008-03-11 10:30 | 9d |  | Qpan [25%] | 4h | 4h |
| 31 | 1.3.1.4.5 | (13792) Form validation on visibility date range in search page doesn't catch all invalid dates |  | 8h | 2008-05-01 15:24 A | 2008-05-02 15:24 A | 30 | 100% |  |  |  |  | Qpan [50%] | 4h | 4h |
| 32 | 1.3.1.4.6 | (13750) Number of images per page displayed in QC Tool is not consistent |  | 4.88d | 2008-05-01 15:24 A | 2008-05-08 14:24 A | 30 | 100% |  |  |  |  | Qpan [80%] | 24h | 24h |
| 33 | 1.3.1.4.7 | (13776) One user's selection of the remote search affects the other user's selection |  | 6.67d | 2008-04-30 08:00 A | 2008-05-09 09:20 A |  | 100% |  |  |  |  | Ekascic [50%] | 20h | 20h |
| 34 | 1.3.1.4.8 | (13768) In Firefox, data overflows into neighboring columns in all Results Tables |  | 5d | 2008-04-30 08:00 A | 2008-05-07 12:00 A |  | 100% |  |  |  |  | Ekascic [30%] | 12h | 12h |
| 35 | 1.3.1.4.9 | (13976) Implement 1.1 Core Service & Query Service |  | 6.56d | 2008-05-08 08:00 A | 2008-05-16 13:30 A | 20 | 100% |  |  |  | must start on 2008-05-08 08:00 | Jzeng [40%] | 21h | 21h |
| 36 | 1.3.1.4.10 | **(10583) Automated Build and Deployment** |  | 6d | 2008-05-02 08:00 A | 2008-05-09 17:00 A |  | 100% |  |  |  |  | Cblake [5%] | 52.5h | 52.5h |
| 37 | 1.3.1.4.10.1 | **Automated Build & Deployment** |  | 6d | 2008-05-02 08:00 A | 2008-05-09 17:00 A |  | 100% |  |  |  |  |  | 50.5h | 50.5h |
| 38 | 1.3.1.4.10.1.1 | complete automated build scripts | milestone | 0h | 2008-05-02 08:00 A | 2008-05-02 08:00 A |  | 100% |  |  |  |  | Stelligent |  |  |
| 39 | 1.3.1.4.10.1.2 | NCIA Team testing of automated build scripts |  | 8h | 2008-05-02 08:00 A | 2008-05-02 17:00 A | 38 | 100% |  |  |  |  | Eric | 8h | 8h |
| 40 | 1.3.1.4.10.1.3 | test automated build on AHP on DEV, QA, Stage |  | 8h | 2008-05-02 08:00 A | 2008-05-02 17:00 A | 39 | 100% |  |  |  |  |  |  |  |
| 41 | 1.3.1.4.10.1.4 | complete AntHillPro build tracks for DEV | milestone | 0h | 2008-05-02 17:00 A | 2008-05-02 17:00 A | 40 | 100% |  |  |  |  | Stelligent |  |  |
| 42 | 1.3.1.4.10.1.5 | provide QA deployment properties to Steve |  | 1h | 2008-05-02 08:00 A | 2008-05-02 09:00 A |  | 100% |  |  |  |  | Jennifer | 1h | 1h |
| 43 | 1.3.1.4.10.1.6 | complete AntHillPro build tracks for QA |  | 4h | 2008-05-02 09:00 A | 2008-05-02 14:00 A | 42 | 100% |  |  |  |  | Stelligent | 4h | 4h |
| 44 | 1.3.1.4.10.1.7 | Determine if caGrid 1.1 CORE Service reside Tomcat 5.0.28 |  | 0.5h | 2008-05-07 08:00 A | 2008-05-07 08:30 A | 43 | 100% |  |  |  | must start on 2008-05-07 08:00 | Carl | 0.5h | 0.5h |
| 45 | 1.3.1.4.10.1.8 | meet with systems group to discuss Stage and Prod AntHillPro configuration |  | 2h | 2008-05-07 08:30 A | 2008-05-07 10:30 A | 44 | 100% |  |  |  | start no earlier than 2008-05-07 08:00 | Stelligent; Systems; Carl; Eric | 8h | 8h |
| 46 | 1.3.1.4.10.1.9 | Stelligent Team build and automation tutorial |  | 1h | 2008-05-08 10:30 A | 2008-05-08 11:30 A | 45FS+1d | 100% |  |  |  | start no earlier than 2008-05-07 08:00 | Levent | 1h | 1h |
| 47 | 1.3.1.4.10.1.10 | Setup AntHillPro tracks on Stage and Prod |  | 4h | 2008-05-08 11:30 A | 2008-05-08 16:30 A | 46 | 100% |  |  |  | start no earlier than 2008-05-08 08:00 | Wayne | 4h | 4h |
| 48 | 1.3.1.4.10.1.11 | Functional Testing of automated deployment on DEV |  | 16h | 2008-05-08 08:00 A | 2008-05-09 17:00 A |  | 100% |  |  |  | finish no earlier than 2008-05-09 17:00 | Dev Team | 16h | 16h |
| 49 | 1.3.1.4.10.1.12 | Modify Installation Guide for Automated Deployment |  | 8h | 2008-05-09 08:00 A | 2008-05-09 17:00 A |  | 100% |  |  |  | start no earlier than 2008-05-09 08:00 | Carl | 8h | 8h |
| 50 | 1.3.1.4.11 | Update Release Note |  | 2h | 2008-05-14 08:00 A | 2008-05-14 10:00 A |  | 100% |  |  |  | must start on 2008-05-14 08:00 | Cblake | 2h | 2h |

Notes:
- 26: Software Development, Unti Test, Intergration
- 30: ·Identify the Use Case for FR and BUGs that have enough information to determine the Use Case. / ·For FR and BUGs that do not have information these will have a Tracker status of "Need Clarification". Run Gforge report for these and schedule a meeting with customers for clarification. / ·No Use Case exists then will place a Use Case Section in the Use Case document and Bubble diagram in EA. / ·Develop detail requirements / ·Revise the LOE / ·Organize into Iterations for elaberation phase
- 44: caGrid 1.1 CORE service will reside in a Tomcat 5.0.28 instance
- 50: Update Release notes and provide copy to John Freymann

| ID | WBS | Task | Type | Duration | Start | Finish | Predecessors | Complete | Remaining | Baseline start | Baseline finish | Baseline duration | Total slack | Constraint | Resources | Work | Actual work |
| --- | --- | --- | --- | --- | --- | --- | --- | --- | --- | --- | --- | --- | --- | --- | --- | --- | --- |
| 51 | 5 | **Test** |  | 10d | 2008-04-29 13:00 A | 2008-05-13 12:00 A |  | 100% |  | 2008-02-29 08:00 | 2008-03-06 17:00 | 5d |  |  |  | 27.2h | 27.2h |
| 52 | 1.3.1.5.1 | (12793) Develop and Support SIIM Demo on Stage |  | 10d | 2008-04-29 13:00 A | 2008-05-13 12:00 A |  | 100% |  |  |  |  |  |  | Jzeng [10%]; Ekascic [15%] | 18.8h | 18.8h |
| 53 | 1.3.1.5.2 | (12793) SIIM Workspace Intergration Test | milestone | 0h | 2008-05-13 08:00 A | 2008-05-13 08:00 A |  | 100% |  |  |  |  |  | must start on 2008-05-13 08:00 | Ekascic; Cblake |  |  |
| 54 | 1.3.1.5.3 | Validate the fixed function meets the Use Case or Corrective Action |  | 7d | 2008-05-01 08:00 A | 2008-05-09 17:00 A |  | 100% |  | 2008-02-29 08:00 | 2008-03-06 17:00 | 5d |  | must start on 2008-05-01 08:00 | Lholeman [15%] | 8.4h | 8.4h |
| 55 | 1.3.2 | Review UAT Plan - Test Script - Notify Participants |  | 2d | 2008-05-14 08:00 A | 2008-05-15 17:00 A | 27 | 100% |  | 2008-03-20 15:00 | 2008-03-20 16:00 | 1h |  |  | Cblake [10%]; Dpalmer [10%]; Lholeman [15%] | 5.6h | 5.6h |
| 56 | 1.3.3 | Production Deployment and Coordination Meeting |  | 1h | 2008-05-06 08:00 A | 2008-05-06 09:00 A |  | 100% |  | 2008-04-17 09:35 | 2008-04-17 10:35 | 1h |  | must start on 2008-05-06 08:00 | Cblake; Dpalmer; Systems Group; Application Support | 4h | 4h |
| 57 | 1.5 | **Transition Phase** |  | 12.44d | 2008-05-16 13:30 A | 2008-06-03 17:00 | 17 | 95% | 0.64d | 2008-04-14 13:35 | 2008-04-21 15:35 | 5.25d | 0d |  |  | 236.31h | 218.07h |
| 58 | 1.4.1 | Develop Notification E-Mail Text to beSent to Customer About 3.6 Release |  | 6d | 2008-05-21 08:00 A | 2008-05-28 17:00 A | 50 | 100% |  |  |  |  |  |  | Jfreymann; Jkirby | 96h | 96h |
| 59 | 1.4.2 | Deploy to QA (Using New Automated Build & Deployment) |  | 1d | 2008-05-16 13:30 A | 2008-05-19 13:30 A |  | 100% |  |  |  |  |  |  | Cblake; SYS | 16h | 16h |
| 60 | 1.4.3 | **QA Testing** |  | 2d | 2008-05-16 13:30 A | 2008-05-20 13:30 A |  | 100% |  | 2008-04-14 14:35 | 2008-04-16 14:35 | 2d |  |  | Ywu | 40h | 40h |
| 61 | 1.4.3.1 | Conduct QA Testing |  | 1d | 2008-05-19 13:30 A | 2008-05-20 13:30 A | 59 | 100% |  | 2008-04-14 14:35 | 2008-04-16 14:35 | 2d |  |  | Quality Assurance | 8h | 8h |
| 62 | 1.4.3.2 | Resolve QA Findings |  | 2d | 2008-05-16 13:30 A | 2008-05-20 13:30 A | 61FS-2d | 100% |  | 2008-04-14 14:35 | 2008-04-16 14:35 | 2d |  |  | NCIA Dev Team | 16h | 16h |
| 63 | 1.4.4 | **UAT in QA Tier** |  | 1d | 2008-05-20 13:30 A | 2008-05-21 13:30 A | 60 | 100% |  | 2008-04-17 10:35 | 2008-04-17 16:35 | 0.62d |  |  | Cblake | 15h | 15h |
| 64 | 1.4.4.1 | Conduct UAT |  | 4h | 2008-05-20 13:30 A | 2008-05-21 08:30 A |  | 100% |  | 2008-04-17 10:35 | 2008-04-17 15:35 | 4h |  |  | Cblake | 4h | 4h |
| 65 | 1.4.4.2 | Resolve UAT Findings |  | 4h | 2008-05-21 08:30 A | 2008-05-21 13:30 A | 64 | 100% |  | 2008-04-17 10:35 | 2008-04-17 16:35 | 5h |  |  | NCIA Dev Team | 4h | 4h |
| 66 | 1.4.5 | Deploy to Stage and Verify (Using New Automated Build & Deployment) |  | 5.44d | 2008-05-21 13:30 A | 2008-05-28 17:00 A | 63 | 100% |  | 2008-04-16 14:35 | 2008-04-17 09:35 | 0.5d |  | finish no earlier than 2008-05-28 17:00 | Cblake [18.8%]; SYS [18.8%] | 16.31h | 16.31h |
| 67 | 1.4.6 | **Production** |  | 4d | 2008-05-29 08:00 A | 2008-06-03 17:00 | 66 | 68% | 1.28d | 2008-04-18 09:35 | 2008-04-21 15:35 | 1.62d | 0d |  | Cblake | 53h | 34.76h |
| 68 | 1.4.6.1 | Send out Site Down E-Mail Notification to User Community |  | 0.5h | 2008-05-29 08:00 A | 2008-05-29 08:30 A | 66, 58 | 100% |  |  |  |  |  |  | Application Support | 0.5h | 0.5h |
| 69 | 1.4.6.2 | Post Maintenance Page and Deploy to Production (Using New Automated Build) |  | 2d | 2008-05-29 08:00 A | 2008-05-30 17:00 A | 63 | 100% |  | 2008-04-18 09:35 | 2008-04-21 09:35 | 1d |  |  | Cblake [37.5%]; SYS [37.5%] | 12h | 12h |
| 70 | 1.4.6.3 | Verify Production | milestone | 0h | 2008-05-30 17:00 A | 2008-05-30 17:00 A | 69 | 100% |  | 2008-04-21 09:35 | 2008-04-21 14:35 | 4h |  |  | Cblake |  |  |
| 71 | 1.4.6.4 | Remove Maintenance Page | milestone | 0h | 2008-05-30 17:00 A | 2008-05-30 17:00 A | 70 | 100% |  | 2008-04-21 14:35 | 2008-04-21 15:35 | 1h |  |  | Cblake; Systems Group |  |  |
| 72 | 1.4.6.5 | Send out Site Available E-Mail Notification to User Community |  | 0.5h | 2008-05-30 08:00 A | 2008-05-30 08:30 A | 71 | 100% |  |  |  |  |  | start no earlier than 2008-05-30 08:00 | Application Support | 0.5h | 0.5h |
| 73 | 1.4.6.6 | Cleanup Old Globus Query Service |  | 1d | 2008-06-03 08:00 | 2008-06-03 17:00 | 70FS+1d |  |  |  |  |  | 0d |  | Systems | 8h |  |

Notes:
- 54: ·Inventory Junit and Selenium test cases and match to Use Case / ·Privode gap report for Use Cases with no Test Case and Test Case with no Use Case
- 55: ·Use Case / ·QA Test Script / ·UAT Participants / ·UAT Roles / ·Stage Check List / 2115 E. Jefferson/5th Floor/Conference Room 5012 / 9:30 - 10:30
- 56: 2115 E. Jefferson/5th Floor/Conference Room 5001 / 10:30-11 / All NCI areas that are involved in the successful deployment of the release. / ·Review Production Implementation Steps / ·What Services will be open and close (MIRC, WEB, QC, Cedara, etc) / ·Identify User Community to be Notified / ·Confirm Implementation Date / ·Define Verification Team / ·Review Production Recovery
- 57: Construction Completed. / Release auditor begins release deployment from the Development through Production.
- 61: This should be regression Testing
- 64: 2115 E. Jefferson/5th Floor/Conference Room 5012 / 3 - 5 / QA Test Script / UI Testing / Functional testing not UI / Rolls
- 71: If system verified remove the Maintenance Page
- 73: cleanup the old Globus Query service deployment and the new ncia-ds.xml datasource configuration
