# NCIA

Schedule from MS Project, 2008-05-08 to 2008-07-31, A marks actual dates.
Release 3.7
After 03/20/2008 Status Meeting

## Calendars

- Standard: Mon-Fri 08:00-12:00, 13:00-17:00; Sat-Sun off. Exceptions (off unless hours are given): 2008-05-26, 2008-06-09, 2008-06-23 08:00-12:00, 2008-06-24 to 2008-06-25, 2008-07-04.

## Resources

| Resource |
| --- |
| Dpalmer |
| Jzeng |
| Tle |
| Qpan |
| Cblake |
| Abasu |
| Jfreymann |
| Lholeman |
| Ywu |
| Lgurses |
| Development Team |
| Systems Group |
| Ekascic |
| Tech Writer |
| Quality Assurance |
| NCIA Dev Team |
| SYS |
| Application Support |
| OSU |
| Pyen |
| SCI Consultant |
| Sporanki |
| Pduvall |
| Jzhou |
| CPiepenbring |
| NCI Grid Team |
| Jim |
| Surendra |
| Team |
| Carl |
| Cjaffe |
| Jkirby |
| SCI |
| Jperry-RSNA |
| ek |

## Schedule

| ID | WBS | Task | Duration | Start | Finish | Predecessors | Complete | Remaining | Total slack | Constraint | Resources | Work | Actual work |
| --- | --- | --- | --- | --- | --- | --- | --- | --- | --- | --- | --- | --- | --- |
| 1 | 1 | **Release 3.7** | 55.5d? | 2008-05-08 08:00 A | 2008-07-31 17:00 |  | 85% | 8.09d? | 0d |  |  | 565.45h | 522.41h |
| 2 | 1.1 | **Elaboration Phase** | 45.74d? | 2008-05-08 08:00 A | 2008-07-18 09:57 |  | 88% | 5.66d? | 0d |  |  | 460.3h | 447.26h |
| 3 | 1.1.1 | **Requirements** | 38.88d? | 2008-05-16 09:00 A | 2008-07-17 12:00 |  | 50% | 19.59d? | 0d |  |  | 20.2h | 15.16h |
| 4 | 1.1.1.1 | **Use Case** | 38.88d? | 2008-05-16 09:00 A | 2008-07-17 12:00 |  | 50% | 19.59d? | 0d |  |  | 20.2h | 15.16h |
| 5 | 1.1.1.1.1 | (12333-M) Add WEB Browser Versions Supported Information | 1d | 2008-05-16 09:00 A | 2008-05-19 09:00 A |  | 100% |  |  |  | Lholeman [35%]; Jfreymann | 2.8h | 2.8h |
| 6 | 1.1.1.1.2 | (14604-H) Update Legal rules of the road Text | 0.5d? | 2008-05-19 09:00 A | 2008-05-19 14:00 A | 5 | 100% |  |  |  | Lholeman | 4h | 4h |
| 7 | 1.1.1.1.3 | (12234) Add Link for DCEMRI Analytic Software | 4h | 2008-05-19 14:00 A | 2008-05-20 09:00 A | 6 | 100% |  |  |  | Lholeman [25%] | 1h | 1h |
| 8 | 1.1.1.1.4 | (15106) Manange NCIA Users by Security Groups | 10.5d | 2008-07-02 08:00 A | 2008-07-17 12:00 |  | 40% | 6.3d | 0d | must start on 2008-07-02 08:00 | Lholeman [15%]; Jkirby [10%] | 12.4h | 7.36h |
| 9 | 1.1.2 | **Analysis and Design** | 38.74d? | 2008-05-19 08:00 A | 2008-07-18 09:57 |  | 87% | 5.01d? | 0d |  |  | 275.9h | 267.9h |
| 10 | 1.1.2.1 | **(8046-H) Show an Abbreviated Description for Collections on Search** | 4d | 2008-06-17 08:00 A | 2008-06-23 08:00 A |  | 100% |  |  | start no earlier than 2008-06-17 08:00 |  | 14h | 14h |
| 11 | 1.1.2.1.1 | **Develop alternatives and provide recommended solution** | 4d | 2008-06-17 08:00 A | 2008-06-23 08:00 A |  | 100% |  |  |  |  | 14h | 14h |
| 12 | 1.1.2.1.1.1 | Review Use Case | 2h | 2008-06-17 08:00 A | 2008-06-17 10:00 A |  | 100% |  |  |  | Ekascic; Lholeman; Dpalmer | 6h | 6h |
| 13 | 1.1.2.1.1.2 | Develop alternatives and Provide Recommended Solution | 13.33h | 2008-06-18 10:40 A | 2008-06-19 17:00 A | 12 | 100% |  |  | must finish on 2008-06-19 17:00 | Ekascic [45%]; Dpalmer | 6h | 6h |
| 14 | 1.1.2.1.1.3 | Review Alternatives & Determine Solution | 10h | 2008-06-19 15:00 A | 2008-06-23 08:00 A | 13 | 100% |  |  | must finish on 2008-06-19 17:00 | Ekascic; Jfreymann; Dpalmer; Lholeman | 2h | 2h |
| 15 | 1.1.2.2 | **(13584-M) NCIA-QA takes about 30 sec to login** | 20d | 2008-05-19 08:00 A | 2008-06-17 17:00 A |  | 100% |  |  |  |  | 14h | 14h |
| 16 | 1.1.2.2.1 | Research and Document Findings | 1.47d | 2008-05-19 08:00 A | 2008-05-20 11:45 A |  | 100% |  |  | must start on 2008-05-19 08:00 | Jzhou [85%] | 10h | 10h |
| 17 | 1.1.2.2.2 | Peer Review | 2h | 2008-06-17 15:00 A | 2008-06-17 17:00 A | 16 | 100% |  |  | must finish on 2008-06-17 17:00 | Jzeng; Jzhou | 4h | 4h |
| 18 | 1.1.2.3 | **(14348-H) Resolve Duplicates being Inserted in the NCIA Archive** | 9.25d | 2008-05-29 08:00 A | 2008-06-12 10:00 A |  | 100% |  |  |  |  | 55.4h | 55.4h |
| 19 | 1.1.2.3.1 | Replicate the issue | 24h | 2008-05-29 08:00 A | 2008-06-02 17:00 A |  | 100% |  |  |  | Jzhou [85%] | 20.4h | 20.4h |
| 20 | 1.1.2.3.2 | Research for solution | 29.14h | 2008-06-03 08:00 A | 2008-06-06 14:08 A | 19 | 100% |  |  |  | Jzhou [70%] | 20.4h | 20.4h |
| 21 | 1.1.2.3.3 | Identify areas where additional constraints and error checking can be placed in the DB adapter | 25.5h | 2008-06-03 08:00 A | 2008-06-06 09:30 A | 19 | 100% |  |  |  | Jzhou [40%] | 10.2h | 10.2h |
| 22 | 1.1.2.3.4 | Documentation | 20h | 2008-06-03 08:00 A | 2008-06-05 12:00 A | 19 | 100% |  |  |  | Jzhou [2%] | 0.4h | 0.4h |
| 23 | 1.1.2.3.5 | Peer Review | 2h | 2008-06-12 08:00 A | 2008-06-12 10:00 A | 20, 21, 22 | 100% |  |  | must start on 2008-06-17 08:00 | Jzeng; Jzhou | 4h | 4h |
| 24 | 1.1.2.4 | **(15286) Verify Submission Proxy Error** | 22.62d | 2008-05-23 08:00 A | 2008-07-01 09:00 A |  | 100% |  |  |  |  | 22h | 22h |
| 25 | 1.1.2.4.1 | Research Cause for Proxy Errors | 18.82h | 2008-05-23 08:00 A | 2008-05-28 10:49 A |  | 100% |  |  | must start on 2008-05-23 08:00 | Qpan [85%] | 16h | 16h |
| 26 | 1.1.2.4.2 | Develop analysis statement for resolving problem | 4.71h | 2008-05-28 10:49 A | 2008-05-28 16:31 A | 25 | 100% |  |  |  | Qpan [85%] | 4h | 4h |
| 27 | 1.1.2.4.3 | Review and Schedule Recommendations | 1h | 2008-07-01 08:00 A | 2008-07-01 09:00 A |  | 100% |  |  | must start on 2008-07-01 08:00 | Dpalmer; Lholeman | 2h | 2h |

Notes:
- 10: Develop alternatives and provide recommended solution with LOE and resources. / The full text and abbreviated texts will be maintained by the Image Submission Administrator in a manor similar to the QC Tool using the UIDROOT as the primary identifier for the collection texts. A method for Updating. Deleting, and Adding these texts for a collection must be formatted, spell checked and provide for linking. / In areas of the NCIA system where collections are presented the ability to provide mouse over popups that will display the abbreviated text along with a link to the full text description is provided. / Before the collection texts can be entered there must be a database submission for the collection. / Version control of the text is not required.
- 11: Develop alternatives and provide recommended solution with LOE and resources.
- 12: Review the Use Case requirements and clarify understanding of FR objective and the various components and functions affected.
- 14: Review with customer the documented alternatives considered and the recommeded solution. This will entail pro and con information, and LOE from construction to delivery to QA.
- 16: Document findings, recommended solution (s), LOE, and tasks that will be used in constructing the agreed on solution. / LOE: / Use Case / Sequence digrams / Class diagrams / Junit
- 17: Review Analysis findings and recommendations. Verify LOE from Construction through Build to QA and artfacts to be delivered: / Use Case / Sequence and Class diagrams / Testing (Junit, etc.) / The LOE for 13584 is about 32 hours . / 1) Design (Sequence Diagram, update use case, etc) (6 hours) / 2)Remove remote sites setting from login action (4 hours) / 3)Adding remote site setting up when the user clicks on remote search link. ~(16 hours) / 4)Unit testing (4 hours) / 5)Document (Gforge update, etc)~ (2 hours)
- 18: Develop an analysis statement on what fixes need to be made to the NCIA System to insure duplicates can not enter the NCIA System, steps to fix database and file system, LOE, and resources. / Correct the NCIA System to prevent any duplication occurrence from image submissions. / Remove any duplicates and associated files if appropriate in the existing production database after the MIRC Database Adapter has been fixed. / Perform monitoring of database for the next 4 image submissions to insure problem is resolved. / See NCIA Activity 14482
- 24: Develop analysis statement for resolving problem with LOE and identify the affected components.
- 26: Document findings and recommendations.

| ID | WBS | Task | Duration | Start | Finish | Predecessors | Complete | Constraint | Resources | Work | Actual work |
| --- | --- | --- | --- | --- | --- | --- | --- | --- | --- | --- | --- |
| 28 | 1.1.2.5 | **(14403) Verify Submission Tool Gives Incorrect Results** | 20.68d | 2008-05-28 16:31 A | 2008-07-02 09:00 A | 26 | 100% |  |  | 10h | 10h |
| 29 | 1.1.2.5.1 | Research Cause | 0.59d | 2008-05-28 16:31 A | 2008-05-29 13:14 A |  | 100% |  | Qpan [85%] | 4h | 4h |
| 30 | 1.1.2.5.2 | Develop Analysis Statement for resolving problem | 20h | 2008-06-03 08:07 A | 2008-06-30 17:00 A | 29 | 100% | must finish on 2008-06-30 17:00 | Qpan [20%] | 4h | 4h |
| 31 | 1.1.2.5.3 | Review and Schedule Recommendations | 1h | 2008-07-02 08:00 A | 2008-07-02 09:00 A |  | 100% | must start on 2008-07-02 08:00 | Dpalmer; Lholeman | 2h | 2h |
| 32 | 1.1.2.6 | **(6867-M) Query and Retrieve NCIA Archive Data from caGRID requests** | 15.62d | 2008-06-03 08:00 A | 2008-06-30 09:00 A |  | 100% |  |  | 8h | 8h |
| 33 | 1.1.2.6.1 | **Develop GDT As Is and To Be Architecture** | 15.62d | 2008-06-03 08:00 A | 2008-06-30 09:00 A |  | 100% |  |  | 8h | 8h |
| 34 | 1.1.2.6.1.1 | Develop EA Diagram that show the NCIA GDT Components and Flow | 2.5d | 2008-06-03 08:00 A | 2008-06-05 12:00 A |  | 100% | must start on 2008-06-03 08:00 | Ekascic [25%]; Dpalmer [5%] | 6h | 6h |
| 35 | 1.1.2.6.1.2 | Review Architecture Diagram | 1h | 2008-06-30 08:00 A | 2008-06-30 09:00 A | 34FS+7d | 100% | must start on 2008-06-30 08:00 | Ekascic; Dpalmer | 2h | 2h |
| 36 | 1.1.2.7 | **(7189) NCIA GT Security for Public and Private Collection Access and Retrieval** | 15d | 2008-06-04 14:00 A | 2008-07-01 09:00 A | 33FS-8d | 100% |  |  | 39.6h | 39.6h |
| 37 | 1.1.2.7.1 | Develop GRID Security Work Paper | 15d | 2008-06-04 14:00 A | 2008-07-01 09:00 A |  | 100% |  | Lholeman [35%]; CPiepenbring; Ekascic [5%]; NCI Grid Team | 39.6h | 39.6h |
| 38 | 1.1.2.8 | **(12333-M) Add WEB Browser Versions Supported Information** | 13.11d | 2008-06-04 14:07 A | 2008-06-27 10:00 A |  | 100% |  |  | 21.5h | 21.5h |
| 39 | 1.1.2.8.1 | Deliver UI Prototype | 8h | 2008-06-04 14:07 A | 2008-06-05 14:07 A |  | 100% |  | Qpan [85%] | 6.8h | 6.8h |
| 40 | 1.1.2.8.2 | Document | 2h | 2008-06-05 14:07 A | 2008-06-05 16:07 A | 39 | 100% |  | Qpan [85%] | 1.7h | 1.7h |
| 41 | 1.1.2.8.3 | Peer Review | 2h | 2008-06-05 16:07 A | 2008-06-06 09:07 A | 40 | 100% |  | Qpan; Jzeng | 4h | 4h |
| 42 | 1.1.2.8.4 | Review Prototype | 1h | 2008-06-27 08:00 A | 2008-06-27 09:00 A | 41 | 100% | must start on 2008-06-27 08:00 | Qpan; Lholeman; Dpalmer; Jzeng | 3h | 3h |
| 43 | 1.1.2.8.5 | Review and Schedule Recommendations | 2h | 2008-06-27 08:00 A | 2008-06-27 10:00 A |  | 100% | must start on 2008-06-27 08:00 | Dpalmer; Lholeman; Jfreymann | 6h | 6h |
| 44 | 1.1.2.9 | **(7208-M) Dynamically Scroll thru JPE Images in Movie type format** | 29.74d? | 2008-06-02 08:00 A | 2008-07-18 09:57 A |  | 100% |  |  | 75.4h | 75.4h |
| 45 | 1.1.2.9.1 | **Analysis** | 12.83d | 2008-06-02 08:00 A | 2008-06-19 15:37 A |  | 100% |  |  | 24.4h | 24.4h |
| 46 | 1.1.2.9.1.1 | **Set Up Candidate Software for Customer** | 5.25d | 2008-06-02 08:00 A | 2008-06-10 10:00 A |  | 100% |  |  | 16.4h | 16.4h |
| 47 | 1.1.2.9.1.1.1 | Set up Candidate Software for Testing | 2d | 2008-06-02 08:00 A | 2008-06-03 17:00 A |  | 100% |  | Ekascic [40%] | 6.4h | 6.4h |
| 48 | 1.1.2.9.1.1.2 | Customer Conducts Evaluation Testing and Document Results | 3d | 2008-06-04 08:00 A | 2008-06-06 17:00 A | 47 | 100% |  | Jfreymann [25%] | 6h | 6h |
| 49 | 1.1.2.9.1.1.3 | Determine if software should be used | 2h | 2008-06-10 08:00 A | 2008-06-10 10:00 A | 48 | 100% |  | Jfreymann; Ekascic | 4h | 4h |
| 50 | 1.1.2.9.1.2 | Develop Design to Integrate Software | 56.28h | 2008-06-10 10:00 A | 2008-06-19 15:37 A | 46 | 100% | finish no earlier than 2008-06-18 17:00 | Ekascic [15%] | 8h | 8h |
| 51 | 1.1.2.9.2 | **Design** | 11.74d? | 2008-07-01 13:00 A | 2008-07-18 09:57 A | 69 | 100% |  |  | 51h | 51h |
| 52 | 1.1.2.9.2.1 | State chart diagram for slideshow | 17.78h | 2008-07-01 13:00 A | 2008-07-03 14:46 A |  | 100% |  | Ekascic [45%] | 8h | 8h |
| 53 | 1.1.2.9.2.2 | Sequence diagram for demonstrating client and server side interaction | 2.22d? | 2008-07-03 14:46 A | 2008-07-08 16:33 A | 52 | 100% |  | Ekascic [45%] | 8h | 8h |
| 54 | 1.1.2.9.2.3 | Prefetch algorithm includes testing/measuring algorithm | 6.67d | 2008-07-08 16:33 A | 2008-07-17 13:53 A | 53 | 100% |  | Ekascic [45%] | 24h | 24h |
| 55 | 1.1.2.9.2.4 | Document Prefetch Algorithm and Review | 2.07h | 2008-07-17 13:53 A | 2008-07-17 15:57 A | 54 | 100% |  | Ekascic [45%]; Dpalmer | 3h | 3h |
| 56 | 1.1.2.9.2.5 | Peer review | 0.25h | 2008-07-17 15:57 A | 2008-07-17 16:12 A | 55 | 100% |  | Dpalmer; Jzeng; Qpan; Lholeman; Cblake; Ekascic; Sporanki; Jzhou | 2h | 2h |
| 57 | 1.1.2.9.2.6 | Provide User and On Line Documentation Updates | 3h | 2008-07-17 15:57 A | 2008-07-18 09:57 A | 55 | 100% |  | Ekascic; Jzeng | 6h | 6h |

Notes:
- 28: Develop analysis statement for resolving problem with LOE and identify the affected components.
- 30: Prepare finding and recommendations
- 32: Determine the method NCIA will use in determine appropriate access to NCIA public and private collections and if there are levels of access to NCIA collect such as media data verses images. / Deliver an analysis statement identifying how the credentials supplied from the GRID will be handled and implemented by the NCIA.
- 34: Carl Blake update the EA Architecture for the GDT 1.2. Need to verify this architecture diagram is corect with the 3.6 architecture and the To Be 1.2 architecture
- 36: Determine the method NCIA will use in determine appropriate access to NCIA public and private collections and it there are levels of access to NCIA collect such as media data verses images. / Deliver an analysis statement identifying how the credentials supplied from the GRID will be handled and implemented by the NCIA. / Investigate how caGrid Security works / Investigate current NCIA role base security implementation / Integration Design: / Documentation
- 37: Define the requirements and scenarios for security
- 38: Deliver Prototype that will demonstrate the flow and text
- 39: Deliver Prototype that will demonstrate the flow and text / ·UI prototype: 8 hrs / ·Document: 1 hr / ·Peer Review: 2 hrs
- 42: Prototype that will demonstrate the flow and text
- 45: * .; ; ·;; ·Searching for proper software/tool: 16 / 1Prototype with selected software: 32 / 2Demonstration to customer: 2 / 3Documentation: 2
- 46: The CIP Customer has supplied a cnadidate software that may meet the stated requirments. This candidate software will be installed and provide to the customer for testing and evaluation. / A determination will be made if this or other candidate software wiil be used.
- 47: Idenify the appropriate tier to install / Determine how ti intergrate this into NCIA thumbnail for viewing / Open to customer for testing. / Java: / Heres the article / http://www.ajronline.org/cgi/reprint/184/2/691?ijkey=b0d6fe1e13e5fed47d034b829abb9ae086d54030/ Heres the example and code: / https://inforad.bidmc.harvard.edu/pub/Cine.htm/ Javascript / Heres the article / http://www.ajronline.org/cgi/content/full/190/3/W218/ Heres the example and code / ydr.med.yale.edu/CineExample.
- 48: Documented results of testing and how it meets with stated requirements as defined in the Use Case
- 49: Is this candidate software compatible with the NCIA system environment? / It has been determined the software meets all customer requirments
- 50: Deliver a documented integration plan, requirements, LOE, and Resources. This will be used to define this task in the Construction phase
- 56: Code review / Review Static Analysis Reports / Review Class and Sequence Diagrams

| ID | WBS | Task | Duration | Start | Finish | Predecessors | Complete | Remaining | Total slack | Free slack | Constraint | Resources | Work | Actual work |
| --- | --- | --- | --- | --- | --- | --- | --- | --- | --- | --- | --- | --- | --- | --- |
| 58 | 1.1.2.10 | **HOLD (14963-M) Investigate Error Messages in NCIA Log and OOM Errors** | 11d | 2008-06-24 08:00 A | 2008-07-11 17:00 |  | 9% | 10d | 4d |  |  |  | 16h | 8h |
| 59 | 1.1.2.10.1 | Investigate Errors and Determine Corrective Actions | 8h | 2008-06-24 08:00 A | 2008-06-26 17:00 A |  | 100% |  |  |  | must start on 2008-06-24 08:00 | Ekascic [50%]; Jzhou [50%] | 8h | 8h |
| 60 | 1.1.2.10.2 | Upgrade JDK is 1.5.0_07 in Production | 5d | 2008-06-26 17:00 | 2008-07-03 17:00 | 59 |  |  | 4d | 0d |  | Jzeng [10%]; Systems Group | 4h |  |
| 61 | 1.1.2.10.3 | Implement OptimizeIt for Memory Monitor | 5d | 2008-07-03 17:00 | 2008-07-11 17:00 | 60 |  |  | 4d |  |  | Jzeng [10%]; Systems Group | 4h |  |
| 62 | 1.1.3 | **Implement** | 42.12d? | 2008-05-08 08:00 A | 2008-07-14 14:00 A |  | 100% |  |  |  |  |  | 154.2h | 154.2h |
| 63 | 1.1.3.1 | (14000-H) Clean Up Quarantine Files | 6d | 2008-05-08 08:00 A | 2008-05-15 17:00 A |  | 100% |  |  |  | must start on 2008-05-08 08:00 | Qpan [50%] | 24h | 24h |
| 64 | 1.1.3.2 | (13226) Support caBIG Annual Meeting | 6.67d | 2008-06-02 08:00 A | 2008-06-11 14:20 A |  | 100% |  |  |  | must start on 2008-06-02 08:00 | Ekascic [15%] | 8h | 8h |
| 65 | 1.1.3.3 | **(14569-M) Clean Up Quarantine Files** | 15d | 2008-06-04 08:00 A | 2008-06-30 12:00 A |  | 100% |  |  |  |  |  | 3h | 3h |
| 66 | 1.1.3.3.1 | Clean Up Quarantine Files | 8h | 2008-06-04 08:00 A | 2008-06-04 17:00 A |  | 100% |  |  |  | must start on 2008-06-04 08:00 | Qpan [25%] | 2h | 2h |
| 67 | 1.1.3.3.2 | Investigate XML file and Update SOP | 4h | 2008-06-30 08:00 A | 2008-06-30 12:00 A | 66FS+3d | 100% |  |  |  | must start on 2008-06-30 08:00 | Qpan [25%] | 1h | 1h |
| 68 | 1.1.3.4 | (14643) Support caIntegrator developer to use NCIA grid service | 5d | 2008-06-04 08:00 A | 2008-06-11 17:00 A |  | 100% |  |  |  | must start on 2008-06-04 08:00 | Jzeng [10%] | 4h | 4h |
| 69 | 1.1.3.5 | **(14184) Develop SOP for NCIA Database and Image Deletion Process** | 5d | 2008-06-20 08:00 A | 2008-07-01 12:00 A |  | 100% |  |  |  | start no earlier than 2008-06-20 08:00 |  | 50h | 50h |
| 70 | 1.1.3.5.1 | **(14726-H) Delete Images for WashU-IRL Submission** | 4.29d | 2008-06-20 08:00 A | 2008-06-30 15:20 A |  | 100% |  |  |  |  |  | 16h | 16h |
| 71 | 1.1.3.5.1.1 | Develop the SOP to delete Collection and Delete the Collection | 13.33h | 2008-06-20 08:00 A | 2008-06-26 09:20 A |  | 100% |  |  |  |  | Ekascic [45%] | 6h | 6h |
| 72 | 1.1.3.5.1.2 | Review SOP | 1h | 2008-06-26 09:20 A | 2008-06-26 10:20 A | 71 | 100% |  |  |  |  | Ekascic; Jzeng; Dpalmer | 1h | 1h |
| 73 | 1.1.3.5.1.3 | Test and Verify the collection was deleted the database and images as defined in the Action request form. | 20h | 2008-06-26 10:20 A | 2008-06-30 15:20 A | 72 | 100% |  |  |  |  | Ekascic [45%] | 9h | 9h |
| 74 | 1.1.3.5.2 | **Delete Patients** | 5d | 2008-06-20 08:00 A | 2008-07-01 12:00 A |  | 100% |  |  |  |  |  | 34h | 34h |
| 75 | 1.1.3.5.2.1 | **(14916-H) Delete Patient for Head-Neck Cetuximab collection** | 4.29d | 2008-06-20 08:00 A | 2008-06-30 15:20 A |  | 100% |  |  |  |  |  | 16h | 16h |
| 76 | 1.1.3.5.2.1.1 | Develop the SOP to delete Collection and Delete the Collection | 13.33h | 2008-06-20 08:00 A | 2008-06-26 09:20 A |  | 100% |  |  |  |  | Ekascic [45%] | 6h | 6h |
| 77 | 1.1.3.5.2.1.2 | Review SOP | 1h | 2008-06-26 09:20 A | 2008-06-26 10:20 A | 76 | 100% |  |  |  |  | Ekascic; Jzeng; Dpalmer | 1h | 1h |
| 78 | 1.1.3.5.2.1.3 | Test and Verify the collection was deleted the database and images as defined in the Action request form | 20h | 2008-06-26 10:20 A | 2008-06-30 15:20 A | 77 | 100% |  |  |  |  | Ekascic [45%] | 9h | 9h |
| 79 | 1.1.3.5.2.2 | **(14482) Clean up the CT colonography data for Patient** | 5d | 2008-06-20 08:00 A | 2008-07-01 12:00 A |  | 100% |  |  |  |  |  | 18h | 18h |
| 80 | 1.1.3.5.2.2.1 | Delete Patient per NCIA Activity Tracker | 2d | 2008-06-20 08:00 A | 2008-06-26 12:00 A |  | 100% |  |  |  |  | Ekascic [45%] | 7.2h | 7.2h |
| 81 | 1.1.3.5.2.2.2 | Test and Verify the collection was deleted the database and images as defined in the Action request form. | 24h | 2008-06-26 13:00 A | 2008-07-01 12:00 A | 80 | 100% |  |  |  |  | Ekascic [45%] | 10.8h | 10.8h |

Notes:
- 60: JDK is 1.5.0_06 does not provide the level of error trapping needed to obtain the information that would enable proper analysis of the situation that casue the failure. / Need to upgrade JDK is 1.5.0_06 to 07.
- 69: Document the step by step procedure for deleting Database and File System Objects from the NCIA Production Database. The steps should be sufficent that another developer could follow. / This will include testing and verification step.
- 70: Using this as a pilot, develop a step by step SOP to delete a Collection. / Delete the collection / Test and Verify the collection was deleted the database and images as defined in the Action request form.
- 71: deleted the database and images as defined in the Action request form.
- 75: Using this as a pilot, develop a step by step SOP to delete a Patient. / Delete the Patient / Test and Verify the patient was correctly delete from the collection as defined in the Action request form.
- 76: deleted the database and images as defined in the Action request form.
- 80: Using the SOP develop for Deleting Patient

| ID | WBS | Task | Duration | Start | Finish | Predecessors | Complete | Baseline start | Baseline finish | Baseline duration | Constraint | Resources | Work | Actual work |
| --- | --- | --- | --- | --- | --- | --- | --- | --- | --- | --- | --- | --- | --- | --- |
| 82 | 1.1.3.6 | **(14604/067-H) Update Legal rules of the road Text** | 2.93d | 2008-06-17 08:00 A | 2008-06-19 16:25 A | 6 | 100% |  |  |  |  |  | 10h | 10h |
| 83 | 1.1.3.6.1 | Modify Text | 11.43h | 2008-06-17 08:00 A | 2008-06-18 11:25 A |  | 100% |  |  |  |  | Ekascic [35%] | 4h | 4h |
| 84 | 1.1.3.6.2 | Internal Validation and Verification | 1h | 2008-06-19 11:25 A | 2008-06-19 13:25 A | 83FS+1d | 100% |  |  |  |  | Dpalmer | 1h | 1h |
| 85 | 1.1.3.6.3 | Fix Internal Validation and Verification Findings | 2h | 2008-06-19 13:25 A | 2008-06-19 15:25 A | 84 | 100% |  |  |  |  | Lholeman; Ekascic | 4h | 4h |
| 86 | 1.1.3.6.4 | Internal Validation and Verification | 1h | 2008-06-19 15:25 A | 2008-06-19 16:25 A | 85 | 100% |  |  |  |  | Dpalmer | 1h | 1h |
| 87 | 1.1.3.7 | **(8668-H) No error message or not accurate message is displayed when user enters invalid date to verify submission.** | 10.88d | 2008-06-10 16:00 A | 2008-06-30 10:00 A |  | 100% |  |  |  |  |  | 2h | 2h |
| 88 | 1.1.3.7.1 | Check in Code | 1h | 2008-06-10 16:00 A | 2008-06-10 17:00 A |  | 100% |  |  |  | must finish on 2008-06-10 17:00 | Sporanki | 1h | 1h |
| 89 | 1.1.3.7.2 | System Test | 2h | 2008-06-30 08:00 A | 2008-06-30 10:00 A | 88 | 100% |  |  |  | must start on 2008-06-30 08:00 | Sporanki [50%] | 1h | 1h |
| 90 | 1.1.3.8 | Internal Validation and Verification (14604/067, 8668, 12333) | 0.25d? | 2008-06-30 10:00 A | 2008-06-30 12:00 A | 89 | 100% |  |  |  |  | Lholeman | 2h | 2h |
| 91 | 1.1.3.9 | **(12333-M) Add WEB Browser Versions Supported Information** | 3.5d | 2008-06-27 10:00 A | 2008-07-02 15:00 A | 38 | 100% |  |  |  |  |  | 16.2h | 16.2h |
| 92 | 1.1.3.9.1 | Modify per Use Case | 12h | 2008-07-01 10:00 A | 2008-07-02 15:00 A | 38FS+2d | 100% |  |  |  |  | Qpan [85%] | 10.2h | 10.2h |
| 93 | 1.1.3.9.2 | Peer Review | 2.67h | 2008-06-27 10:00 A | 2008-06-30 09:20 A |  | 100% |  |  |  |  | Qpan; Jzeng; Lholeman | 4h | 4h |
| 94 | 1.1.3.9.3 | Internal Validation and Verification | 2h | 2008-07-02 08:00 A | 2008-07-02 10:00 A |  | 100% |  |  |  | must start on 2008-07-02 08:00 | Lholeman | 2h | 2h |
| 95 | 1.1.3.10 | **Build / Deploy to QA (14604/067, 8668, 12333)** | 0.38d | 2008-07-08 10:00 A | 2008-07-08 14:00 A | 94FS+3d | 100% |  |  |  |  |  | 3h | 3h |
| 96 | 1.1.3.10.1 | Build/Deploy Tag and Tag Code | 2h | 2008-07-08 10:00 A | 2008-07-08 12:00 A |  | 100% |  |  |  |  | Jzeng | 2h | 2h |
| 97 | 1.1.3.10.2 | Build/Deploy Request to QA | 1h | 2008-07-08 13:00 A | 2008-07-08 14:00 A | 96 | 100% |  |  |  |  | Jzeng | 1h | 1h |
| 98 | 1.1.3.11 | **QA Test (14604/067, 8668, 12333)** | 4d | 2008-07-08 14:00 A | 2008-07-14 14:00 A | 95 | 100% |  |  |  |  |  | 32h | 32h |
| 99 | 1.1.3.11.1 | QA Test Script | 2d | 2008-07-08 14:00 A | 2008-07-10 14:00 A |  | 100% |  |  |  |  | Quality Assurance | 16h | 16h |
| 100 | 1.1.3.11.2 | QA Testing and Findings | 2d | 2008-07-10 14:00 A | 2008-07-14 14:00 A | 99 | 100% |  |  |  |  | Quality Assurance | 16h | 16h |
| 101 | 1.3.1.7 | **Configuration and Change Management** | 0.12d | 2008-05-30 08:00 A | 2008-05-30 09:00 A |  | 100% | 2008-03-19 10:00 | 2008-03-24 10:00 | 3d |  |  | 10h | 10h |
| 102 | 1.1.4.1 | **(10583) Expand Use of Existing Features in the Build/Deployment Tools** | 0.12d | 2008-05-30 08:00 A | 2008-05-30 09:00 A |  | 100% |  |  |  |  |  | 10h | 10h |
| 103 | 1.1.4.1.1 | Staff Training | 1h | 2008-05-30 08:00 A | 2008-05-30 09:00 A |  | 100% |  |  |  | must start on 2008-05-30 08:00 | Dpalmer; Jzeng; Qpan; Cblake; Lholeman; Lgurses; Ekascic; Sporanki; Pduvall; Jzhou | 10h | 10h |
| 104 | 1.2 | **Construction Phase** | 5.24d | 2008-07-18 08:00 A | 2008-07-25 09:57 A | 2 | 100% |  |  |  |  |  | 63.7h | 63.7h |
| 105 | 1.2.1 | (12441) Update Traceability Matrix per BioPharm Recommendation | 4d | 2008-07-18 08:00 A | 2008-07-23 17:00 A |  | 100% |  |  |  | must start on 2008-07-18 08:00 | Lholeman [15%] | 4.8h | 4.8h |

Notes:
- 82: 14067 and 14604 Add Sentence per 21 CFR Part 11 compliance & Update Legal rules of the road Text
- 83: Update text as defined in the Use Case
- 84: Test and Document Findings / Failed Internal Validation and Verification
- 85: Correct Use Case per FR / Correct and Update WEB Page per Use Case
- 86: Test and Document Findings
- 89: Develop Unit Testing, Document steps to verify the function performs to User Case, and Perform test. / The documented steps and Unit Test items will be used in Internal V&V
- 90: Verify function to Use Case and Testing steps provided by Developer / Verify QA Test Scripts
- 91: Deliver Prototype that will demonstrate the flow and text
- 92: Develop function per Use Case / Sequence and Class Diagrams
- 93: Code review / Review Static Analysis Reports / Review Class and Sequence Diagrams
- 94: Verify function to Use Case and Testing steps provided by Developer / Verify QA Test Scripts
- 95: 14604, 8668, 12333
- 103: Training on tools and reports
- 105: Recommend traceability matrix template from BioPharm

| ID | WBS | Task | Duration | Start | Finish | Predecessors | Complete | Remaining | Baseline start | Baseline finish | Baseline duration | Total slack | Free slack | Constraint | Resources | Work | Actual work |
| --- | --- | --- | --- | --- | --- | --- | --- | --- | --- | --- | --- | --- | --- | --- | --- | --- | --- |
| 106 | 1.2.2 | **Development** | 5d | 2008-07-18 09:57 A | 2008-07-25 09:57 A |  | 100% |  |  |  |  |  |  |  |  | 56.4h | 56.4h |
| 107 | 1.2.2.1 | **(7208-M) Dynamically Scroll thru JPE Images in Movie type format** | 2d | 2008-07-18 09:57 A | 2008-07-22 09:57 A |  | 100% |  |  |  |  |  |  |  | Ekascic [45%] | 14.4h | 14.4h |
| 108 | 1.2.2.1.1 | Develop and Test Slider | 16h | 2008-07-18 09:57 A | 2008-07-22 09:57 A |  | 100% |  |  |  |  |  |  |  | Ekascic [45%] | 7.2h | 7.2h |
| 109 | 1.2.2.2 | **Build / Deploy to QA** | 0.38d | 2008-07-22 09:57 A | 2008-07-22 13:57 A | 108 | 100% |  |  |  |  |  |  |  |  | 3h | 3h |
| 110 | 1.2.2.2.1 | Build/Deploy Tag and Tag Code | 2h | 2008-07-22 09:57 A | 2008-07-22 11:57 A |  | 100% |  |  |  |  |  |  |  | Jzeng | 2h | 2h |
| 111 | 1.2.2.2.2 | Build/Deploy Request to QA | 1h | 2008-07-22 11:57 A | 2008-07-22 13:57 A | 110 | 100% |  |  |  |  |  |  |  | Jzeng | 1h | 1h |
| 112 | 1.2.2.3 | **QA Test** | 0.38d | 2008-07-22 13:57 A | 2008-07-22 16:57 A |  | 100% |  |  |  |  |  |  |  |  | 3h | 3h |
| 113 | 1.2.2.3.1 | QA Test Script | 2h | 2008-07-22 13:57 A | 2008-07-22 15:57 A | 109 | 100% |  |  |  |  |  |  |  | Quality Assurance | 2h | 2h |
| 114 | 1.2.2.3.2 | QA Testing and Findings | 1h | 2008-07-22 15:57 A | 2008-07-22 16:57 A | 113 | 100% |  |  |  |  |  |  |  | Quality Assurance | 1h | 1h |
| 115 | 1.2.2.4 | Develop UAT Test Plan | 2h | 2008-07-23 08:00 A | 2008-07-23 10:00 A |  | 100% |  |  |  |  |  |  | must start on 2008-07-23 08:00 | Cblake | 2h | 2h |
| 116 | 1.2.2.5 | Update On Line Help | 5d | 2008-07-18 09:57 A | 2008-07-25 09:57 A |  | 100% |  | 2008-04-04 13:35 | 2008-04-11 13:35 | 5d |  |  |  | Tech Writer [80%]; Jzeng [5%] | 34h | 34h |
| 117 | 1.2.3 | **Test** | 2.82d | 2008-07-22 09:57 A | 2008-07-25 08:30 A |  | 100% |  |  |  |  |  |  |  |  | 2.5h | 2.5h |
| 118 | 1.2.3.1 | Internal Validation and Verification (7208) | 2h | 2008-07-22 09:57 A | 2008-07-22 11:57 A | 107 | 100% |  |  |  |  |  |  |  | Lholeman | 2h | 2h |
| 119 | 1.2.3.2 | Coordination Meeting (QA, App Support, System, Customer, Dev) | 0.5h | 2008-07-25 08:00 A | 2008-07-25 08:30 A |  | 100% |  |  |  |  |  |  | must start on 2008-07-25 08:00 | Dpalmer | 0.5h | 0.5h |
| 120 | 1.5 | **Transition Phase** | 4.76d | 2008-07-25 09:57 A | 2008-07-31 17:00 |  | 25% | 3.57d | 2008-04-14 13:35 | 2008-04-21 15:35 | 5.25d | 0d |  |  |  | 41.45h | 11.45h |
| 121 | 1.3.1 | Build / Deply (7208) to QA Tier using Automated Build | 1.5h | 2008-07-25 09:57 A | 2008-07-25 11:27 A | 104 | 100% |  |  |  |  |  |  |  | Cblake; Lholeman | 3h | 3h |
| 122 | 1.3.2 | **QA Testing** | 0.5d | 2008-07-25 11:27 A | 2008-07-25 16:27 A | 121 | 100% |  | 2008-04-14 14:35 | 2008-04-16 14:35 | 2d |  |  |  |  | 3.55h | 3.55h |
| 123 | 1.3.2.1 | Conduct QA Testing | 3h | 2008-07-25 11:27 A | 2008-07-25 15:27 A |  | 100% |  | 2008-04-14 14:35 | 2008-04-16 14:35 | 2d |  |  |  | Quality Assurance [85%] | 2.55h | 2.55h |
| 124 | 1.3.2.2 | Resolve QA Findings | 1h | 2008-07-25 15:27 A | 2008-07-25 16:27 A | 123 | 100% |  | 2008-04-14 14:35 | 2008-04-16 14:35 | 2d |  |  |  | Ekascic | 1h | 1h |
| 125 | 1.3.3 | Deploy to Stage and Verify (Using New Automated Build) | 1d | 2008-07-28 08:00 A | 2008-07-28 17:00 A | 122 | 100% |  | 2008-04-16 14:35 | 2008-04-17 09:35 | 0.5d |  |  | must start on 2008-07-28 08:00 | SYS; Lholeman [15%] | 1.2h | 1.2h |
| 126 | 1.3.4 | Update Traceability Matrix | 4h | 2008-07-29 08:00 | 2008-07-29 12:00 | 125 |  |  |  |  |  | 0d |  |  | Lholeman | 4h |  |
| 127 | 1.3.5 | **UAT** | 0.25d | 2008-07-29 13:00 A | 2008-07-29 15:00 | 126 | 63% | 0.09d | 2008-04-17 10:35 | 2008-04-17 16:35 | 0.62d | 1.12d |  |  |  | 5h | 3.7h |
| 128 | 1.3.5.1 | Conduct UAT | 1h | 2008-07-29 13:00 A | 2008-07-29 14:00 | 125, 115 | 90% | 0.1h | 2008-04-17 10:35 | 2008-04-17 15:35 | 4h | 1.25d | 0d |  | Jfreymann; Cjaffe; Lholeman | 3h | 2.7h |
| 129 | 1.3.5.2 | Resolve UAT Findings | 2h | 2008-07-29 13:00 A | 2008-07-29 15:00 | 128FS-1d | 50% | 1h | 2008-04-17 10:35 | 2008-04-17 16:35 | 5h | 0.25d |  |  | Ekascic | 2h | 1h |

Notes:
- 109: 14604, 8668, 12333
- 116: Provide Technical Writer with modifications to system / Develop On Line and User Updates
- 118: Verify function to Use Case and Testing steps provided by Developer / Verify on Line Help and User Guides documentaiton supports modifications / Verify QA Test Scripts
- 120: Construction Completed. / Release auditor begins release deployment from the Development through Production.
- 123: This should be regression Testing
- 128: 2115 E. Jefferson/5th Floor/Conference Room 5012 / 3 - 5 / QA Test Script / UI Testing / Functional testing not UI / Rolls

| ID | WBS | Task | Duration | Start | Finish | Predecessors | Baseline start | Baseline finish | Baseline duration | Total slack | Free slack | Constraint | Resources | Work |
| --- | --- | --- | --- | --- | --- | --- | --- | --- | --- | --- | --- | --- | --- | --- |
| 130 | 1.3.6 | **Production** | 2d | 2008-07-30 08:00 | 2008-07-31 17:00 | 129 | 2008-04-18 09:35 | 2008-04-21 15:35 | 1.62d | 0d |  |  |  | 24.7h |
| 131 | 1.3.6.1 | Deploy to Production and Verify (Using New Automated Build) | 2d | 2008-07-30 08:00 | 2008-07-31 17:00 |  | 2008-04-16 14:35 | 2008-04-17 09:35 | 0.5d | 0d |  | must start on 2008-07-30 08:00 | SYS; Lholeman [20%] | 3.2h |
| 132 | 1.3.6.2 | Send out Site Down E-Mail Notification to User Community | 2d | 2008-07-30 08:00 | 2008-07-31 17:00 | 131 |  |  |  | -2d | 0d | must start on 2008-07-30 08:00 | Application Support | 16h |
| 133 | 1.3.6.3 | Post Maintenance Page and Deploy to Production (Using New Automated Build) | 4h | 2008-07-31 08:00 | 2008-07-31 12:00 | 131 | 2008-04-18 09:35 | 2008-04-21 09:35 | 1d | -1d | 0d | must start on 2008-07-31 08:00 | SYS |  |
| 134 | 1.3.6.4 | Verify Production | 3h | 2008-07-31 13:00 | 2008-07-31 16:00 | 133 | 2008-04-21 09:35 | 2008-04-21 14:35 | 4h | -0.88d | 0d |  | Lholeman | 3h |
| 135 | 1.3.6.5 | Remove Maintenance Page | 2h | 2008-07-31 08:00 | 2008-07-31 10:00 | 134 | 2008-04-21 14:35 | 2008-04-21 15:35 | 1h | -0.88d | 0d | must start on 2008-07-31 08:00 | Systems Group; Lholeman | 2h |
| 136 | 1.3.6.6 | Send out Site Available E-Mail Notification to User Community | 0.5h | 2008-07-31 16:00 | 2008-07-31 16:30 | 134 |  |  |  | 0.06d |  |  | Application Support; Lholeman | 0.5h |

Notes:
- 135: If system verified remove the Maintenance Page
