# reengineeringPlanfor4.0

Schedule from MS Project, 2008-05-01 to 2008-09-26, A marks actual dates.
NCI

## Calendars

- Standard: Mon-Fri 08:00-12:00, 13:00-17:00; Sat-Sun off. Exceptions (off unless hours are given): 2008-06-23 to 2008-06-25, 2008-07-04.

## Resources

| Resource |
| --- |
| Carl |
| Dave |
| Team |
| Jennifer |
| Jim |
| Surendra |
| Qinyan |
| eric |
| QA |
| Thai |
| Systems |
| Anand |
| Larry |
| system |

## Schedule

| ID | WBS | Task | Type | Duration | Start | Finish | Complete | Constraint | Resources |
| --- | --- | --- | --- | --- | --- | --- | --- | --- | --- |
| 1 | 1 | **Inception** |  | 25.5d | 2008-05-01 A | 2008-06-05 A | 100% |  |  |
| 2 | 1.1 | **Iteration 1** |  | 25.5d | 2008-05-01 A | 2008-06-05 A | 100% |  |  |
| 3 | 1.1.1 | **Requirements** |  | 0d | 2008-06-04 A | 2008-06-04 A | 100% |  |  |
| 4 | 1.1.1.1 | Complete reengineering plan document | milestone | 0h | 2008-06-04 A | 2008-06-04 A | 100% | start no earlier than 2008-06-04 | Jennifer |
| 5 | 1.1.2 | **Analysis and Design** |  | 25.5d | 2008-05-01 A | 2008-06-05 A | 100% |  |  |
| 6 | 1.1.2.1 | Analyze NCIA use cases | milestone | 0d | 2008-05-01 A | 2008-05-01 A | 100% |  |  |
| 7 | 1.1.2.2 | Analyze current performance and establish benchmarks for Oracle and MySQL | milestone | 0h | 2008-05-01 A | 2008-05-01 A | 100% |  |  |
| 8 | 1.1.2.3 | Examine existing entity relationships, constraints, and queries | milestone | 0h | 2008-05-01 A | 2008-05-01 A | 100% |  |  |
| 9 | 1.1.2.4 | Determine code branch and merge points | milestone | 0h | 2008-06-05 A | 2008-06-05 A | 100% |  | Jennifer |
| 10 | 1.1.3 | **Implementation** |  | 0d | 2008-05-01 A | 2008-05-01 A | 100% |  |  |
| 11 | 1.1.3.1 | Import the existing DB schema into EA | milestone | 0h | 2008-05-01 A | 2008-05-01 A | 100% |  |  |
| 12 | 1.1.4 | **Test** |  | 0d | 2008-05-01 A | 2008-05-01 A | 100% |  |  |
| 13 | 1.1.4.1 | Investigate tools that may be beneficial in verifying DB schema (DBUnit) | milestone | 0h | 2008-05-01 A | 2008-05-01 A | 100% |  |  |
| 14 | 1.1.5 | **Deployment** |  | 0d | 2008-05-01 A | 2008-05-01 A | 100% |  |  |
| 15 | 1.1.5.1 | Determine which DB conversion scripts are required | milestone | 0h | 2008-05-01 A | 2008-05-01 A | 100% |  |  |
| 16 | 1.1.6 | **Configuration & Change Management** |  | 0d | 2008-05-01 A | 2008-05-01 A | 100% |  |  |
| 17 | 1.1.6.1 | Determine supported version of MySQL | milestone | 0h | 2008-05-01 A | 2008-05-01 A | 100% |  |  |
| 18 | 1.1.7 | **Project Management** |  | 9d | 2008-05-23 A | 2008-06-05 A | 100% |  |  |
| 19 | 1.1.7.1 | Complete Reengineering Scope | milestone | 0h | 2008-05-23 A | 2008-05-23 A | 100% | start no earlier than 2008-05-23 | Carl |
| 20 | 1.1.7.2 | Complete Reengineering Framework | milestone | 0h | 2008-05-30 A | 2008-05-30 A | 100% | start no earlier than 2008-05-30 | Carl |
| 21 | 1.1.7.3 | Complete reengineering MS Project plan | milestone | 0h | 2008-06-04 A | 2008-06-04 A | 100% | start no earlier than 2008-06-04 | Carl; Jennifer |
| 22 | 1.1.7.4 | Complete review of propsed reengineering MS Project plan with Team | milestone | 0h | 2008-06-04 A | 2008-06-04 A | 100% | start no earlier than 2008-06-04 | Team |
| 23 | 1.1.7.5 | Inception 1 Iterative Review with customer | milestone | 0h | 2008-06-05 A | 2008-06-05 A | 100% | start no earlier than 2008-06-05 | Team |
| 24 | 1.1.8 | **Environment** |  | 0d | 2008-05-01 A | 2008-05-01 A | 100% |  |  |
| 25 | 1.1.8.1 | Confirm MySQL 5.0.27 in Tech Stack and installed on Dev, QA | milestone | 0h | 2008-05-01 A | 2008-05-01 A | 100% |  | Jennifer |

| ID | WBS | Task | Duration | Start | Finish | Predecessors | Complete | Remaining | Total slack | Free slack | Constraint | Resources | Work | Actual work |
| --- | --- | --- | --- | --- | --- | --- | --- | --- | --- | --- | --- | --- | --- | --- |
| 26 | 2 | **Elaboration** | 9.63d? | 2008-06-05 A | 2008-06-19 | 1 | 92% | 0.78d? | 40.06d | 0d |  |  | 103h | 79h |
| 27 | 2.1 | **Iteration 1** | 9.63d? | 2008-06-05 A | 2008-06-19 |  | 92% | 0.78d? | 40.06d |  |  |  | 103h | 79h |
| 28 | 2.1.1 | **Analysis and Design** | 5.83d? | 2008-06-09 A | 2008-06-17 A |  | 100% |  |  |  |  |  | 48h | 48h |
| 29 | 2.1.1.1 | **DB Design, identifying the possible data type and other changes** | 5d? | 2008-06-09 A | 2008-06-16 A |  | 100% |  |  |  |  |  | 40h | 40h |
| 30 | 2.1.1.1.1 | Create initial MySQL database schema including DDL , PK, table relationships | 33.33h | 2008-06-09 A | 2008-06-13 A | 45 | 100% |  |  |  | start no earlier than 2008-06-06 | Jim [30%]; Surendra [45%] | 20h | 20h |
| 31 | 2.1.1.1.2 | Update documentation | 13.33h | 2008-06-09 A | 2008-06-11 A | 45 | 100% |  |  |  |  | Jim [30%]; Surendra [40%] | 8h | 8h |
| 32 | 2.1.1.1.3 | Model Refinements | 5d? | 2008-06-09 A | 2008-06-16 A | 45 | 100% |  |  |  |  | Jim [30%] | 12h | 12h |
| 33 | 2.1.1.2 | Investigate the area that need to be changed when views are dropped | 1.67d? | 2008-06-13 A | 2008-06-17 A | 30, 31 | 100% |  |  |  |  | Surendra [60%] | 8h | 8h |
| 34 | 2.1.2 | **Implementation** | 3.88d? | 2008-06-13 A | 2008-06-19 A |  | 100% |  |  |  |  |  | 12h | 12h |
| 35 | 2.1.2.1 | Branch code in SVN and switch to branch | 1.33h | 2008-06-13 A | 2008-06-13 A |  | 100% |  |  |  |  | Jim [75%] | 1h | 1h |
| 36 | 2.1.2.2 | Create separate Hudson CI Server project for new branch | 3h | 2008-06-13 A | 2008-06-13 A | 35 | 100% |  |  |  |  | eric | 3h | 3h |
| 37 | 2.1.2.3 | Create scripts for 3.6 schema in MySQL | 3.33d? | 2008-06-13 A | 2008-06-19 A | 36 | 100% |  |  |  |  | Jim [30%] | 8h | 8h |
| 38 | 2.1.3 | **Deployment** | 0.5d | 2008-06-17 A | 2008-06-18 A |  | 100% |  |  |  |  |  | 2h | 2h |
| 39 | 2.1.3.1 | Identify actors involved in database conversion process | 4h | 2008-06-17 A | 2008-06-18 A | 28 | 100% |  |  |  | start no earlier than 2008-06-06 | Carl [50%] | 2h | 2h |
| 40 | 2.1.4 | **Project Management** | 9.63d? | 2008-06-05 A | 2008-06-19 A |  | 100% |  |  |  |  |  | 9h | 9h |
| 41 | 2.1.4.1 | Iteration Review | 0.12d | 2008-06-19 A | 2008-06-19 A | 28, 34 | 100% |  |  |  |  | Team | 1h | 1h |
| 42 | 2.1.4.2 | Create Iteration plan for next iteration | 2d? | 2008-06-05 A | 2008-06-09 A |  | 100% |  |  |  |  | Carl [50%] | 8h | 8h |
| 43 | 2.1.5 | **Environment** | 2.26d? | 2008-06-05 A | 2008-06-09 |  | 36% | 1.45d? | 47.43d |  |  |  | 32h | 8h |
| 44 | 2.1.5.1 | Request VM's for Dev, QA, Stage | 1d? | 2008-06-05 A | 2008-06-06 A |  | 100% |  |  |  |  | Carl | 8h | 8h |
| 45 | 2.1.5.2 | Set up and configurate MySQL locally and on Dev | 14.12h | 2008-06-06 | 2008-06-09 |  |  |  | 41.15d |  | start no earlier than 2008-06-06 | Jim [85%]; Surendra [85%] | 24h |  |
| 46 | 3 | **Construction** | 67.08d? | 2008-06-19 A | 2008-09-26 | 26 | 60% | 27.02d? | 0d |  |  |  | 1390.8h | 825.9h |
| 47 | 3.1 | **Iteration 1 -- Create a working NCIA application based on 3.6 DB schema and 3.6 Application** | 8.47d? | 2008-06-19 A | 2008-07-07 A |  | 100% |  |  |  |  |  | 142h | 142h |
| 48 | 3.1.1 | **Analysis and Design** | 6.67d? | 2008-06-19 A | 2008-07-02 A |  | 100% |  |  |  |  |  | 80h | 80h |
| 49 | 3.1.1.1 | **Analyze the change for EA object model and data model** | 6.67d? | 2008-06-19 A | 2008-07-02 A |  | 100% |  |  |  |  |  | 48h | 48h |
| 50 | 3.1.1.1.1 | Redesign EA Object model | 6.67d? | 2008-06-19 A | 2008-07-02 A |  | 100% |  |  |  |  | Jennifer [30%] | 16h | 16h |
| 51 | 3.1.1.1.2 | Redesign EA Data model | 6.67d? | 2008-06-19 A | 2008-07-02 A |  | 100% |  |  |  |  | Jennifer [30%] | 16h | 16h |
| 52 | 3.1.1.1.3 | Investigate caAdapter | 6.67d? | 2008-06-19 A | 2008-07-02 A |  | 100% |  |  |  |  | Jennifer [30%] | 16h | 16h |
| 53 | 3.1.1.2 | Continure investigating/prototyping the area that need to be changed when views are dropped | 6.67d? | 2008-06-19 A | 2008-07-02 A |  | 100% |  |  |  |  | Surendra [60%] | 32h | 32h |

Notes:
- 30: Using EA

| ID | WBS | Task | Duration | Start | Finish | Predecessors | Complete | Remaining | Total slack | Constraint | Resources | Work | Actual work |
| --- | --- | --- | --- | --- | --- | --- | --- | --- | --- | --- | --- | --- | --- |
| 54 | 3.1.2 | **Implementation** | 6.47d? | 2008-06-19 A | 2008-07-02 A |  | 100% |  |  |  |  | 32h | 32h |
| 55 | 3.1.2.1 | **Setup NCIA working on MySQL** | 6.47d? | 2008-06-19 A | 2008-07-02 A |  | 100% |  |  |  |  | 32h | 32h |
| 56 | 3.1.2.1.1 | Convert 3.6 Oracle DB Schema to MySQL | 2.35d? | 2008-06-19 A | 2008-06-26 A |  | 100% |  |  |  | Jim [85%] | 16h | 16h |
| 57 | 3.1.2.1.2 | Request new MySQL DB on DEV with Production Data | 1.18d? | 2008-06-26 A | 2008-06-27 A | 56 | 100% |  |  |  | Jim [85%] | 8h | 8h |
| 58 | 3.1.2.1.3 | Generate EA Data Model | 1.18d? | 2008-07-01 A | 2008-07-02 A | 60 | 100% |  |  |  | Jim [85%] | 8h | 8h |
| 59 | 3.1.3 | **Test** | 1.76d? | 2008-06-27 A | 2008-07-01 A |  | 100% |  |  |  |  | 12h | 12h |
| 60 | 3.1.3.1 | Test NCIA Application on MySQL DB | 1.76d? | 2008-06-27 A | 2008-07-01 A | 57 | 100% |  |  |  | Jim [85%] | 12h | 12h |
| 61 | 3.1.4 | **Environment** | 7.47d? | 2008-06-19 A | 2008-07-03 A |  | 100% |  |  |  |  | 10h | 10h |
| 62 | 3.1.4.1 | Create DB re-engineer branch | 1d? | 2008-06-19 A | 2008-06-20 A |  | 100% |  |  |  | Jennifer [12.5%] | 1h | 1h |
| 63 | 3.1.4.2 | Create a Tag for working version | 1d? | 2008-07-01 A | 2008-07-02 A | 60 | 100% |  |  |  | Jennifer [12.5%] | 1h | 1h |
| 64 | 3.1.4.3 | Merge the branch to trunk | 1d? | 2008-07-02 A | 2008-07-03 A | 54 | 100% |  |  |  | Team | 8h | 8h |
| 65 | 3.1.5 | **Project Management** | 8.47d? | 2008-06-19 A | 2008-07-07 A |  | 100% |  |  |  |  | 8h | 8h |
| 66 | 3.1.5.1 | Iteration Review | 1d? | 2008-07-03 A | 2008-07-07 A | 48, 54, 59, 61 | 100% |  |  |  | Team | 8h | 8h |
| 67 | 3.1.5.2 | Create Iteration plan for next iteration | 1d? | 2008-06-19 A | 2008-06-20 A |  | 100% |  |  |  |  |  |  |
| 68 | 3.2 | **Iteration 2 -- Make application work after dropping Views** | 30.24d? | 2008-07-07 A | 2008-08-18 | 47 | 94% | 1.72d? | 0d |  |  | 696.8h | 683.9h |
| 69 | 3.2.1 | **Requirement** | 5d? | 2008-08-07 A | 2008-08-13 |  | 95% | 0.23d? | 2.84d |  |  | 64.8h | 61.9h |
| 70 | 3.2.1.1 | **Develop use case for NCIA grid service(transfer) only return public data (15058)** | 1d? | 2008-08-11 A | 2008-08-11 A |  | 100% |  |  |  |  | 6.8h | 6.8h |
| 71 | 3.2.1.1.1 | Customer Review Response for Use Case | 1d? | 2008-08-11 A | 2008-08-11 A |  | 100% |  |  | finish no earlier than 2008-08-11 | Larry [85%] | 6.8h | 6.8h |
| 72 | 3.2.1.2 | **Develop use case for data submission (CTP)(8005)** | 5d? | 2008-08-07 A | 2008-08-13 |  | 95% | 0.25d? | 2.84d |  | Larry [85%] | 58h | 55.1h |
| 73 | 3.2.1.2.1 | Correct to match Tracker (Enhance Image Submission Technology and Process) and Add tracker number to description (8005) | 5d? | 2008-08-07 A | 2008-08-13 |  | 95% | 0.25d? | 2.84d | finish no earlier than 2008-08-13 | Larry [20%] | 8h | 7.6h |
| 74 | 3.2.1.2.2 | Review and Update Current Image Submission User Case (MIRC) and NCIA Database Adapter Use Case and Documentation | 5d? | 2008-08-07 A | 2008-08-13 |  | 95% | 0.25d? | 2.84d | finish no earlier than 2008-08-13 | Larry [20%] | 8h | 7.6h |
| 75 | 3.2.1.2.3 | Develop Supplementary Requiremen | 5d? | 2008-08-07 A | 2008-08-13 |  | 95% | 0.25d? | 2.84d | finish no earlier than 2008-08-13 | Larry [20%] | 8h | 7.6h |
| 76 | 3.2.2 | **Analysis and Design** | 30.11d? | 2008-07-07 A | 2008-08-18 A |  | 100% |  |  |  |  | 50h | 50h |
| 77 | 3.2.2.1 | Analyze DB Adaptor current implementation | 2.94d? | 2008-07-07 A | 2008-07-10 A |  | 100% |  |  |  | Jim [85%] | 20h | 20h |
| 78 | 3.2.2.2 | Anaylze/Design NCIA grid service(transfer) return only public data(15058) | 10.71d? | 2008-08-04 A | 2008-08-18 A |  | 100% |  |  | start no earlier than 2008-08-04 | Thai [35%] | 30h | 30h |

Notes:
- 74: Client Submission, Server, NCIA Database Adapter, 7350 - Pre MIRC Processor (PuMP), Quarantine - FR 11179 NCIA Quarantine Management Component)

| ID | WBS | Task | Duration | Start | Finish | Predecessors | Complete | Remaining | Total slack | Resources | Work | Actual work |
| --- | --- | --- | --- | --- | --- | --- | --- | --- | --- | --- | --- | --- |
| 79 | 3.2.3 | **Implementation** | 29.4d? | 2008-07-07 A | 2008-08-15 |  | 99% | 0.26d? | 0.84d |  | 479h | 477h |
| 80 | 3.2.3.1 | **Generate Domain Objects and OR Mappings from caCORE SDK** | 5.5d? | 2008-07-07 A | 2008-07-15 A |  | 100% |  |  |  | 34h | 34h |
| 81 | 3.2.3.1.1 | Complete creation of EA Object model | 2.5d? | 2008-07-07 A | 2008-07-10 A |  | 100% |  |  | Jennifer [40%] | 8h | 8h |
| 82 | 3.2.3.1.2 | Complete creation of EA Data model | 2.5d? | 2008-07-07 A | 2008-07-10 A |  | 100% |  |  | Jennifer [40%] | 8h | 8h |
| 83 | 3.2.3.1.3 | Create EA Mapping (caAdapter) | 1.67d? | 2008-07-10 A | 2008-07-11 A | 81, 82 | 100% |  |  | Jennifer [75%] | 10h | 10h |
| 84 | 3.2.3.1.4 | Execute caCORE SDK | 1.33d? | 2008-07-11 A | 2008-07-15 A | 83 | 100% |  |  | Jennifer [75%] | 8h | 8h |
| 85 | 3.2.3.2 | **Make local search function working against MySQL** | 20.85d? | 2008-07-07 A | 2008-08-05 A |  | 100% |  |  |  | 96h | 96h |
| 86 | 3.2.3.2.1 | Analyze the views used in local search function | 1.67d? | 2008-07-07 A | 2008-07-09 A |  | 100% |  |  | eric [60%] | 8h | 8h |
| 87 | 3.2.3.2.2 | Add necessary relationship in database | 2.5d? | 2008-07-09 A | 2008-07-11 A | 86 | 100% |  |  | eric [60%] | 12h | 12h |
| 88 | 3.2.3.2.3 | Modify domain object (POJO code) and mapping to reflect the relationship | 1.67d? | 2008-07-17 A | 2008-07-18 A | 87, 140 | 100% |  |  | eric [60%] | 8h | 8h |
| 89 | 3.2.3.2.4 | Service Layer change | 6.67d? | 2008-07-18 A | 2008-07-29 A | 88 | 100% |  |  | eric [60%] | 32h | 32h |
| 90 | 3.2.3.2.5 | Unit Testing and refactoring codes | 3.33d? | 2008-07-29 A | 2008-08-01 A | 88, 89 | 100% |  |  | eric [60%] | 16h | 16h |
| 91 | 3.2.3.2.6 | Refactor code for static analysis report | 12.5d? | 2008-07-07 A | 2008-07-24 A |  | 100% |  |  | eric [10%] | 10h | 10h |
| 92 | 3.2.3.2.7 | Peer Review | 0.25d? | 2008-08-01 A | 2008-08-04 A | 90, 91 | 100% |  |  | Team | 2h | 2h |
| 93 | 3.2.3.2.8 | Documentation | 1.43d? | 2008-08-04 A | 2008-08-05 A | 92 | 100% |  |  | eric [70%] | 8h | 8h |
| 94 | 3.2.3.3 | **Make Verify Submission/QC Tools function working** | 21.07d? | 2008-07-07 A | 2008-08-05 A |  | 100% |  |  |  | 118h | 118h |
| 95 | 3.2.3.3.1 | Analyze the views used in local search function | 1.43d? | 2008-07-07 A | 2008-07-09 A |  | 100% |  |  | Surendra [70%] | 8h | 8h |
| 96 | 3.2.3.3.2 | Add necessary relationship in database | 2.86d? | 2008-07-09 A | 2008-07-11 A | 95 | 100% |  |  | Surendra [70%] | 16h | 16h |
| 97 | 3.2.3.3.3 | Modify domain object (POJO code) and mapping to reflect the relationship | 1.43d? | 2008-07-17 A | 2008-07-18 A | 96, 140 | 100% |  |  | Surendra [70%] | 8h | 8h |
| 98 | 3.2.3.3.4 | Service Layer change | 7.86d? | 2008-07-18 A | 2008-07-30 A | 97 | 100% |  |  | Surendra [70%] | 44h | 44h |
| 99 | 3.2.3.3.5 | Unit Testing and refactoring codes | 2.86d? | 2008-07-30 A | 2008-08-04 A | 98 | 100% |  |  | Surendra [70%] | 16h | 16h |
| 100 | 3.2.3.3.6 | Refactor code for static analysis report | 13.33d? | 2008-07-07 A | 2008-07-24 A |  | 100% |  |  | Surendra [15%] | 16h | 16h |
| 101 | 3.2.3.3.7 | Peer Review | 0.25d? | 2008-08-04 A | 2008-08-04 A | 99, 100 | 100% |  |  | Team | 2h | 2h |
| 102 | 3.2.3.3.8 | Documentation | 1.18d? | 2008-08-04 A | 2008-08-05 A | 101 | 100% |  |  | Surendra [85%] | 8h | 8h |

| ID | WBS | Task | Type | Duration | Start | Finish | Predecessors | Complete | Resources | Work | Actual work |
| --- | --- | --- | --- | --- | --- | --- | --- | --- | --- | --- | --- |
| 103 | 3.2.3.4 | **Make Save Queries/Update Curation function working against new MySQL DB** |  | 16.42d? | 2008-07-07 A | 2008-07-30 A |  | 100% |  | 88h | 88h |
| 104 | 3.2.3.4.1 | Analyze the views used in local search function |  | 1.33d? | 2008-07-07 A | 2008-07-08 A |  | 100% | Qinyan [75%] | 8h | 8h |
| 105 | 3.2.3.4.2 | Add necessary relationship in database |  | 2.67d? | 2008-07-08 A | 2008-07-11 A | 104 | 100% | Qinyan [75%] | 16h | 16h |
| 106 | 3.2.3.4.3 | Modify domain object (POJO code) and mapping to reflect the relationship |  | 1.33d? | 2008-07-17 A | 2008-07-18 A | 105, 140 | 100% | Qinyan [75%] | 8h | 8h |
| 107 | 3.2.3.4.4 | Service Layer change |  | 5.33d? | 2008-07-18 A | 2008-07-25 A | 106 | 100% | Qinyan [75%] | 32h | 32h |
| 108 | 3.2.3.4.5 | Unit Testing and refactoring codes |  | 2d? | 2008-07-25 A | 2008-07-29 A | 107 | 100% | Qinyan [75%] | 12h | 12h |
| 109 | 3.2.3.4.6 | Refactor code for static analysis report |  | 12.5d? | 2008-07-07 A | 2008-07-24 A |  | 100% | Qinyan [10%] | 10h | 10h |
| 110 | 3.2.3.4.7 | Peer Review |  | 0.25d? | 2008-07-29 A | 2008-07-30 A | 108, 109 | 100% | Team | 2h | 2h |
| 111 | 3.2.3.4.8 | Documentation | milestone | 0d? | 2008-07-30 A | 2008-07-30 A | 110 | 100% | Qinyan [85%] |  |  |
| 112 | 3.2.3.5 | **Modify the system to make Remote Search working on MySQL DB** |  | 7.71d? | 2008-07-24 A | 2008-08-05 A | 118 | 100% |  | 50h | 50h |
| 113 | 3.2.3.5.1 | Service Layer change |  | 5.71d? | 2008-07-24 A | 2008-08-01 A |  | 100% | Jim [70%] | 32h | 32h |
| 114 | 3.2.3.5.2 | Unit Testing and refactoring codes |  | 1.43d? | 2008-08-01 A | 2008-08-04 A | 113 | 100% | Jim [70%] | 8h | 8h |
| 115 | 3.2.3.5.3 | Refactor code for static analysis report |  | 5d? | 2008-07-24 A | 2008-07-31 A |  | 100% | Jim [15%] | 6h | 6h |
| 116 | 3.2.3.5.4 | Peer Review |  | 0.12d? | 2008-08-04 A | 2008-08-05 A | 114, 115 | 100% | Team | 1h | 1h |
| 117 | 3.2.3.5.5 | Documentation |  | 0.44d? | 2008-08-05 A | 2008-08-05 A | 116 | 100% | Jim [85%] | 3h | 3h |
| 118 | 3.2.3.6 | **Modify MIRC DB Adaptor to work with MySQL DB** |  | 10.22d? | 2008-07-10 A | 2008-07-24 A | 77 | 100% |  | 45h | 45h |
| 119 | 3.2.3.6.1 | Modify HQL in NCIA application based on the domain objects changes |  | 4.29d? | 2008-07-10 A | 2008-07-16 A |  | 100% | Jim [70%] | 24h | 24h |
| 120 | 3.2.3.6.2 | Unit testing and refactoring code |  | 1.43d? | 2008-07-16 A | 2008-07-18 A | 119 | 100% | Jim [70%] | 8h | 8h |
| 121 | 3.2.3.6.3 | Refactor code for static analysis report |  | 4.17d? | 2008-07-10 A | 2008-07-16 A |  | 100% | Jim [15%] | 5h | 5h |
| 122 | 3.2.3.6.4 | Peer Review |  | 1d? | 2008-07-22 A | 2008-07-23 A | 120, 121 | 100% | Team [25%] | 2h | 2h |
| 123 | 3.2.3.6.5 | Documentation |  | 0.88d? | 2008-07-23 A | 2008-07-24 A | 122 | 100% | Jim [85%] | 6h | 6h |
| 124 | 3.2.3.7 | **Regenerate Domain Objects and OR Mappings(Obsolete)** |  | 7.5d? | 2008-07-07 A | 2008-07-17 A | 140 | 100% |  |  |  |
| 125 | 3.2.3.7.1 | Update Object Model and Data model to reflect any change | milestone | 0d? | 2008-07-07 A | 2008-07-07 A |  | 100% | Jennifer [25%] |  |  |
| 126 | 3.2.3.7.2 | Create missing tag value using caAdapter | milestone | 0d? | 2008-07-17 A | 2008-07-17 A | 125 | 100% | Jennifer [25%] |  |  |
| 127 | 3.2.3.7.3 | Execute caCORE SDK | milestone | 0d? | 2008-07-17 A | 2008-07-17 A | 126 | 100% | Jennifer [25%] |  |  |
| 128 | 3.2.3.8 | Integrate with output of SDK with Application(Obsolete) | milestone | 0d? | 2008-07-17 A | 2008-07-17 A | 127 | 100% | Team |  |  |
| 129 | 3.2.3.9 | Update Build script |  | 10d? | 2008-07-07 A | 2008-07-21 A |  | 100% | Jennifer [10%]; eric [10%] | 16h | 16h |

| ID | WBS | Task | Type | Duration | Start | Finish | Predecessors | Complete | Remaining | Total slack | Constraint | Resources | Work | Actual work |
| --- | --- | --- | --- | --- | --- | --- | --- | --- | --- | --- | --- | --- | --- | --- |
| 130 | 3.2.3.10 | **Regenerate NCIACoreService using caCORE SDK 4.0(15058)** |  | 10d? | 2008-08-04 A | 2008-08-15 A |  | 100% |  |  |  |  | 24h | 24h |
| 131 | 3.2.3.10.1 | Update DICOM model based on Database change |  | 3.33d? | 2008-08-04 A | 2008-08-07 A |  | 100% |  |  | start no earlier than 2008-08-04 | Thai [30%] | 8h | 8h |
| 132 | 3.2.3.10.2 | Create tag value (caAdaptor) |  | 6.67d? | 2008-08-07 A | 2008-08-15 A | 131 | 100% |  |  |  | Thai [30%] | 16h | 16h |
| 133 | 3.2.3.11 | Generate metrics for application agaist new MySQL |  | 2.5d? | 2008-08-11 A | 2008-08-13 | 134 | 50% | 1.25d? | 2.71d |  | Surendra [20%] | 4h | 2h |
| 134 | 3.2.3.12 | Merge MySQL branch code and 3.7 code |  | 0.5d? | 2008-08-11 A | 2008-08-11 A |  | 100% |  |  | start no earlier than 2008-08-11 | Team | 4h | 4h |
| 135 | 3.2.4 | **Deployment** |  | 10.5d? | 2008-07-31 A | 2008-08-14 A |  | 100% |  |  |  |  |  |  |
| 136 | 3.2.4.1 | First C2 Tag sent to QA (to verify MIRC image submission and Saved Queries) | milestone | 0d? | 2008-07-31 A | 2008-07-31 A | 103, 118, 146 | 100% |  |  |  | Jennifer |  |  |
| 137 | 3.2.4.2 | Second C2 Tag sent to QA (to verify search, remote search, Verify Submission, & QC tool) | milestone | 0d? | 2008-08-05 A | 2008-08-05 A | 85, 94, 112 | 100% |  |  |  | Jennifer |  |  |
| 138 | 3.2.4.3 | C2 + release 3.7 code merged and Tagged | milestone | 0d? | 2008-08-14 A | 2008-08-14 A | 143 | 100% |  |  |  | Jennifer |  |  |
| 139 | 3.2.5 | **Test** |  | 22.4d? | 2008-07-15 A | 2008-08-14 A |  | 100% |  |  |  |  | 88h | 88h |
| 140 | 3.2.5.1 | Replace current Domain object by the output of SDK in application, make sure the application works correctly |  | 2d? | 2008-07-15 A | 2008-07-17 A | 84 | 100% |  |  |  | Team | 16h | 16h |
| 141 | 3.2.5.2 | Test DB deployment steps on DEV MySQL |  | 6d? | 2008-08-05 A | 2008-08-13 A | 94 | 100% |  |  |  | Surendra [50%] | 24h | 24h |
| 142 | 3.2.5.3 | Integration Test on DEV without 3.7 code merge |  | 3d? | 2008-08-01 A | 2008-08-05 A |  | 100% |  |  | start no earlier than 2008-08-01 | Team | 24h | 24h |
| 143 | 3.2.5.4 | Integration Test on DEV after Code Merge with 3.7 |  | 3d? | 2008-08-11 A | 2008-08-14 A | 134 | 100% |  |  |  | Team | 24h | 24h |
| 144 | 3.2.6 | **Environment** |  | 26.4d? | 2008-07-07 A | 2008-08-13 A |  | 100% |  |  |  |  | 6h | 6h |
| 145 | 3.2.6.1 | Setup DEV enviroment for AHP |  | 15d? | 2008-07-07 A | 2008-07-28 A |  | 100% |  |  |  | eric [5%] | 6h | 6h |
| 146 | 3.2.6.2 | New tier established for QA | milestone | 0d? | 2008-08-13 A | 2008-08-13 A |  | 100% |  |  | start no earlier than 2008-08-13 | Systems |  |  |
| 147 | 3.2.7 | **Project Management** |  | 30.24d? | 2008-07-07 A | 2008-08-18 |  | 1% | 29.86d? | 0d |  |  | 9h | 1h |
| 148 | 3.2.7.1 | Iteration Review |  | 1h | 2008-08-18 A | 2008-08-18 A | 76, 79, 139, 144 | 100% |  |  |  | Team | 1h | 1h |
| 149 | 3.2.7.2 | Create Transition plan |  | 10d? | 2008-07-07 | 2008-07-21 |  |  |  | 20.24d |  | Dave [10%] | 8h |  |
| 150 | 3.3 | **Iteration 3 -- Optimize NCIA Application performance and CTP Analysis** |  | 17.38d? | 2008-08-18 | 2008-09-11 | 68 |  |  | 0d |  |  | 417h |  |
| 151 | 3.3.1 | **requirement** |  | 11d? | 2008-08-18 | 2008-09-02 |  |  |  | 6.38d |  |  | 36h |  |
| 152 | 3.3.1.1 | **Develop use case for managing NCIA user by user group (15106)** |  | 11d? | 2008-08-18 | 2008-09-02 |  |  |  | 6.38d |  |  | 8h |  |
| 153 | 3.3.1.1.1 | Revise Use Case |  | 10d? | 2008-08-18 | 2008-09-02 |  |  |  | 6.38d |  | Larry [10%] | 8h |  |

| ID | WBS | Task | Duration | Start | Finish | Predecessors | Total slack | Free slack | Resources | Work |
| --- | --- | --- | --- | --- | --- | --- | --- | --- | --- | --- |
| 154 | 3.3.1.2 | **Develop new use cases for Verify Submission (15452)** | 6.5d? | 2008-08-18 | 2008-08-27 |  | 10.88d |  |  | 28h |
| 155 | 3.3.1.2.1 | Review Current BUGs and FRs and verify with Use Case. Identify Gaps or establish Requirements | 2.5d? | 2008-08-18 | 2008-08-21 |  | 10.88d | 0d | Larry [20%] | 4h |
| 156 | 3.3.1.2.2 | Review current Use Case | 2.5d? | 2008-08-18 | 2008-08-21 |  | 10.88d | 0d | Larry [20%] | 4h |
| 157 | 3.3.1.2.3 | Customer walk through of current Use Case and define requirements | 2.5d? | 2008-08-18 | 2008-08-21 |  | 10.88d | 0d | Larry [20%] | 4h |
| 158 | 3.3.1.2.4 | Update Use Case and develop Requirements definition | 4d? | 2008-08-21 | 2008-08-27 | 155, 156, 157 | 10.88d |  | Larry [50%] | 16h |
| 159 | 3.3.2 | **Analysis and Design** | 7.73d? | 2008-08-18 | 2008-08-28 |  | 4.25d |  |  | 64h |
| 160 | 3.3.2.1 | Analyze the construction of HQL to improve the performance | 5d? | 2008-08-18 | 2008-08-25 |  | 4.25d | 0d | eric [40%] | 16h |
| 161 | 3.3.2.2 | **Analyze CTP integration effort** | 4.12d? | 2008-08-18 | 2008-08-22 |  | 12.13d |  |  | 48h |
| 162 | 3.3.2.2.1 | Install CTP as field Center and Server | 2.94d? | 2008-08-18 | 2008-08-21 |  | 13.31d |  | Jim [85%] | 20h |
| 163 | 3.3.2.2.2 | Analyze CTP interface/API to estimate the change in DB adaptor | 4.12d? | 2008-08-18 | 2008-08-22 |  | 12.13d |  | Jim [85%] | 28h |
| 164 | 3.3.2.3 | Anaylze incorrect study and series counts of Head-Neck Cetuximab Collection (14898) | 1.76d? | 2008-08-26 | 2008-08-28 | 173 | 1.83d | 0d |  |  |
| 165 | 3.3.3 | **Implementation** | 12.42d? | 2008-08-18 | 2008-09-04 |  | 0.25d | 0d |  | 190h |
| 166 | 3.3.3.1 | **Looking for possible missing relationships and index in the tables** | 7.06d? | 2008-08-18 | 2008-08-27 |  | 6.19d |  |  | 48h |
| 167 | 3.3.3.1.1 | Analyze NCIA application to understand all functionalities | 1.18d? | 2008-08-18 | 2008-08-20 |  | 6.19d | 0d | Surendra [45%]; eric [40%] | 8h |
| 168 | 3.3.3.1.2 | Based on all functionalities,creating possible missing table relationships and indexes | 2.35d? | 2008-08-20 | 2008-08-22 | 167 | 6.19d | 0d | Surendra [45%]; eric [40%] | 16h |
| 169 | 3.3.3.1.3 | Peer Review and refactoring relationships | 1.18d? | 2008-08-22 | 2008-08-25 | 168 | 7.19d | 0d | Surendra [45%]; eric [40%] | 8h |
| 170 | 3.3.3.1.4 | Unit testing the current query against the new schema | 1.18d? | 2008-08-25 | 2008-08-26 | 169 | 7.19d | 0d | Surendra [45%]; eric [40%] | 8h |
| 171 | 3.3.3.1.5 | Documentation | 1.18d? | 2008-08-26 | 2008-08-27 | 170 | 7.19d |  | Surendra [45%]; eric [40%] | 8h |
| 172 | 3.3.3.2 | Implement the Possible HQL modification for better performance | 4d? | 2008-08-25 | 2008-08-29 | 160 | 5.25d |  | Team | 32h |
| 173 | 3.3.3.3 | **Regenerate NCIACoreService using caCORE SDK 4.0** | 5.96d? | 2008-08-18 | 2008-08-26 |  | 1.83d | 0d |  | 34h |
| 174 | 3.3.3.3.1 | Generate NCIACoreService | 1.43d? | 2008-08-18 | 2008-08-20 |  | 1.83d | 0d | Thai [70%] | 8h |
| 175 | 3.3.3.3.2 | Implement the public data filter | 2.86d? | 2008-08-20 | 2008-08-25 | 174 | 1.83d | 0d | Thai [70%] | 16h |
| 176 | 3.3.3.3.3 | Unit Test | 1.43d? | 2008-08-25 | 2008-08-26 | 175 | 1.83d | 0d | Thai [70%] | 8h |
| 177 | 3.3.3.3.4 | Peer Review | 0.25d? | 2008-08-26 | 2008-08-26 | 176 | 1.83d |  | Team | 2h |

| ID | WBS | Task | Duration | Start | Finish | Predecessors | Total slack | Free slack | Constraint | Resources | Work |
| --- | --- | --- | --- | --- | --- | --- | --- | --- | --- | --- | --- |
| 178 | 3.3.3.4 | **Implement Schema/Data migration scripts** | 11d? | 2008-08-19 | 2008-09-03 | 206 | 0d |  |  |  | 32h |
| 179 | 3.3.3.4.1 | Develop Node schema upgrade script for MySQL (NCIA 3.0) to MySQL (NCIA 4.0) conversion | 5d? | 2008-08-19 | 2008-08-26 |  | 0d |  |  | Surendra [40%] | 16h |
| 180 | 3.3.3.4.2 | Develop Node data migrations script from MySQL (NCIA 3.0) to MySQL (NCIA 4.0) | 5d? | 2008-08-26 | 2008-09-03 | 179 | 0d |  |  | Surendra [40%] | 16h |
| 181 | 3.3.3.5 | **Fix the conflict of viewing DICOM header file and searching archive(15193)** | 4.69d? | 2008-08-18 | 2008-08-25 |  | 9.56d |  |  |  | 2h |
| 182 | 3.3.3.5.1 | Research and Implementation the solution | 4.44d? | 2008-08-18 | 2008-08-25 |  | 9.56d | 0d |  |  |  |
| 183 | 3.3.3.5.2 | Unit Test | 4d? | 2008-08-18 | 2008-08-22 |  | 10d | 0.44d |  |  |  |
| 184 | 3.3.3.5.3 | Peer Review | 0.25d? | 2008-08-25 | 2008-08-25 | 182, 183 | 9.56d |  |  | Team | 2h |
| 185 | 3.3.3.6 | **Fix for incorrect study and series counts of Head-Neck Cetuximab Collection (14898)** | 4.69d? | 2008-08-28 | 2008-09-04 | 164 | 1.83d |  |  |  | 2h |
| 186 | 3.3.3.6.1 | Implementation | 4.44d? | 2008-08-28 | 2008-09-04 |  | 1.83d | 0d |  |  |  |
| 187 | 3.3.3.6.2 | Unit Test | 4d? | 2008-08-28 | 2008-09-03 |  | 2.27d | 0.44d |  |  |  |
| 188 | 3.3.3.6.3 | Peer Review | 0.25d? | 2008-09-04 | 2008-09-04 | 186, 187 | 1.83d |  |  | Team | 2h |
| 189 | 3.3.3.7 | Build script update to include the NCIACoreService autodeployment | 1.52d? | 2008-08-26 | 2008-08-28 | 173 | 6.77d |  |  | eric [10%]; Thai [75%] | 10h |
| 190 | 3.3.3.8 | Fix Defects | 8.33d? | 2008-08-18 | 2008-08-29 |  | 4.92d |  |  | Thai [15%]; Surendra [15%]; eric [15%] | 30h |
| 191 | 3.3.4 | **Test** | 16.25d? | 2008-08-18 | 2008-09-10 |  | 0d |  |  |  | 98h |
| 192 | 3.3.4.1 | MRIC Database Adapter Allowing Duplicates in Database (14348) | 0.12d? | 2008-08-18 | 2008-08-18 |  | 16.12d |  |  | QA | 1h |
| 193 | 3.3.4.2 | QC Tool Not Showing All Submitted Images (9752) | 0.12d? | 2008-08-18 | 2008-08-18 |  | 16.12d |  |  | QA | 1h |
| 194 | 3.3.4.3 | Integration Test on DEV | 2d? | 2008-09-04 | 2008-09-08 | 165 | 1.83d |  |  | Team | 16h |
| 195 | 3.3.4.4 | Cedera I-Response 2 Integration Test | 1d? | 2008-08-18 | 2008-08-19 |  | 15.25d |  |  | Qinyan | 8h |
| 196 | 3.3.4.5 | **Test migration scripts** | 5d? | 2008-09-03 | 2008-09-10 | 178 | 0d |  |  |  | 32h |
| 197 | 3.3.4.5.1 | Test schema upgrade scripts | 5d? | 2008-09-03 | 2008-09-10 |  | 0d |  |  | Surendra [40%] | 16h |
| 198 | 3.3.4.5.2 | Test data migration scripts | 5d? | 2008-09-03 | 2008-09-10 |  | 0d |  |  | Surendra [40%] | 16h |
| 199 | 3.3.4.6 | QA Regression test | 10d? | 2008-08-18 | 2008-09-02 |  | 5.25d |  |  | QA [50%] | 40h |
| 200 | 3.3.5 | **Environment** | 1.09d? | 2008-09-10 | 2008-09-11 |  | 0d |  |  |  | 16h |
| 201 | 3.3.5.1 | Code Merge and Tag | 1d? | 2008-09-10 | 2008-09-11 | 159, 165, 191 | 0d |  |  | Team | 8h |
| 202 | 3.3.5.2 | New tier established for Stage | 1d? | 2008-09-10 | 2008-09-10 |  | 0.09d |  | start no earlier than 2008-09-10 | Systems | 8h |

| ID | WBS | Task | Type | Duration | Start | Finish | Predecessors | Complete | Remaining | Total slack | Constraint | Resources | Work | Actual work |
| --- | --- | --- | --- | --- | --- | --- | --- | --- | --- | --- | --- | --- | --- | --- |
| 203 | 3.3.6 | **Deployment** |  | 0d? | 2008-09-11 | 2008-09-11 |  |  |  | 0.12d |  |  |  |  |
| 204 | 3.3.6.1 | I3 Tag sent to QA (to verify end functionality relating to optimized queries) | milestone | 0d? | 2008-09-11 | 2008-09-11 | 165, 191, 200 |  |  | 0.12d |  | Jennifer |  |  |
| 205 | 3.3.7 | **Project Management** |  | 17.38d? | 2008-08-18 | 2008-09-11 |  |  |  | 0d |  |  | 13h |  |
| 206 | 3.3.7.1 | Discuss data migration strategy to support external nodes & SCI Group |  | 0.25d? | 2008-08-18 | 2008-08-19 |  |  |  | 0d | start no earlier than 2008-08-13 | Jennifer; Anand | 4h |  |
| 207 | 3.3.7.2 | Iteration Review |  | 0.12d? | 2008-09-11 | 2008-09-11 | 159, 165, 191, 200 |  |  | 0d |  | Team | 1h |  |
| 208 | 3.3.7.3 | Create iteration plan for next iteration |  | 10d? | 2008-08-18 | 2008-09-02 |  |  |  | 6.38d |  | Dave [10%] | 8h |  |
| 209 | 3.4 | **Iteration 4 -- Remove updateableDomain package (Obsolete)** |  | 11d? | 2008-09-11 | 2008-09-26 | 150 |  |  | 0d |  |  | 135h |  |
| 210 | 3.4.1 | **Analysis** |  | 2.21d | 2008-09-11 | 2008-09-15 |  |  |  | 0d |  |  | 30h |  |
| 211 | 3.4.1.1 | Confirm caCore generated code satisfies the functionality previously supported by updateable domain |  | 17.65h | 2008-09-11 | 2008-09-15 |  |  |  | 0d |  | Jim [85%]; Surendra [85%] | 30h |  |
| 212 | 3.4.2 | **Implementation** |  | 6.67d | 2008-09-15 | 2008-09-24 | 210 |  |  | 0d |  |  | 48h |  |
| 213 | 3.4.2.1 | Remove Updateable Domain data access layer and code modification |  | 53.33h | 2008-09-15 | 2008-09-24 |  |  |  | 0d |  | Jim [45%]; Surendra [45%] | 48h |  |
| 214 | 3.4.3 | **Test** |  | 5d | 2008-09-15 | 2008-09-22 | 210 |  |  | 1.67d |  |  | 32h |  |
| 215 | 3.4.3.1 | Create and Execute Junits tests on functionality previously served by updateable domain |  | 40h | 2008-09-15 | 2008-09-22 |  |  |  | 1.67d |  | Jim [40%]; Surendra [40%] | 32h |  |
| 216 | 3.4.4 | **Deployment** |  | 10.87d? | 2008-09-11 | 2008-09-26 |  |  |  | 0d |  |  | 16h |  |
| 217 | 3.4.4.1 | Modify build script |  | 53.33h | 2008-09-11 | 2008-09-19 |  |  |  | 2.21d |  | Jennifer [15%] | 8h |  |
| 218 | 3.4.4.2 | I4 Tag sent to QA (to verify functionality previously supported by updateable domain) |  | 1d? | 2008-09-25 | 2008-09-26 | 220 |  |  | 0d |  | Carl | 8h |  |
| 219 | 3.4.5 | **Environment** |  | 1d? | 2008-09-24 | 2008-09-25 | 210, 212, 214, 217 |  |  | 0d |  |  | 8h |  |
| 220 | 3.4.5.1 | Code Merge and Tag |  | 1d? | 2008-09-24 | 2008-09-25 |  |  |  | 0d |  | Team | 8h |  |
| 221 | 3.4.6 | **Project Management** |  | 0.12d? | 2008-09-26 | 2008-09-26 | 219 |  |  | 0d |  |  | 1h |  |
| 222 | 3.4.6.1 | Iteration Review |  | 0.12d? | 2008-09-26 | 2008-09-26 | 210, 212, 214, 216 |  |  | 0d |  | Team | 1h |  |
| 223 | 4 | **Transition** |  | 17.77d? | 2008-08-18 A | 2008-09-11 | 68 | 29% | 12.62d? | 10.6d |  |  | 287h | 104.7h |
| 224 | 4.1 | **Iteration 1** |  | 17.77d? | 2008-08-18 A | 2008-09-11 |  | 29% | 12.62d? | 10.6d |  |  | 287h | 104.7h |
| 225 | 4.1.1 | **requirement** |  | 11d? | 2008-08-18 A | 2008-09-02 |  | 45% | 6d? | 17.37d |  |  | 36h | 23.8h |
| 226 | 4.1.1.1 | **Develop use case for managing NCIA user by user group (15106)** |  | 11d? | 2008-08-18 | 2008-09-02 |  |  |  | 17.37d |  |  | 8h |  |
| 227 | 4.1.1.1.1 | Revise Use Case |  | 10d? | 2008-08-18 | 2008-09-02 |  |  |  | 17.37d |  | Larry [10%] | 8h |  |

| ID | WBS | Task | Type | Duration | Start | Finish | Predecessors | Complete | Remaining | Total slack | Free slack | Resources | Work | Actual work |
| --- | --- | --- | --- | --- | --- | --- | --- | --- | --- | --- | --- | --- | --- | --- |
| 228 | 4.1.1.2 | **Develop new use cases for Verify Submission (15452)** |  | 6.5d? | 2008-08-18 A | 2008-08-27 |  | 85% | 0.97d? | 21.87d |  |  | 28h | 23.8h |
| 229 | 4.1.1.2.1 | Review Current BUGs and FRs and verify with Use Case. Identify Gaps or establish Requirements |  | 2.5d? | 2008-08-18 A | 2008-08-21 |  | 85% | 0.38d? | 25.27d | 0d | Larry [20%] | 4h | 3.4h |
| 230 | 4.1.1.2.2 | Review current Use Case |  | 2.5d? | 2008-08-18 A | 2008-08-21 |  | 85% | 0.38d? | 25.27d | 0d | Larry [20%] | 4h | 3.4h |
| 231 | 4.1.1.2.3 | Customer walk through of current Use Case and define requirements |  | 2.5d? | 2008-08-18 A | 2008-08-21 |  | 85% | 0.38d? | 25.27d | 0d | Larry [20%] | 4h | 3.4h |
| 232 | 4.1.1.2.4 | Update Use Case and develop Requirements definition |  | 4d? | 2008-08-21 A | 2008-08-27 | 229, 230, 231 | 85% | 0.6d? | 21.87d |  | Larry [50%] | 16h | 13.6h |
| 233 | 4.1.2 | **Analysis and Design** |  | 15.29d? | 2008-08-18 A | 2008-09-09 |  | 17% | 12.63d? | 13.09d |  |  | 72h | 14h |
| 234 | 4.1.2.1 | Design and prototype public data filter(15085) |  | 3.75d? | 2008-08-18 A | 2008-08-22 A |  | 100% |  |  |  | Thai [40%] | 12h | 12h |
| 235 | 4.1.2.2 | **Analyze CTP integration effort(8005)** |  | 15.29d? | 2008-08-18 A | 2008-09-09 |  | 4% | 14.72d? | 13.09d |  |  | 60h | 2h |
| 236 | 4.1.2.2.1 | Install CTP as field Center and Server |  | 8.33d? | 2008-08-18 A | 2008-08-29 |  | 10% | 7.5d? | 20.04d |  | Jim [30%] | 20h | 2h |
| 237 | 4.1.2.2.2 | Analyze CTP interface/API to estimate the change in DB adaptor |  | 14.29d? | 2008-08-18 | 2008-09-09 |  |  |  | 13.09d |  | Jim [35%] | 40h |  |
| 238 | 4.1.3 | **Implementation** |  | 7.5d? | 2008-08-18 A | 2008-08-28 |  | 81% | 1.39d? | 20.87d |  |  | 64h | 50.5h |
| 239 | 4.1.3.1 | **Regenerate NCIACoreService using caCORE SDK 4.0 (15058)** |  | 7.5d? | 2008-08-18 A | 2008-08-28 |  | 81% | 1.39d? | 20.87d |  |  | 64h | 50.5h |
| 240 | 4.1.3.1.1 | Generate NCIACoreService |  | 2.86d? | 2008-08-18 A | 2008-08-21 |  | 75% | 0.71d? | 25.52d |  | Thai [35%] | 8h | 6h |
| 241 | 4.1.3.1.2 | Implement the public data filter |  | 2.86d? | 2008-08-21 A | 2008-08-26 A | 240 | 100% |  |  |  | Thai [70%] | 16h | 16h |
| 242 | 4.1.3.1.3 | Unit Test |  | 1.43d? | 2008-08-26 | 2008-08-27 | 241 |  |  | 20.98d | 0d | Thai [70%] | 8h |  |
| 243 | 4.1.3.1.4 | Peer Review |  | 0.25d? | 2008-08-27 | 2008-08-28 | 242 |  |  | 20.98d |  | Team | 2h |  |
| 244 | 4.1.3.1.5 | Design the grid vm template and Update build script for auto deployment |  | 7.5d? | 2008-08-18 A | 2008-08-28 |  | 95% | 0.38d? | 20.87d |  | eric [50%] | 30h | 28.5h |
| 245 | 4.1.3.2 | **Implement Schema/Data migration scripts (Obsolete)** |  | 0d? | 2008-08-18 | 2008-08-18 |  |  |  | 28.37d |  |  |  |  |
| 246 | 4.1.3.2.1 | Develop Node schema upgrade script for MySQL (NCIA 3.0) to MySQL (NCIA 4.0) conversion | milestone | 0d? | 2008-08-18 | 2008-08-18 |  |  |  | 28.37d | 0d | Surendra [40%] |  |  |
| 247 | 4.1.3.2.2 | Develop Node data migrations script from MySQL (NCIA 3.0) to MySQL (NCIA 4.0) | milestone | 0d? | 2008-08-18 | 2008-08-18 | 246 |  |  | 28.37d |  | Surendra [40%] |  |  |
| 248 | 4.1.4 | **Deployment** |  | 16.77d? | 2008-08-18 A | 2008-09-10 |  | 27% | 12.3d? | 10.6d |  |  | 24h | 6.4h |
| 249 | 4.1.4.1 | Deployment to QA(NCIA App, MIRC, Database) |  | 2d? | 2008-08-18 A | 2008-08-20 |  | 80% | 0.4d? | 13.68d | 0d | QA [50%] | 8h | 6.4h |
| 250 | 4.1.4.2 | Deployment to Stage(NCIA App, MIRC, Database) | milestone | 4d? | 2008-09-04 | 2008-09-10 | 255 |  |  | 10.6d | 0d | Systems [50%] | 16h |  |
| 251 | 4.1.5 | **Test** |  | 17.77d? | 2008-08-18 A | 2008-09-11 |  | 8% | 16.42d? | 10.6d |  |  | 85h | 10h |
| 252 | 4.1.5.1 | QA Regression testing for usability and performance |  | 10d? | 2008-08-20 A | 2008-09-04 | 249 | 15% | 8.5d? | 15.37d |  | QA [50%] | 40h | 6h |
| 253 | 4.1.5.2 | MRIC Database Adapter Allowing Duplicates in Database (14348) |  | 2.5d? | 2008-08-18 | 2008-08-21 |  |  |  | 25.87d |  | QA [5%] | 1h |  |
| 254 | 4.1.5.3 | AppScan |  | 6.67d? | 2008-08-18 | 2008-08-27 |  |  |  | 21.71d |  |  |  |  |
| 255 | 4.1.5.4 | Address any issues found during QA testing and AppScan report |  | 9.77d? | 2008-08-20 A | 2008-09-04 | 249 | 8% | 9d? | 10.6d | 0d | Team [50%] | 40h | 4h |
| 256 | 4.1.5.5 | Post-deployment verification on Stage |  | 1d? | 2008-09-10 | 2008-09-11 | 250 |  |  | 10.6d |  |  | 4h |  |

| ID | WBS | Task | Duration | Start | Finish | Total slack | Resources | Work |
| --- | --- | --- | --- | --- | --- | --- | --- | --- |
| 257 | 4.1.6 | **Configuration & Change Management** | 1d? | 2008-08-18 | 2008-08-19 | 27.37d |  | 6h |
| 258 | 4.1.6.1 | Prepare Staging Database Deployment Request for Systems | 1d? | 2008-08-18 | 2008-08-19 | 27.37d | Jennifer [12.5%] | 1h |
| 259 | 4.1.6.2 | Prepare Staging Deployment Request for Systems | 1d? | 2008-08-18 | 2008-08-19 | 27.37d | Jennifer [12.5%] | 1h |
| 260 | 4.1.6.3 | Draft updates to System Installation Guide | 1d? | 2008-08-18 | 2008-08-19 | 27.37d |  | 4h |
| 261 | 4.1.7 | **Project Management** | 1d? | 2008-08-18 | 2008-08-19 | 27.37d |  |  |
| 262 | 4.1.7.1 | Draft UAT test plan | 1d? | 2008-08-18 | 2008-08-19 | 27.37d |  |  |
| 263 | 4.1.7.2 | Prepare notification to stakeholders of upcoming release | 1d? | 2008-08-18 | 2008-08-19 | 27.37d |  |  |
| 264 | 4.1.7.3 | Approval granted to deploy to Production | 1d? | 2008-08-18 | 2008-08-19 | 27.37d |  |  |
