# reengineeringPlanfor4.0

Schedule from MS Project, 2008-09-25 to 2008-12-17, A marks actual dates.
NCI

## Calendars

- Standard: Mon-Fri 08:00-12:00, 13:00-17:00; Sat-Sun off.

## Resources

| Resource |
| --- |
| Team |
| Jennifer |
| Jim |
| Surendra |
| Qinyan |
| Eric |
| QA |
| Thai |
| Systems |
| Anand |
| system |
| John Perry |
| Sudha |
| John F |
| Justin |
| BDA |
| QinyanP |
| Jill Hadfield |

## Schedule

| ID | WBS | Task | Type | Duration | Start | Finish | Predecessors | Complete | Remaining | Baseline start | Baseline finish | Baseline duration | Total slack | Constraint | Resources | Work | Actual work |
| --- | --- | --- | --- | --- | --- | --- | --- | --- | --- | --- | --- | --- | --- | --- | --- | --- | --- |
| 1 | 1 | **NCIA 4.1 release** |  | 59.81d? | 2008-09-25 A | 2008-12-17 |  | 81% | 11.45d? | 2008-09-25 | 2008-11-24 | 42.08d? | 0d |  |  | 1330.33h | 1062.09h |
| 2 | 1.1 | **Inception** |  | 9.5d? | 2008-09-25 A | 2008-10-08 |  | 80% | 1.89d? | 2008-09-25 | 2008-10-08 | 9.5d? | 0d |  |  | 175h | 155h |
| 3 | 1.1.1 | **Iteration 1** |  | 9.5d? | 2008-09-25 A | 2008-10-08 |  | 80% | 1.89d? | 2008-09-25 | 2008-10-08 | 9.5d? | 0d |  |  | 175h | 155h |
| 4 | 1.1.1.1 | **Requirements** |  | 5d | 2008-09-29 | 2008-10-03 |  |  |  | 2008-09-29 | 2008-10-03 | 5d | 2.5d |  |  | 4h |  |
| 5 | 1.1.1.1.1 | Determin the version(s) that NCIA need to support for I-Response |  | 40h | 2008-09-29 | 2008-10-03 |  |  |  | 2008-09-29 | 2008-10-03 | 40h | 2.5d | start no earlier than 2008-09-29 | Sudha [10%] | 4h |  |
| 6 | 1.1.1.2 | **Analysis and Design** |  | 6.5d? | 2008-09-29 A | 2008-10-07 |  | 69% | 1.99d? | 2008-09-29 | 2008-10-07 | 6.5d? | 1d |  |  | 72h | 56h |
| 7 | 1.1.1.2.1 | Analysis and estimate the database optimization approach |  | 2.5d? | 2008-10-03 A | 2008-10-07 |  | 50% | 1.25d? | 2008-10-03 | 2008-10-07 | 2.5d? | 1d | start no earlier than 2008-10-03 | Surendra [80%] | 16h | 8h |
| 8 | 1.1.1.2.2 | Estimate the submission speed based on current producation data load |  | 2.5d? | 2008-10-03 | 2008-10-07 |  |  |  | 2008-10-03 | 2008-10-07 | 2.5d? | 1d | start no earlier than 2008-10-03 | Jim [40%] | 8h |  |
| 9 | 1.1.1.2.3 | Investigate and estimate the re-design of the NCIA provisioning approach |  | 5d? | 2008-09-29 A | 2008-10-03 A |  | 100% |  | 2008-09-29 | 2008-10-03 | 5d? |  |  | Eric [80%] | 32h | 32h |
| 10 | 1.1.1.2.4 | Identify CTP check/test list |  | 2.22d? | 2008-10-03 A | 2008-10-07 A |  | 100% |  | 2008-10-03 | 2008-10-07 | 2.22d? |  | start no earlier than 2008-10-03 | Justin; Jim [40%] | 16h | 16h |
| 11 | 1.1.1.3 | **Implementation** |  | 7.5d? | 2008-09-29 A | 2008-10-08 A |  | 100% |  | 2008-09-29 | 2008-10-08 | 7.5d? |  |  |  | 56h | 56h |
| 12 | 1.1.1.3.1 | Performance benchmark(CTP and combining with NCIA DB Adaptor) |  | 5d? | 2008-09-29 A | 2008-10-03 A |  | 100% |  | 2008-09-29 | 2008-10-03 | 5d? |  | start no earlier than 2008-09-29 | Jim [50%] | 20h | 20h |
| 13 | 1.1.1.3.2 | Upgrade NCIA installer for LSD 2.0 release |  | 4.5d? | 2008-10-02 A | 2008-10-08 A |  | 100% |  | 2008-10-02 | 2008-10-08 | 4.5d? |  | start no earlier than 2008-10-02 | BDA | 36h | 36h |
| 14 | 1.1.1.4 | **Configuration & Change Management** |  | 0d | 2008-10-02 A | 2008-10-02 A |  | 100% |  | 2008-10-02 | 2008-10-02 | 0d |  |  |  |  |  |
| 15 | 1.1.1.4.1 | Create branch to avoid code conflict with LSD release on trunk | milestone | 0h | 2008-10-02 A | 2008-10-02 A |  | 100% |  | 2008-10-02 | 2008-10-02 | 0h |  | start no earlier than 2008-10-02 |  |  |  |
| 16 | 1.1.1.5 | **Project Management** |  | 9.12d | 2008-09-25 A | 2008-10-08 A |  | 100% |  | 2008-09-25 | 2008-10-08 | 9.12d |  |  |  | 11h | 11h |
| 17 | 1.1.1.5.1 | Complete 4.1 Scope |  | 20h | 2008-09-25 A | 2008-09-29 A |  | 100% |  | 2008-09-25 | 2008-09-29 | 20h |  | start no earlier than 2008-09-25 | Jennifer [10%] | 2h | 2h |
| 18 | 1.1.1.5.2 | Complete 4.1 Initial MS Project plan |  | 40h | 2008-10-01 A | 2008-10-07 A |  | 100% |  | 2008-10-01 | 2008-10-07 | 40h |  | start no earlier than 2008-10-01 | Jennifer [20%] | 8h | 8h |
| 19 | 1.1.1.5.3 | Complete review of propsed MS Project plan with Team | milestone | 0h | 2008-10-07 A | 2008-10-07 A | 18 | 100% |  | 2008-10-07 | 2008-10-07 | 0h |  | start no earlier than 2008-06-04 | Team |  |  |
| 20 | 1.1.1.5.4 | Inception 1 Iterative Review with customer |  | 1h | 2008-10-08 A | 2008-10-08 A | 19 | 100% |  | 2008-10-08 | 2008-10-08 | 1h |  | start no earlier than 2008-10-06 | Team | 1h | 1h |
| 21 | 1.1.1.6 | **Configuration & Change Management** |  | 3.75d? | 2008-09-29 A | 2008-10-02 A |  | 100% |  | 2008-09-29 | 2008-10-07 | 6.25d? |  |  |  | 24h | 24h |
| 22 | 1.1.1.6.1 | Submit AppScan request for CTP |  | 1d? | 2008-09-29 A | 2008-09-29 A |  | 100% |  | 2008-09-29 | 2008-09-29 | 1d? |  |  |  |  |  |
| 23 | 1.1.1.6.2 | Investigate current data submission quarantine issue |  | 3.75d? | 2008-09-29 A | 2008-10-02 A |  | 100% |  | 2008-09-29 | 2008-10-07 | 6.25d? |  |  | Qinyan [80%] | 24h | 24h |
| 24 | 1.1.1.7 | **Environment** |  | 5d | 2008-09-29 A | 2008-10-03 A |  | 100% |  | 2008-09-29 | 2008-10-03 | 5d |  |  |  | 8h | 8h |
| 25 | 1.1.1.7.1 | Determine the system requirement for CTP in CBIIT |  | 40h | 2008-09-29 A | 2008-10-03 A |  | 100% |  | 2008-09-29 | 2008-10-03 | 40h |  | start no earlier than 2008-09-29 | Jennifer [10%]; Jim [10%] | 8h | 8h |

| ID | WBS | Task | Duration | Start | Finish | Predecessors | Complete | Remaining | Baseline start | Baseline finish | Baseline duration | Total slack | Free slack | Constraint | Resources | Work | Actual work |
| --- | --- | --- | --- | --- | --- | --- | --- | --- | --- | --- | --- | --- | --- | --- | --- | --- | --- |
| 26 | 1.2 | **Elaboration** | 8.5d? | 2008-10-08 A | 2008-10-20 | 2 | 78% | 1.86d? | 2008-10-08 | 2008-10-20 | 8.5d? | 0d |  |  |  | 202h | 158h |
| 27 | 1.2.1 | **Iteration 1** | 8.5d? | 2008-10-08 A | 2008-10-20 |  | 78% | 1.86d? | 2008-10-08 | 2008-10-20 | 8.5d? | 0d |  |  |  | 202h | 158h |
| 28 | 1.2.1.1 | **Analysis and Design** | 5.58d? | 2008-10-08 A | 2008-10-16 |  | 60% | 2.22d? | 2008-10-08 | 2008-10-16 | 5.58d? | 2.92d |  |  |  | 76h | 45.6h |
| 29 | 1.2.1.1.1 | Update use case for Imaging visulaization for newer version of I-Response | 1.25d | 2008-10-08 A | 2008-10-09 A |  | 100% |  | 2008-10-08 | 2008-10-09 | 1.25d |  |  |  | Qinyan [80%] | 8h | 8h |
| 30 | 1.2.1.1.2 | Update use case for verify submission | 3.33d? | 2008-10-08 A | 2008-10-13 A |  | 100% |  | 2008-10-08 | 2008-10-13 | 3.33d? |  |  |  | Thai [30%] | 8h | 8h |
| 31 | 1.2.1.1.3 | Design Verify submission (Filtered by collection) | 4d? | 2008-10-08 A | 2008-10-14 A |  | 100% |  | 2008-10-08 | 2008-10-14 | 4d? |  |  |  | Thai [50%] | 16h | 16h |
| 32 | 1.2.1.1.4 | Update use case for data submission in NCIA | 32h | 2008-10-08 A | 2008-10-14 |  | 20% | 25.6h | 2008-10-08 | 2008-10-14 | 32h | 12.38d |  |  | Jim [25%] | 8h | 1.6h |
| 33 | 1.2.1.1.5 | Analysis and prototype db adaptor optimization approch | 5d? | 2008-10-08 | 2008-10-15 |  |  |  | 2008-10-08 | 2008-10-15 | 5d? | 11.38d |  |  | Surendra [60%] | 24h |  |
| 34 | 1.2.1.1.6 | Analysis how to decipher CTP anonymized field using John P's code | 3d? | 2008-10-13 A | 2008-10-16 A | 51 | 100% |  | 2008-10-13 | 2008-10-16 | 3d? |  |  |  | Eric [50%] | 12h | 12h |
| 35 | 1.2.1.2 | **Implementation** | 8.5d? | 2008-10-08 A | 2008-10-20 |  | 77% | 1.97d? | 2008-10-08 | 2008-10-20 | 8.5d? | 0d |  |  |  | 64h | 50.4h |
| 36 | 1.2.1.2.1 | Wrap up the CTP changes (Anonymizing functions, unhash private information, etc) | 2d? | 2008-10-08 A | 2008-10-10 A |  | 100% |  | 2008-10-08 | 2008-10-10 | 2d? |  |  | start no earlier than 2008-09-29 | John Perry | 16h | 16h |
| 37 | 1.2.1.2.2 | **DB Adaptor code change** | 5d? | 2008-10-08 A | 2008-10-15 A |  | 100% |  | 2008-10-08 | 2008-10-15 | 5d? |  |  |  |  | 4h | 4h |
| 38 | 1.2.1.2.2.1 | Group 13 issue | 5d? | 2008-10-08 A | 2008-10-15 A |  | 100% |  | 2008-10-08 | 2008-10-15 | 5d? |  |  |  | Jim [10%] | 4h | 4h |
| 39 | 1.2.1.2.3 | Build script change include CTP build and deployment | 2.5d? | 2008-10-10 A | 2008-10-14 | 36 | 80% | 0.5d? | 2008-10-10 | 2008-10-14 | 2.5d? | 8.68d | 0d |  | Jim [20%]; Eric [50%] | 12h | 11.2h |
| 40 | 1.2.1.2.4 | CI Server configuration for CTP | 4d? | 2008-10-15 A | 2008-10-20 | 39 | 20% | 3.2d? | 2008-10-15 | 2008-10-20 | 4d? | 0d |  |  | Eric [50%] | 16h | 3.2h |
| 41 | 1.2.1.2.5 | Fix high risk items from NCIA AppScan | 2.5d? | 2008-10-08 A | 2008-10-10 A |  | 100% |  | 2008-10-08 | 2008-10-10 | 2.5d? |  |  |  | Surendra [80%] | 16h | 16h |
| 42 | 1.2.1.3 | **Configuration & Change Management** | 2.16d? | 2008-10-08 A | 2008-10-10 A |  | 100% |  | 2008-10-08 | 2008-10-10 | 2.16d? |  |  |  |  | 9h | 9h |
| 43 | 1.2.1.3.1 | Commit CTP code into NCIA repository | 1.25h | 2008-10-10 A | 2008-10-10 A | 36 | 100% |  | 2008-10-10 | 2008-10-10 | 1.25h |  |  |  | Jim [80%] | 1h | 1h |
| 44 | 1.2.1.3.2 | Merge upgrade installer to LSD branch | 1.25d? | 2008-10-08 A | 2008-10-09 A |  | 100% |  | 2008-10-08 | 2008-10-09 | 1.25d? |  |  |  | BDA [80%] | 8h | 8h |
| 45 | 1.2.1.3.3 | AppScan request for DEV server after fixes against high risk items | 1d? | 2008-10-08 A | 2008-10-09 A |  | 100% |  | 2008-10-08 | 2008-10-09 | 1d? |  |  |  |  |  |  |
| 46 | 1.2.1.4 | **Environment** | 4d? | 2008-10-08 A | 2008-10-14 A |  | 100% |  | 2008-10-08 | 2008-10-14 | 4d? |  |  |  |  | 24h | 24h |
| 47 | 1.2.1.4.1 | Setup DEV(5001 tier) enviorment for CTP | 3.33d? | 2008-10-08 A | 2008-10-13 A |  | 100% |  | 2008-10-08 | 2008-10-13 | 3.33d? |  |  |  | Jennifer [30%] | 8h | 8h |
| 48 | 1.2.1.4.2 | External Site Installation (PBTC/MSKCC) | 4d? | 2008-10-08 A | 2008-10-14 A |  | 100% |  | 2008-10-08 | 2008-10-14 | 4d? |  |  |  | Surendra [50%] | 16h | 16h |
| 49 | 1.2.1.5 | **Testing** | 5d? | 2008-10-08 A | 2008-10-15 A |  | 100% |  | 2008-10-08 | 2008-10-15 | 5d? |  |  |  |  | 28h | 28h |
| 50 | 1.2.1.5.1 | Estimate the submission speed based on current producation data load | 5d? | 2008-10-08 A | 2008-10-15 A |  | 100% |  | 2008-10-08 | 2008-10-15 | 5d? |  |  | start no earlier than 2008-10-03 | Jim [40%] | 16h | 16h |
| 51 | 1.2.1.5.2 | Testing the data submitted via CTP is correct | 1.33d? | 2008-10-09 A | 2008-10-13 A | 29 | 100% |  | 2008-10-09 | 2008-10-13 | 1.33d? |  |  |  | Eric [50%]; Qinyan [50%] | 8h | 8h |
| 52 | 1.2.1.5.3 | LSD GUI installer | 1.67d? | 2008-10-08 A | 2008-10-10 A |  | 100% |  | 2008-10-08 | 2008-10-10 | 1.67d? |  |  |  | Surendra [30%] | 4h | 4h |

| ID | WBS | Task | Duration | Start | Finish | Predecessors | Complete | Remaining | Baseline start | Baseline finish | Baseline duration | Total slack | Constraint | Resources | Work | Actual work |
| --- | --- | --- | --- | --- | --- | --- | --- | --- | --- | --- | --- | --- | --- | --- | --- | --- |
| 53 | 1.2.1.6 | **Project Management** | 0.12d | 2008-10-17 A | 2008-10-17 A |  | 100% |  | 2008-10-08 | 2008-10-17 | 6.62d? |  |  |  | 1h | 1h |
| 54 | 1.2.1.6.1 | Iteration Review | 0.12d | 2008-10-17 A | 2008-10-17 A |  | 100% |  | 2008-10-17 | 2008-10-17 | 0.12d |  | start no earlier than 2008-10-17 | Team | 1h | 1h |
| 55 | 1.3 | **Construction** | 8.25d? | 2008-10-21 A | 2008-10-31 | 26 | 91% | 0.75d? | 2008-10-21 | 2008-10-31 | 8.46d? | 0d |  |  | 295.33h | 269.03h |
| 56 | 1.3.1 | **Iteration 1** | 8.25d? | 2008-10-21 A | 2008-10-31 |  | 91% | 0.75d? | 2008-10-21 | 2008-10-31 | 8.46d? | 0d |  |  | 295.33h | 269.03h |
| 57 | 1.3.1.1 | **Analysis and Design** | 6.67d? | 2008-10-21 A | 2008-10-29 A |  | 100% |  | 2008-10-23 | 2008-10-28 | 3.33d? |  |  |  | 32h | 32h |
| 58 | 1.3.1.1.1 | Database Design for storing CTP encrypted information (Group 9) | 2.58d? | 2008-10-23 A | 2008-10-27 A |  | 100% |  | 2008-10-23 | 2008-10-28 | 3.33d? |  |  | Eric [80%] | 16h | 16h |
| 59 | 1.3.1.1.2 | Update use case document for data submission in NCIA | 6.67d? | 2008-10-21 A | 2008-10-29 A |  | 100% |  |  |  |  |  |  | Jennifer [20%]; Jim [10%] | 16h | 16h |
| 60 | 1.3.1.2 | **Implementation** | 8.25d? | 2008-10-21 A | 2008-10-31 A |  | 100% |  | 2008-10-21 | 2008-10-31 | 8.46d? |  |  |  | 90h | 90h |
| 61 | 1.3.1.2.1 | DB Adaptor code change for encrypted tags | 2.5d? | 2008-10-27 A | 2008-10-30 A | 58 | 100% |  | 2008-10-28 | 2008-10-31 | 3.12d? |  |  | Eric [40%] | 8h | 8h |
| 62 | 1.3.1.2.2 | create upgrade script/deployment | 3.12d? | 2008-10-27 A | 2008-10-30 A | 58 | 100% |  | 2008-10-23 | 2008-10-24 | 1.67d? |  |  | Eric [80%] | 20h | 20h |
| 63 | 1.3.1.2.3 | Integrate with I-Response 2 release | 1.25d? | 2008-10-21 A | 2008-10-22 A |  | 100% |  | 2008-10-21 | 2008-10-22 | 1.25d? |  |  | Qinyan [80%] | 8h | 8h |
| 64 | 1.3.1.2.4 | Update the code that allow checking user group permission | 5d? | 2008-10-23 A | 2008-10-29 A |  | 100% |  | 2008-10-23 | 2008-10-29 | 5d? |  |  | Eric [20%] | 8h | 8h |
| 65 | 1.3.1.2.5 | CI Server configuration for CTP | 1.25d? | 2008-10-21 A | 2008-10-24 A |  | 100% |  |  |  |  |  |  | Eric [80%] | 8h | 8h |
| 66 | 1.3.1.2.6 | **Verify Submission filter by collection** | 8.25d? | 2008-10-21 A | 2008-10-31 A |  | 100% |  | 2008-10-21 | 2008-10-31 | 8.25d? |  |  |  | 34h | 34h |
| 67 | 1.3.1.2.6.1 | Add accessible collection for user to selected on verify submission page | 8d? | 2008-10-21 A | 2008-10-30 A |  | 100% |  | 2008-10-21 | 2008-10-30 | 8d? |  |  | Thai [50%] | 32h | 32h |
| 68 | 1.3.1.2.6.2 | Peer Review | 0.25d? | 2008-10-31 A | 2008-10-31 A | 67 | 100% |  | 2008-10-31 | 2008-10-31 | 0.25d? |  |  | Team | 2h | 2h |
| 69 | 1.3.1.2.7 | Fix the DB adaptor code for null instance ID | 0.62d? | 2008-10-23 A | 2008-10-23 A |  | 100% |  |  |  |  |  |  | Eric [80%] | 4h | 4h |
| 70 | 1.3.1.3 | **Test** | 6.67d? | 2008-10-21 A | 2008-10-29 |  | 80% | 1.33d? | 2008-10-21 | 2008-10-28 | 5.77d? | 1.58d |  |  | 135.33h | 112.71h |
| 71 | 1.3.1.3.1 | **CTP/NCIA Database Adaptor DEV Testing/Develop test senarios** | 6.67d? | 2008-10-21 A | 2008-10-29 |  | 80% | 1.33d? | 2008-10-21 | 2008-10-28 | 5.77d? | 1.58d |  | Qinyan [50%]; Thai [40%]; Jim [40%] | 135.33h | 112.71h |
| 72 | 1.3.1.3.1.1 | Test NCIA functionality with CTP data | 6.67d? | 2008-10-21 A | 2008-10-29 A |  | 100% |  | 2008-10-21 | 2008-10-21 | 1d? |  |  | Jennifer [30%] | 16h | 16h |
| 73 | 1.3.1.3.1.2 | CTP Client with MIRC server | 5d? | 2008-10-21 A | 2008-10-27 A |  | 100% |  | 2008-10-21 | 2008-10-21 | 1d? |  |  | Thai [40%] | 16h | 16h |
| 74 | 1.3.1.3.1.3 | Submit XML file via CTP Server | 2.5d? | 2008-10-21 A | 2008-10-23 A |  | 100% |  | 2008-10-21 | 2008-10-21 | 1d? |  |  | Jim [20%] | 4h | 4h |
| 75 | 1.3.1.3.1.4 | submit Zip file via CTP server | 5d? | 2008-10-21 | 2008-10-29 |  |  |  | 2008-10-21 | 2008-10-21 | 1d? | 1.58d |  | Jim [20%] | 8h |  |
| 76 | 1.3.1.3.1.5 | Test submit data from Fieldcenter to CTP | 2d? | 2008-10-21 A | 2008-10-22 A |  | 100% |  | 2008-10-21 | 2008-10-21 | 1d? |  |  | Jim [50%] | 8h | 8h |
| 77 | 1.3.1.3.1.6 | Test two identical CTP client to same CTP server submission | 2.5d? | 2008-10-21 A | 2008-10-23 |  | 90% | 0.25d? | 2008-10-21 | 2008-10-21 | 1d? | 5.75d |  | Jim [20%]; Thai [20%] | 8h | 7.2h |
| 78 | 1.3.1.3.1.7 | anonymization functions | 2.5d? | 2008-10-21 A | 2008-10-23 A |  | 100% |  |  |  |  |  |  | Jennifer [20%] | 4h | 4h |
| 79 | 1.3.1.3.1.8 | Multi-pipeline (CTP clients) test | 0.17d? | 2008-10-21 A | 2008-10-23 A |  | 100% |  |  |  |  |  |  | Thai [50%]; Eric [50%]; Surendra [50%]; Jim [50%]; Jennifer [50%] | 2h | 2h |

| ID | WBS | Task | Duration | Start | Finish | Predecessors | Complete | Remaining | Baseline start | Baseline finish | Baseline duration | Total slack | Free slack | Resources | Work | Actual work |
| --- | --- | --- | --- | --- | --- | --- | --- | --- | --- | --- | --- | --- | --- | --- | --- | --- |
| 80 | 1.3.1.4 | **Environment** | 7.75d? | 2008-10-21 A | 2008-10-30 |  | 91% | 0.7d? | 2008-10-21 | 2008-10-29 | 7d? | 0.5d |  |  | 36h | 32.32h |
| 81 | 1.3.1.4.1 | Merge the branch to trunk | 0.5d? | 2008-10-21 A | 2008-10-21 A |  | 100% |  | 2008-10-21 | 2008-10-21 | 0.5d? |  |  | Team | 4h | 4h |
| 82 | 1.3.1.4.2 | External site installation/upgrade | 5.75d? | 2008-10-23 A | 2008-10-30 |  | 80% | 1.15d? | 2008-10-23 | 2008-10-29 | 5d? | 0.5d |  | Surendra [40%] | 16h | 12.32h |
| 83 | 1.3.1.4.3 | Request DEV tier system for CTP (5004 tier) | 3.17d? | 2008-10-21 A | 2008-10-24 A |  | 100% |  | 2008-10-21 | 2008-10-21 | 1d? |  |  | Jennifer [80%] | 8h | 8h |
| 84 | 1.3.1.4.4 | Request QA tier system for CTP (5004 tier) | 3.33d? | 2008-10-21 A | 2008-10-24 A |  | 100% |  |  |  |  |  |  | Jennifer [30%] | 8h | 8h |
| 85 | 1.3.1.5 | **Project Management** | 0.25d? | 2008-10-29 A | 2008-10-29 A | 70 | 100% |  | 2008-10-21 | 2008-10-21 | 1d? |  |  |  | 2h | 2h |
| 86 | 1.3.1.5.1 | Iteration Review | 0.25d? | 2008-10-29 A | 2008-10-29 A |  | 100% |  | 2008-10-21 | 2008-10-21 | 0.25d? |  |  | Team | 2h | 2h |
| 87 | 1.4 | **Transition** | 33.56d? | 2008-10-31 A | 2008-12-17 | 55 | 77% | 7.7d? | 2008-10-31 | 2008-11-24 | 15.62d? | 0d |  |  | 658h | 480.06h |
| 88 | 1.4.1 | **Iteration 1** | 6.25d? | 2008-10-31 A | 2008-11-10 |  | 85% | 0.96d? | 2008-10-31 | 2008-11-24 | 15.62d? | 15.19d | 0d |  | 189h | 161h |
| 89 | 1.4.1.1 | **Implementation** | 5d? | 2008-10-31 A | 2008-11-07 |  | 88% | 0.61d? | 2008-11-03 | 2008-11-06 | 2.5d? | 16.44d |  |  | 60h | 52h |
| 90 | 1.4.1.1.1 | Defect fix | 4.17d? | 2008-10-31 A | 2008-11-06 |  | 85% | 0.62d? | 2008-11-03 | 2008-11-06 | 2.5d? | 10.96d |  | Eric [30%]; Jim [30%]; Thai [30%]; Qinyan [30%] | 40h | 34h |
| 91 | 1.4.1.1.2 | Improve the gid performance | 5d? | 2008-10-31 A | 2008-11-07 |  | 90% | 0.5d? |  |  |  | 10.13d |  | Thai [50%] | 20h | 18h |
| 92 | 1.4.1.2 | **Deployment** | 1.25d? | 2008-10-31 A | 2008-11-03 A |  | 100% |  | 2008-10-31 | 2008-11-19 | 13.12d? |  |  |  | 8h | 8h |
| 93 | 1.4.1.2.1 | Deployment to QA(NCIA App) | 1.25d? | 2008-10-31 A | 2008-11-03 A | 55 | 100% |  | 2008-10-31 | 2008-11-03 | 1.25d? |  |  | QA [80%] | 8h | 8h |
| 94 | 1.4.1.3 | **Test** | 6.25d? | 2008-10-31 A | 2008-11-10 |  | 90% | 0.62d? |  |  |  | 15.19d |  |  | 40h | 36h |
| 95 | 1.4.1.3.1 | QA Test | 6.25d? | 2008-10-31 A | 2008-11-10 |  | 90% | 0.62d? |  |  |  | 8.88d |  | QA [80%] | 40h | 36h |
| 96 | 1.4.1.4 | **Documentation** | 6.25d? | 2008-10-31 A | 2008-11-10 |  | 73% | 1.69d? |  |  |  | 12.5d |  |  | 70h | 54h |
| 97 | 1.4.1.4.1 | NCIA User Guide and Online help | 6.25d? | 2008-10-31 A | 2008-11-10 A |  | 100% |  |  |  |  |  |  | Jill Hadfield [40%]; Thai [20%] | 30h | 30h |
| 98 | 1.4.1.4.2 | Draft updates to System Installation Guide | 5d? | 2008-10-31 A | 2008-11-07 A |  | 100% |  | 2008-10-31 | 2008-11-10 | 6.25d? |  |  | Thai [30%]; Qinyan [30%] | 24h | 24h |
| 99 | 1.4.1.4.3 | CTP Configuration guide | 4.17d? | 2008-10-31 | 2008-11-06 |  |  |  | 2008-10-21 | 2008-10-24 | 4d? | 6.58d |  | Jim [30%]; Eric [30%] | 16h |  |
| 100 | 1.4.1.5 | **Enviroment** | 3.75d? | 2008-10-31 A | 2008-11-05 A |  | 100% |  |  |  |  |  |  |  | 11h | 11h |
| 101 | 1.4.1.5.1 | Request for Staging/Production CTP Server | 3.75d? | 2008-10-31 A | 2008-11-05 A |  | 100% |  |  |  |  |  |  | Jennifer [10%] | 3h | 3h |
| 102 | 1.4.1.5.2 | External site installation/upgrade | 2.5d? | 2008-10-31 A | 2008-11-04 A |  | 100% |  |  |  |  |  |  | Surendra [40%] | 8h | 8h |
| 103 | 1.4.2 | **Iteration 2** | 18.56d? | 2008-11-10 A | 2008-12-05 | 88 | 88% | 2.23d? |  |  |  | 0d |  |  | 373h | 319.06h |
| 104 | 1.4.2.1 | **Analysis and Design** | 17.62d? | 2008-11-10 A | 2008-12-04 A |  | 100% |  |  |  |  |  |  |  | 78h | 78h |
| 105 | 1.4.2.1.1 | Search by Patient ID | 2.5d? | 2008-11-10 A | 2008-11-12 A |  | 100% |  |  |  |  |  |  | Qinyan [40%] | 8h | 8h |
| 106 | 1.4.2.1.2 | NCIA Imaging suite with NCIA grid service | 6.43d? | 2008-11-20 A | 2008-12-01 A | 111 | 100% |  |  |  |  |  |  | Qinyan [70%] | 36h | 36h |
| 107 | 1.4.2.1.3 | NCIA Analytical service vs Analytical operation | 5d? | 2008-11-25 A | 2008-12-02 A | 120 | 100% |  |  |  |  |  |  | Thai [60%] | 24h | 24h |
| 108 | 1.4.2.1.4 | Secure grid service | 3.12d? | 2008-11-25 A | 2008-12-04 A | 120 | 100% |  |  |  |  |  |  | Eric [40%] | 10h | 10h |

| ID | WBS | Task | Duration | Start | Finish | Predecessors | Complete | Remaining | Baseline start | Baseline finish | Baseline duration | Total slack | Constraint | Resources | Work | Actual work |
| --- | --- | --- | --- | --- | --- | --- | --- | --- | --- | --- | --- | --- | --- | --- | --- | --- |
| 109 | 1.4.2.2 | **Implementation** | 11.67d? | 2008-11-10 A | 2008-11-26 |  | 93% | 0.78d? |  |  |  | 6.9d |  |  | 64h | 61.55h |
| 110 | 1.4.2.2.1 | Defect fix (including resoving issues with AppScan report) | 10.21d? | 2008-11-10 A | 2008-11-26 |  | 90% | 1.02d? |  |  |  | 6.9d |  | Eric [30%]; Jim [30%]; Thai [30%] | 48h | 45.55h |
| 111 | 1.4.2.2.2 | Search by Patient ID | 5d? | 2008-11-13 A | 2008-11-19 A | 105 | 100% |  |  |  |  |  |  | Qinyan [40%] | 16h | 16h |
| 112 | 1.4.2.3 | **Deployment** | 10.31d? | 2008-11-10 A | 2008-11-24 A |  | 100% |  |  |  |  |  |  |  | 26h | 26h |
| 113 | 1.4.2.3.1 | Deployment to QA (CTP) | 0.42d? | 2008-11-10 A | 2008-11-10 A |  | 100% |  |  |  |  |  |  | QA [80%]; Jim [80%]; Eric [80%] | 8h | 8h |
| 114 | 1.4.2.3.2 | Deployment to Stage for RSNA | 2.5d? | 2008-11-19 A | 2008-11-21 A |  | 100% |  |  |  |  |  | start no earlier than 2008-11-19 | system [80%] | 16h | 16h |
| 115 | 1.4.2.3.3 | Deployment to QA (Patient ID) | 0.31d? | 2008-11-24 A | 2008-11-24 A | 111 | 100% |  |  |  |  |  |  | QA [80%] | 2h | 2h |
| 116 | 1.4.2.4 | **Test** | 18.15d? | 2008-11-10 A | 2008-12-05 |  | 77% | 4.12d? | 2008-10-31 | 2008-11-24 | 15.62d? | 0d |  |  | 98h | 74h |
| 117 | 1.4.2.4.1 | QA Test (CTP, others) | 12.5d? | 2008-11-10 A | 2008-12-05 | 115 | 70% | 3.75d? |  |  |  | 0d |  | QA [80%] | 80h | 56h |
| 118 | 1.4.2.4.2 | Request AppScan for CTP on QA | 1.25d? | 2008-11-10 A | 2008-11-12 A | 113 | 100% |  | 2008-11-19 | 2008-11-20 | 0.62d? |  |  | Jennifer [10%] | 1h | 1h |
| 119 | 1.4.2.4.3 | Request AppScan for NCIA on QA | 1.25d? | 2008-11-10 A | 2008-11-13 A | 113 | 100% |  | 2008-11-19 | 2008-11-20 | 0.62d? |  |  | Jennifer [10%] | 1h | 1h |
| 120 | 1.4.2.4.4 | Test Stage Tier for RSNA | 1.5d? | 2008-11-21 A | 2008-11-24 A | 114 | 100% |  |  |  |  |  |  | Team [50%]; Jennifer [20%]; Qinyan [10%]; Thai [20%]; Eric [20%]; Jim [20%] | 16h | 16h |
| 121 | 1.4.2.5 | **Documentation** | 6.36d? | 2008-11-10 A | 2008-11-18 |  | 75% | 1.58d? |  |  |  | 12.21d |  |  | 34h | 26.66h |
| 122 | 1.4.2.5.1 | System Installation Guide | 6.36d? | 2008-11-10 A | 2008-11-18 |  | 85% | 0.95d? | 2008-10-21 | 2008-10-28 | 6d? | 12.21d |  | Eric [30%]; Jennifer [20%]; Surendra [20%] | 30h | 24.66h |
| 123 | 1.4.2.5.2 | Release Note | 2.5d? | 2008-11-10 A | 2008-11-12 |  | 50% | 1.25d? |  |  |  | 9d |  | Jennifer [20%] | 4h | 2h |
| 124 | 1.4.2.6 | **Configuration & Change Management** | 1.25d? | 2008-11-10 A | 2008-11-11 |  | 85% | 0.19d? | 2008-10-31 | 2008-11-10 | 6.25d? | 10.25d |  |  | 1h | 0.85h |
| 125 | 1.4.2.6.1 | Prepare Staging Deployment Request for Systems | 1.25d? | 2008-11-10 A | 2008-11-11 |  | 85% | 0.19d? | 2008-10-31 | 2008-11-03 | 1d? | 10.25d |  | Jennifer [10%] | 1h | 0.85h |
| 126 | 1.4.2.7 | **Enviorment** | 17.25d? | 2008-11-10 A | 2008-12-03 |  | 87% | 2.29d? |  |  |  | 1.31d |  |  | 72h | 52h |
| 127 | 1.4.2.7.1 | External site Installation/upgrade | 5d? | 2008-11-10 A | 2008-11-17 A |  | 100% |  |  |  |  |  |  | Surendra [30%]; Eric [20%] | 16h | 16h |
| 128 | 1.4.2.7.2 | RSNA Conference Set up/Support | 12.31d? | 2008-11-10 A | 2008-11-26 A |  | 100% |  |  |  |  |  |  | Eric [10%]; Jim [10%]; Jennifer [10%]; Thai [10%] | 16h | 16h |
| 129 | 1.4.2.7.3 | AppScan/Firewall Exception for CTP Server | 6.25d? | 2008-11-21 A | 2008-12-03 | 114 | 50% | 3.12d? |  |  |  | 1.31d |  | system [80%] | 40h | 20h |
| 130 | 1.4.3 | **Iteration 3** | 8.75d? | 2008-12-05 | 2008-12-17 | 103 |  |  |  |  |  | 0d |  |  | 96h |  |
| 131 | 1.4.3.1 | **Analysis and Design** | 7.14d? | 2008-12-05 | 2008-12-16 |  |  |  |  |  |  | 1.61d |  |  | 40h |  |
| 132 | 1.4.3.1.1 | BioImaging with NCIA grid service | 7.14d? | 2008-12-05 | 2008-12-16 |  |  |  |  |  |  | 1.61d |  | Qinyan [70%] | 40h |  |

| ID | WBS | Task | Duration | Start | Finish | Predecessors | Baseline start | Baseline finish | Baseline duration | Total slack | Resources | Work |
| --- | --- | --- | --- | --- | --- | --- | --- | --- | --- | --- | --- | --- |
| 133 | 1.4.3.2 | **Deployment** | 8.75d? | 2008-12-05 | 2008-12-17 |  |  |  |  | 0d |  | 32h |
| 134 | 1.4.3.2.1 | Staging Deployment (NCIA App, CTP) | 2.5d? | 2008-12-05 | 2008-12-09 |  |  |  |  | 0d | system [80%] | 16h |
| 135 | 1.4.3.2.2 | Production Deployment (NCIA App, CTP) | 2.5d? | 2008-12-15 | 2008-12-17 | 137 |  |  |  | 0d | system [80%] | 16h |
| 136 | 1.4.3.3 | **Enviroment** | 3.75d? | 2008-12-09 | 2008-12-15 |  |  |  |  | 0d |  | 24h |
| 137 | 1.4.3.3.1 | Post-deployment verification on Stage | 3.75d? | 2008-12-09 | 2008-12-15 | 134 | 2008-11-19 | 2008-11-24 | 2.5d? | 0d | Eric [20%]; Jim [20%]; Thai [20%]; Qinyan [30%] | 24h |
