# reengineeringPlanfor4.0

Schedule from MS Project, 2008-12-16 to 2009-05-13, A marks actual dates.
NCI

## Calendars

- Standard: Mon-Fri 08:00-12:00, 13:00-17:00; Sat-Sun off.

## Resources

| Resource |
| --- |
| Team |
| Jennifer |
| Jim |
| Qinyan |
| Eric |
| QA |
| Thai |
| Systems |
| Anand |
| Sudha |
| John F |
| Jill Hadfield |
| 8 |
| E |
| 100 |
| 60 |
| caIntegrator2 |
| Jill |
| Jill Hadfiled |
| Jill Hadfied |
| System |
| Brian |
| Justin |
| BDA |

## Schedule

| ID | WBS | Task | Duration | Start | Finish | Predecessors | Complete | Remaining | Baseline start | Baseline finish | Baseline duration | Total slack | Constraint | Resources | Work | Actual work |
| --- | --- | --- | --- | --- | --- | --- | --- | --- | --- | --- | --- | --- | --- | --- | --- | --- |
| 1 | 1 | **NCIA 4.2 release** | 106.44d? | 2008-12-16 A | 2009-05-13 |  | 86% | 14.87d? | 2008-09-25 | 2008-11-24 | 42.08d? | 0d |  |  | 2090.8h | 1810h |
| 2 | 1.1 | **Inception** | 18.5d? | 2008-12-16 A | 2009-01-09 A |  | 100% |  | 2008-09-25 | 2008-10-08 | 9.5d? |  | start no earlier than 2008-12-16 |  | 265h | 265h |
| 3 | 1.1.1 | **Iteration 1** | 18.5d? | 2008-12-16 A | 2009-01-09 A |  | 100% |  | 2008-09-25 | 2008-10-08 | 9.5d? |  |  |  | 265h | 265h |
| 4 | 1.1.1.1 | **Requirements** | 11d? | 2008-12-16 A | 2008-12-30 A |  | 100% |  | 2008-09-29 | 2008-10-03 | 5d |  |  |  | 24h | 24h |
| 5 | 1.1.1.1.1 | Collect data basket requirement | 14.54h | 2008-12-16 A | 2008-12-17 A |  | 100% |  | 2008-09-29 | 2008-10-03 | 40h |  |  | Jennifer [20%]; Jim [20%]; Qinyan [20%]; Eric [20%]; Thai [20%] | 8h | 8h |
| 6 | 1.1.1.1.2 | Gather use cases for AIM service | 10d? | 2008-12-16 A | 2008-12-30 A |  | 100% |  |  |  |  |  |  | Qinyan [20%] | 16h | 16h |
| 7 | 1.1.1.2 | **Analysis and Design** | 17d? | 2008-12-16 A | 2009-01-07 A |  | 100% |  | 2008-09-29 | 2008-10-07 | 6.5d? |  |  |  | 102h | 102h |
| 8 | 1.1.1.2.1 | Analyze/Design the approach for merge updateablemodel and domain model | 5d? | 2008-12-16 A | 2008-12-22 A |  | 100% |  |  |  |  |  |  | Eric [20%] | 8h | 8h |
| 9 | 1.1.1.2.2 | Analysis the feasibility to implement Instance Level Security in NCIA | 4d? | 2008-12-23 A | 2008-12-31 A | 8 | 100% |  | 2008-10-03 | 2008-10-07 | 2.5d? |  |  | Eric [50%] | 16h | 16h |
| 10 | 1.1.1.2.3 | Analysis the discrepancy between LIDC annotation and AIM Model | 14d? | 2008-12-16 A | 2009-01-07 A |  | 100% |  |  |  |  |  |  | Qinyan [53.6%] | 60h | 60h |
| 11 | 1.1.1.2.4 | Investigate the option of NCIA data basket service | 5.14d? | 2008-12-23 A | 2009-01-05 A | 5, 24 | 100% |  |  |  |  |  |  | Jim [70%] | 16h | 16h |
| 12 | 1.1.1.2.5 | Draft high level use case for NCIA data basket service | 0.31d | 2009-01-06 A | 2009-01-06 A | 11 | 100% |  |  |  |  |  |  | Jennifer [80%] | 2h | 2h |
| 13 | 1.1.1.3 | **Implementation** | 18.5d? | 2008-12-16 A | 2009-01-09 A |  | 100% |  | 2008-09-29 | 2008-10-08 | 7.5d? |  |  |  | 95h | 95h |
| 14 | 1.1.1.3.1 | Delete LIDC annotation files/database records | 2.5d? | 2008-12-16 A | 2008-12-18 A |  | 100% |  | 2008-09-29 | 2008-10-03 | 5d? |  |  | Jennifer [20%] | 4h | 4h |
| 15 | 1.1.1.3.2 | Ananlytical Operation with list of patient id, study id, and series id | 14.58d? | 2008-12-16 A | 2009-01-08 A |  | 100% |  |  |  |  |  |  | Thai [60%] | 70h | 70h |
| 16 | 1.1.1.3.3 | Remove Browser check, add warning message to the user | 1.25d? | 2009-01-08 A | 2009-01-09 A | 10 | 100% |  |  |  |  |  |  | Qinyan [40%] | 4h | 4h |
| 17 | 1.1.1.3.4 | build script change for browser check and selenium test | 0.25d? | 2009-01-09 A | 2009-01-09 A | 16 | 100% |  |  |  |  |  |  | Eric [50%] | 1h | 1h |
| 18 | 1.1.1.3.5 | **Merge updateabledomain with that of ncia-ctp model** | 4d? | 2009-01-05 A | 2009-01-08 A | 9 | 100% |  |  |  |  |  |  |  | 16h | 16h |
| 19 | 1.1.1.3.5.1 | Rename updateabledomain | 1d? | 2009-01-05 A | 2009-01-05 A |  | 100% |  |  |  |  |  |  | Eric [50%] | 4h | 4h |
| 20 | 1.1.1.3.5.2 | Merge two model in one and update the build script | 2d? | 2009-01-06 A | 2009-01-07 A | 19 | 100% |  |  |  |  |  |  | Eric [50%] | 8h | 8h |
| 21 | 1.1.1.3.5.3 | Regression test | 1d? | 2009-01-08 A | 2009-01-08 A | 20 | 100% |  |  |  |  |  |  | Eric [50%] | 4h | 4h |
| 22 | 1.1.1.4 | **Configuration & Change Management** | 5d? | 2008-12-16 A | 2008-12-22 A |  | 100% |  | 2008-10-02 | 2008-10-02 | 0d |  |  |  | 17h | 17h |
| 23 | 1.1.1.4.1 | Create branch for intermedia grid service release to support caIntegrator2 Jan Beta release | 5h | 2008-12-16 A | 2008-12-16 A |  | 100% |  | 2008-10-02 | 2008-10-02 | 0h |  |  | Jennifer [20%] | 1h | 1h |
| 24 | 1.1.1.4.2 | NCIA 4.1 documentation completion (CTP) | 5d? | 2008-12-16 A | 2008-12-22 A |  | 100% |  |  |  |  |  |  | Jim [40%] | 16h | 16h |

| ID | WBS | Task | Duration | Start | Finish | Predecessors | Complete | Remaining | Baseline start | Baseline finish | Baseline duration | Total slack | Free slack | Constraint | Resources | Work | Actual work |
| --- | --- | --- | --- | --- | --- | --- | --- | --- | --- | --- | --- | --- | --- | --- | --- | --- | --- |
| 25 | 1.1.1.5 | **Project Management** | 18d | 2008-12-16 A | 2009-01-08 A |  | 100% |  | 2008-09-25 | 2008-10-08 | 9.12d |  |  |  |  | 27h | 27h |
| 26 | 1.1.1.5.1 | Complete 4.2 Scope document draft | 20h | 2008-12-16 A | 2008-12-18 A |  | 100% |  | 2008-09-25 | 2008-09-29 | 20h |  |  |  | Jennifer [10%] | 2h | 2h |
| 27 | 1.1.1.5.2 | Complete 4.2 MS Project plan Elaboration Phase | 60h | 2008-12-16 A | 2008-12-29 A |  | 100% |  | 2008-10-01 | 2008-10-07 | 40h |  |  |  | Jennifer [40%] | 24h | 24h |
| 28 | 1.1.1.5.3 | Inception 1 Iterative Review with customer (Use case doc, scope doc, project plan) | 1h | 2009-01-08 A | 2009-01-08 A |  | 100% |  | 2008-10-08 | 2008-10-08 | 1h |  |  | finish no earlier than 2009-01-08 | Team | 1h | 1h |
| 29 | 1.2 | **Elaboration** | 17.79d? | 2009-01-09 A | 2009-02-04 | 2 | 92% | 1.38d? | 2008-10-08 | 2008-10-20 | 8.5d? | 0d |  |  |  | 394h | 372h |
| 30 | 1.2.1 | **Iteration 1** | 17.79d? | 2009-01-09 A | 2009-02-04 |  | 92% | 1.38d? | 2008-10-08 | 2008-10-20 | 8.5d? | 0d |  |  |  | 394h | 372h |
| 31 | 1.2.1.1 | **Requirement** | 5d? | 2009-01-09 A | 2009-01-16 |  | 41% | 2.97d? |  |  |  | 12.79d |  |  |  | 20h | 8.6h |
| 32 | 1.2.1.1.1 | Review UCD new UI Design, determine the scope | 2.86d? | 2009-01-09 | 2009-01-14 |  |  |  |  |  |  | 1.64d |  |  | Jennifer [10%]; Eric [10%]; Thai [10%]; Qinyan [10%]; Jim [10%] | 8h |  |
| 33 | 1.2.1.1.2 | Draft use cases (workflow) for anonymous user | 2.5d? | 2009-01-14 A | 2009-01-16 | 63 | 95% | 0.12d? |  |  |  | 11.68d | 0d |  | Thai [40%] | 8h | 7.6h |
| 34 | 1.2.1.1.3 | Collect requirement for file system backup / CTP storage structure | 1.25d? | 2009-01-09 A | 2009-01-12 |  | 25% | 0.94d? |  |  |  | 16.54d |  |  | Jim [20%]; Eric [20%] | 4h | 1h |
| 35 | 1.2.1.2 | **Analysis and Design** | 17.67d? | 2009-01-09 A | 2009-02-04 |  | 94% | 1.02d? | 2008-10-08 | 2008-10-16 | 5.58d? | 0d |  |  |  | 306h | 296.4h |
| 36 | 1.2.1.2.1 | **Desgin the strategy for JSF 1.2 upgrade** | 15.55d? | 2009-01-09 A | 2009-02-02 A |  | 100% |  |  |  |  |  |  |  |  | 84h | 84h |
| 37 | 1.2.1.2.1.1 | Investigate facelet, jsf templating | 5.36d? | 2009-01-09 A | 2009-01-16 A |  | 100% |  |  |  |  |  |  |  | Eric [70%] | 30h | 30h |
| 38 | 1.2.1.2.1.2 | Investigate the Impact on component and tags | 8.57d? | 2009-01-16 A | 2009-01-30 A | 37 | 100% |  |  |  |  |  |  |  | Eric [35%] | 24h | 24h |
| 39 | 1.2.1.2.1.3 | Investigate the impact on tomahawk | 8.57d? | 2009-01-16 A | 2009-01-30 A | 37 | 100% |  |  |  |  |  |  |  | Eric [35%] | 24h | 24h |
| 40 | 1.2.1.2.1.4 | Develop JSF/html codeing standard | 10d? | 2009-01-09 A | 2009-01-26 A |  | 100% |  |  |  |  |  |  |  | Eric [5%] | 4h | 4h |
| 41 | 1.2.1.2.1.5 | Design Review | 0.62d? | 2009-01-30 A | 2009-02-02 A | 38, 39 | 100% |  |  |  |  |  |  |  | Eric [10%]; Jim [10%]; Thai [10%]; Qinyan [10%] | 2h | 2h |
| 42 | 1.2.1.2.2 | **Data Basket Service** | 14.75d? | 2009-01-09 A | 2009-01-30 |  | 91% | 1.34d? |  |  |  | 2.92d |  |  |  | 74h | 70h |
| 43 | 1.2.1.2.2.1 | Design Request Interface | 1.43d? | 2009-01-09 A | 2009-01-12 A |  | 100% |  |  |  |  |  |  |  | Jim [70%] | 8h | 8h |
| 44 | 1.2.1.2.2.2 | Draft request Interface Specification for caIntegrator to confirm | 0.36d? | 2009-01-12 A | 2009-01-13 A | 43 | 100% |  |  |  |  |  |  |  | Jim [70%] | 2h | 2h |
| 45 | 1.2.1.2.2.3 | Investigate and prototype the necessary backend change | 10.71d? | 2009-01-13 A | 2009-01-28 A | 44 | 100% |  |  |  |  |  |  |  | Jim [70%] | 60h | 60h |
| 46 | 1.2.1.2.2.4 | Design review | 1.25d? | 2009-01-29 | 2009-01-30 | 45 |  |  |  |  |  | 2.92d |  |  | Eric [10%]; Jim [10%]; Thai [10%]; Qinyan [10%] | 4h |  |
| 47 | 1.2.1.2.3 | **Anonymous user data access** | 10.62d? | 2009-01-16 A | 2009-02-02 | 33 | 91% | 0.98d? |  |  |  | 2.04d | 0d |  |  | 42h | 38.4h |
| 48 | 1.2.1.2.3.1 | Home page mock up (high risk, to get users JF's consent) | 8d? | 2009-01-16 A | 2009-01-28 |  | 80% | 1.6d? |  |  |  | 4.67d |  |  | Thai [25%] | 16h | 12.8h |
| 49 | 1.2.1.2.3.2 | Security filter design modification, be aware of the user_id/email address | 8d? | 2009-01-16 A | 2009-01-28 A |  | 100% |  |  |  |  |  |  |  | Thai [25%] | 16h | 16h |
| 50 | 1.2.1.2.3.3 | 3GB+ download for anonymous user (invovle databasket page change) | 2d? | 2009-01-28 A | 2009-01-30 A | 48, 49 | 100% |  |  |  |  |  |  |  | Thai [50%] | 8h | 8h |
| 51 | 1.2.1.2.3.4 | Design Review | 0.62d? | 2009-01-30 A | 2009-02-02 | 50 | 80% | 0.12d? |  |  |  | 2.04d |  |  | Eric [10%]; Jim [10%]; Thai [10%]; Qinyan [10%] | 2h | 1.6h |

| ID | WBS | Task | Type | Duration | Start | Finish | Predecessors | Complete | Remaining | Baseline start | Baseline finish | Baseline duration | Total slack | Free slack | Resources | Work | Actual work |
| --- | --- | --- | --- | --- | --- | --- | --- | --- | --- | --- | --- | --- | --- | --- | --- | --- | --- |
| 52 | 1.2.1.2.4 | **OOM** |  | 6.83d? | 2009-01-09 A | 2009-01-20 |  | 64% | 2.44d? |  |  |  | 10.83d |  |  | 26h | 24h |
| 53 | 1.2.1.2.4.1 | Out of memory with http download fix(sequence diagram) |  | 3.75d? | 2009-01-09 A | 2009-01-15 A |  | 100% |  |  |  |  |  |  | Eric [80%] | 24h | 24h |
| 54 | 1.2.1.2.4.2 | Design Review |  | 2.08d? | 2009-01-15 | 2009-01-20 | 53 |  |  |  |  |  | 10.83d |  | Qinyan [10%]; Eric [10%] | 2h |  |
| 55 | 1.2.1.2.5 | **Time Point UI** |  | 0d? | 2009-02-02 | 2009-02-02 | 47 |  |  |  |  |  | 2.04d |  |  |  |  |
| 56 | 1.2.1.2.5.1 | prototyping and analyasis design for UI change | milestone | 0d? | 2009-02-02 | 2009-02-02 |  |  |  |  |  |  | 2.04d |  |  |  |  |
| 57 | 1.2.1.2.6 | **LIDC/AIM Gap Analysis** |  | 17.67d? | 2009-01-09 A | 2009-02-04 A |  | 100% |  |  |  |  |  |  |  | 80h | 80h |
| 58 | 1.2.1.2.6.1 | Create a gap analysis document |  | 16.67d? | 2009-01-09 A | 2009-02-04 A |  | 100% |  |  |  |  |  |  | Qinyan [60%] | 80h | 80h |
| 59 | 1.2.1.3 | **Implementation** |  | 16.71d? | 2009-01-09 A | 2009-02-03 A |  | 100% |  | 2008-10-08 | 2008-10-20 | 8.5d? |  |  |  | 61h | 61h |
| 60 | 1.2.1.3.1 | **JSF 1.2 upgrade** |  | 1.79d? | 2009-01-30 A | 2009-02-03 A | 38 | 100% |  |  |  |  |  |  |  | 14h | 14h |
| 61 | 1.2.1.3.1.1 | update build script (ivy, etc) |  | 1.25d? | 2009-01-30 A | 2009-02-02 A |  | 100% |  |  |  |  |  |  | Eric [40%] | 4h | 4h |
| 62 | 1.2.1.3.1.2 | Alter tags/components as necessary |  | 1.79d? | 2009-01-30 A | 2009-02-03 A |  | 100% |  |  |  |  |  |  | Eric [70%] | 10h | 10h |
| 63 | 1.2.1.3.2 | **Grid Service Analytical Operations with hierachical structure zipping** |  | 2.5d? | 2009-01-09 A | 2009-01-13 A |  | 100% |  |  |  |  |  |  |  | 14h | 14h |
| 64 | 1.2.1.3.2.1 | Unit Test |  | 2.5d? | 2009-01-09 A | 2009-01-13 A |  | 100% |  |  |  |  |  |  | Thai [60%] | 12h | 12h |
| 65 | 1.2.1.3.2.2 | Code Review |  | 0.83d? | 2009-01-09 A | 2009-01-12 A |  | 100% |  |  |  |  |  |  | Eric [10%]; Thai [20%] | 2h | 2h |
| 66 | 1.2.1.3.3 | Remove Browser check, add warning message to the user |  | 2d? | 2009-01-09 A | 2009-01-13 A |  | 100% |  |  |  |  |  |  | Qinyan [50%] | 8h | 8h |
| 67 | 1.2.1.3.4 | build script change for browser check and selenium test |  | 0.21d? | 2009-01-13 A | 2009-01-13 A | 66 | 100% |  |  |  |  |  |  | Eric [60%] | 1h | 1h |
| 68 | 1.2.1.3.5 | **BDA Integration** |  | 11d? | 2009-01-09 A | 2009-01-26 A |  | 100% |  |  |  |  |  |  |  | 24h | 24h |
| 69 | 1.2.1.3.5.1 | Build script update to 0.9 |  | 3.33d? | 2009-01-09 A | 2009-01-14 A |  | 100% |  |  |  |  |  |  | Eric [30%] | 8h | 8h |
| 70 | 1.2.1.3.5.2 | GUI installer update |  | 6.67d? | 2009-01-14 A | 2009-01-26 A | 69 | 100% |  |  |  |  |  |  | Eric [30%] | 16h | 16h |
| 71 | 1.2.1.4 | **Configuration & Change Management** |  | 0.62d? | 2009-01-13 A | 2009-01-14 |  | 99% | 0d? | 2008-10-08 | 2008-10-10 | 2.16d? | 14.67d |  |  | 2h | 2h |
| 72 | 1.2.1.4.1 | Deploy grid service on Dev |  | 0.62d? | 2009-01-14 A | 2009-01-14 A | 63 | 100% |  |  |  |  |  |  | Thai [40%] | 2h | 2h |
| 73 | 1.2.1.4.2 | Deploy grid service on QA (no longer valid) | milestone | 0d? | 2009-01-13 | 2009-01-13 | 63 |  |  |  |  |  | 15.29d | 0d |  |  |  |
| 74 | 1.2.1.4.3 | Deploy grid service on Stage (no longer valid) | milestone | 0d? | 2009-01-13 | 2009-01-13 | 80 |  |  |  |  |  | 15.29d |  |  |  |  |
| 75 | 1.2.1.5 | **Environment** |  | 2.5d? | 2009-01-09 A | 2009-01-13 A |  | 100% |  | 2008-10-08 | 2008-10-14 | 4d? |  |  |  | 4h | 4h |
| 76 | 1.2.1.5.1 | Setup to use UPT 4.0 on DEV and QA tier |  | 2.5d? | 2009-01-09 A | 2009-01-13 A |  | 100% |  |  |  |  |  |  | Jennifer [20%] | 4h | 4h |
| 77 | 1.2.1.5.2 | developer upgrade work environment (Jboss, JSP version, JSF version) |  | 1d? | 2009-01-09 A | 2009-01-12 A |  | 100% |  |  |  |  |  |  |  |  |  |

| ID | WBS | Task | Type | Duration | Start | Finish | Predecessors | Complete | Remaining | Baseline start | Baseline finish | Baseline duration | Total slack | Free slack | Constraint | Resources | Work | Actual work |
| --- | --- | --- | --- | --- | --- | --- | --- | --- | --- | --- | --- | --- | --- | --- | --- | --- | --- | --- |
| 78 | 1.2.1.6 | **Testing (no longer valid)** |  | 0.62d? | 2009-01-13 | 2009-01-14 |  |  |  | 2008-10-08 | 2008-10-15 | 5d? | 14.67d |  |  |  |  |  |
| 79 | 1.2.1.6.1 | caIntegrator2 Test on grid service on Dev, QA | milestone | 0d? | 2009-01-14 | 2009-01-14 | 72 |  |  |  |  |  | 14.67d |  |  | caIntegrator2 |  |  |
| 80 | 1.2.1.6.2 | QA test Grid service analytical operations and returning zip object | milestone | 0d? | 2009-01-13 | 2009-01-13 | 73 |  |  |  |  |  | 15.29d | 0d |  | QA [80%] |  |  |
| 81 | 1.2.1.7 | **Project Management** |  | 0.12d | 2009-02-04 | 2009-02-04 | 35 |  |  | 2008-10-08 | 2008-10-17 | 6.62d? | 0d |  |  |  | 1h |  |
| 82 | 1.2.1.7.1 | Iteration Review (use cases, sequence diagram, design review) | milestone | 0.12d | 2009-02-04 | 2009-02-04 |  |  |  | 2008-10-17 | 2008-10-17 | 0.12d | 0d |  | start no earlier than 2008-10-17 |  | 1h |  |
| 83 | 1.3 | **Construction** |  | 41.75d? | 2009-02-04 A | 2009-04-03 | 29 | 91% | 3.62d? | 2008-10-21 | 2008-10-31 | 8.46d? | 0d |  |  |  | 1059h | 995h |
| 84 | 1.3.1 | **Iteration 1** |  | 18.53d? | 2009-02-04 A | 2009-03-02 |  | 90% | 1.8d? | 2008-10-21 | 2008-10-31 | 8.46d? | 0d |  |  |  | 445h | 433h |
| 85 | 1.3.1.1 | **Requirement** |  | 15d? | 2009-02-09 | 2009-02-27 |  |  |  |  |  |  | 0.82d |  |  |  | 12h |  |
| 86 | 1.3.1.1.1 | Advance search on additional DICOM tags |  | 15d? | 2009-02-09 | 2009-02-27 |  |  |  |  |  |  | 0.82d |  |  | Jennifer [10%] | 12h |  |
| 87 | 1.3.1.2 | **Analysis and Design** |  | 15.83d? | 2009-02-04 A | 2009-02-26 A |  | 100% |  | 2008-10-23 | 2008-10-28 | 3.33d? |  |  |  |  | 98h | 98h |
| 88 | 1.3.1.2.1 | prototyping and analyasis design for UI change (Time Point) |  | 9.38d? | 2009-02-04 A | 2009-02-17 A |  | 100% |  |  |  |  |  |  |  | Thai [10%]; Jennifer [10%]; Eric [10%] | 16h | 16h |
| 89 | 1.3.1.2.2 | CTP Storage structure design to accommodate system back requirement | milestone | 0d? | 2009-02-04 A | 2009-02-04 A |  | 100% |  |  |  |  |  |  |  | Eric [10%]; Jim [10%] |  |  |
| 90 | 1.3.1.2.3 | Analysis and Design for grid service operation -- get patient's nth study images |  | 6d? | 2009-02-04 A | 2009-02-12 A |  | 100% |  |  |  |  |  |  |  | Thai [20%] | 8h | 8h |
| 91 | 1.3.1.2.4 | Integrate NCIA service and AIM service |  | 12.5d? | 2009-02-04 A | 2009-02-20 A |  | 100% |  |  |  |  |  |  |  | Qinyan [50%] | 50h | 50h |
| 92 | 1.3.1.2.5 | Investigate the MAX tool for LIDC/AIM conversion |  | 3.33d? | 2009-02-20 A | 2009-02-26 A | 91 | 100% |  |  |  |  |  |  |  | Qinyan [60%] | 16h | 16h |
| 93 | 1.3.1.2.6 | Analysis and Design the pop up image thumbnail viewer for the link on data basket |  | 1.67d? | 2009-02-20 A | 2009-02-24 A | 106 | 100% |  |  |  |  |  |  |  | Jim [40%]; Eric [20%] | 8h | 8h |
| 94 | 1.3.1.3 | **Implementation** |  | 17.65d? | 2009-02-04 A | 2009-02-27 A |  | 100% |  | 2008-10-21 | 2008-10-31 | 8.46d? |  |  |  |  | 290h | 290h |
| 95 | 1.3.1.3.1 | **JSF 1.2 Upgrade** |  | 8.57d? | 2009-02-04 A | 2009-02-16 A |  | 100% |  |  |  |  |  |  |  |  | 48h | 48h |
| 96 | 1.3.1.3.1.1 | Alter tags/components as necessary |  | 2.86d? | 2009-02-04 A | 2009-02-09 A |  | 100% |  |  |  |  |  |  |  | Eric [70%] | 16h | 16h |
| 97 | 1.3.1.3.1.2 | convert tile to facelet and Move each page to conform standard (remove verbatim and add doctype) |  | 4.29d? | 2009-02-09 A | 2009-02-13 A | 96 | 100% |  |  |  |  |  |  |  | Eric [70%] | 24h | 24h |
| 98 | 1.3.1.3.1.3 | Regressional Test |  | 1.43d? | 2009-02-13 A | 2009-02-16 A | 97 | 100% |  |  |  |  |  |  |  | Eric [70%] | 8h | 8h |
| 99 | 1.3.1.3.2 | **OOM issue with <3GB download** |  | 4.08d? | 2009-02-16 A | 2009-02-20 A | 95 | 100% |  |  |  |  |  |  |  |  | 18h | 18h |
| 100 | 1.3.1.3.2.1 | Implementation |  | 3.33d? | 2009-02-16 A | 2009-02-20 A |  | 100% |  |  |  |  |  |  |  | Eric [60%] | 16h | 16h |
| 101 | 1.3.1.3.2.2 | code review |  | 0.75d? | 2009-02-20 A | 2009-02-20 A | 100 | 100% |  |  |  |  |  |  |  | Eric [20%]; Thai [20%] | 2h | 2h |
| 102 | 1.3.1.3.3 | Upgrade to BDA to improve external cancer center upgrade process |  | 5d? | 2009-02-20 A | 2009-02-27 A | 99 | 100% |  |  |  |  |  |  |  | Eric [50%] | 20h | 20h |

| ID | WBS | Task | Type | Duration | Start | Finish | Predecessors | Complete | Baseline start | Baseline finish | Baseline duration | Constraint | Resources | Work | Actual work |
| --- | --- | --- | --- | --- | --- | --- | --- | --- | --- | --- | --- | --- | --- | --- | --- |
| 103 | 1.3.1.3.4 | **Data Basket Service** |  | 17.19d? | 2009-02-04 A | 2009-02-27 A |  | 100% |  |  |  |  |  | 94h | 94h |
| 104 | 1.3.1.3.4.1 | Implementation on branch |  | 7.81d? | 2009-02-04 A | 2009-02-16 A |  | 100% |  |  |  |  | Jim [80%] | 50h | 50h |
| 105 | 1.3.1.3.4.2 | unit test |  | 2.71d? | 2009-02-16 A | 2009-02-18 A | 104 | 100% |  |  |  |  | Jim [80%] | 16h | 16h |
| 106 | 1.3.1.3.4.3 | code review |  | 1.67d? | 2009-02-18 A | 2009-02-20 A | 105 | 100% |  |  |  |  | Jim [60%] | 8h | 8h |
| 107 | 1.3.1.3.4.4 | merge to trunk after JSF upgrade done |  | 0.83d? | 2009-02-16 A | 2009-02-17 A | 95 | 100% |  |  |  |  | Jim [60%] | 4h | 4h |
| 108 | 1.3.1.3.4.5 | Add "View Image Series" link on Data basket Page |  | 3.33d? | 2009-02-24 A | 2009-02-27 A | 93 | 100% |  |  |  |  | Jim [60%] | 16h | 16h |
| 109 | 1.3.1.3.5 | **NCIA Rename to NBIA** |  | 13.33d? | 2009-02-09 A | 2009-02-26 A |  | 100% |  |  |  |  |  | 34h | 34h |
| 110 | 1.3.1.3.5.1 | Implement configurable NCI Logo |  | 13.33d? | 2009-02-09 A | 2009-02-26 A |  | 100% |  |  |  |  | Jennifer [15%] | 16h | 16h |
| 111 | 1.3.1.3.5.2 | Replace NCIA Logo |  | 5d? | 2009-02-09 A | 2009-02-13 A |  | 100% |  |  |  |  | Jennifer [5%] | 2h | 2h |
| 112 | 1.3.1.3.5.3 | Replace "NCIA"/"National Cancer Image Archive" content in NCIA application UI |  | 10d? | 2009-02-09 A | 2009-02-20 A |  | 100% |  |  |  |  | Jennifer [20%] | 16h | 16h |
| 113 | 1.3.1.3.6 | **Anonymous user public data access** |  | 4d? | 2009-02-19 A | 2009-02-25 A | 115 | 100% |  |  |  |  |  | 16h | 16h |
| 114 | 1.3.1.3.6.1 | Home page change |  | 4d? | 2009-02-19 A | 2009-02-25 A |  | 100% |  |  |  |  | Thai [50%] | 16h | 16h |
| 115 | 1.3.1.3.7 | **Grid Service for getting patient's nth study images** |  | 11.67d? | 2009-02-04 A | 2009-02-19 A |  | 100% |  |  |  |  |  | 44h | 44h |
| 116 | 1.3.1.3.7.1 | Grid service implementation |  | 6d? | 2009-02-04 A | 2009-02-12 A |  | 100% |  |  |  |  | Thai [50%] | 24h | 24h |
| 117 | 1.3.1.3.7.2 | unit test |  | 4d? | 2009-02-12 A | 2009-02-18 A | 116 | 100% |  |  |  |  | Thai [50%] | 16h | 16h |
| 118 | 1.3.1.3.7.3 | code review |  | 1.67d? | 2009-02-18 A | 2009-02-19 A | 117 | 100% |  |  |  |  | Thai [20%]; Jim [20%] | 4h | 4h |
| 119 | 1.3.1.3.8 | Fix the image visualization for image submission via CTP |  | 10d? | 2009-02-04 A | 2009-02-18 A |  | 100% |  |  |  |  | Qinyan [20%] | 16h | 16h |
| 120 | 1.3.1.4 | **Configuration & Change Management** |  | 18.28d? | 2009-02-04 A | 2009-03-02 A |  | 100% | 2008-10-21 | 2008-10-29 | 7d? |  |  | 43h | 43h |
| 121 | 1.3.1.4.1 | Create QA Tag 1 with JSF upgrade, Data basket, OOM | milestone | 0.62d? | 2009-02-27 A | 2009-03-02 A | 94 | 100% |  |  |  |  | Jennifer [40%] | 2h | 2h |
| 122 | 1.3.1.4.2 | Request AppScan on Dev |  | 0.31d? | 2009-02-27 A | 2009-03-02 A | 94 | 100% |  |  |  |  | Jennifer [40%] | 1h | 1h |
| 123 | 1.3.1.4.3 | Setting up OAI NCIA instance (hardware is not ready) |  | 7.5d? | 2009-02-17 A | 2009-02-26 A |  | 100% |  |  |  | start no earlier than 2009-02-17 | Jennifer [20%]; Eric [20%] | 24h | 24h |
| 124 | 1.3.1.4.4 | External NCIA instance support |  | 10d? | 2009-02-04 A | 2009-02-18 A |  | 100% |  |  |  |  | Eric [10%]; Jim [10%] | 16h | 16h |
| 125 | 1.3.1.5 | **Project Management** |  | 0.25d? | 2009-03-02 A | 2009-03-02 A | 120 | 100% | 2008-10-21 | 2008-10-21 | 1d? |  |  | 2h | 2h |
| 126 | 1.3.1.5.1 | Iteration Review (Deliverable - tag, UI mockup) |  | 0.25d? | 2009-03-02 A | 2009-03-02 A |  | 100% | 2008-10-21 | 2008-10-21 | 0.25d? |  | Team | 2h | 2h |

| ID | WBS | Task | Duration | Start | Finish | Predecessors | Complete | Remaining | Total slack | Resources | Work | Actual work |
| --- | --- | --- | --- | --- | --- | --- | --- | --- | --- | --- | --- | --- |
| 127 | 1.3.2 | **Iteration 2** | 23.22d? | 2009-03-02 A | 2009-04-03 | 84 | 92% | 1.78d? | 0d |  | 614h | 562h |
| 128 | 1.3.2.1 | **Analysis and Design** | 15.5d? | 2009-03-02 A | 2009-03-24 |  | 72% | 4.27d? | 7.72d |  | 120h | 92h |
| 129 | 1.3.2.1.1 | Investigate the MAX tool for LIDC/AIM conversion | 6.25d? | 2009-03-02 A | 2009-03-11 A |  | 100% |  |  | Qinyan [80%] | 40h | 40h |
| 130 | 1.3.2.1.2 | Investigate the conversion from Vasari annotation to AIM | 6.25d? | 2009-03-11 A | 2009-03-24 | 129 | 50% | 3.12d? | 7.72d | Qinyan [80%] | 40h | 20h |
| 131 | 1.3.2.1.3 | Prototype the new link at data basket page to visualize images through Cedara/I-Response | 4.29d? | 2009-03-02 A | 2009-03-09 A |  | 100% |  |  | Jim [70%] | 24h | 24h |
| 132 | 1.3.2.1.4 | Investigate new functionalities in CTP and the configuration change | 6.67d? | 2009-03-02 A | 2009-03-11 |  | 50% | 3.33d? | 16.56d | Eric [20%]; Jim [10%] | 16h | 8h |
| 133 | 1.3.2.2 | **Implementation** | 20.93d? | 2009-03-02 A | 2009-03-31 |  | 94% | 1.3d? | 2.29d |  | 315h | 307h |
| 134 | 1.3.2.2.1 | **Anonymous user public data access** | 7.62d? | 2009-03-02 A | 2009-03-12 A |  | 100% |  |  |  | 58h | 58h |
| 135 | 1.3.2.2.1.1 | Backend end implementation | 5d? | 2009-03-02 A | 2009-03-09 A |  | 100% |  |  | Thai [60%]; Eric [40%] | 40h | 40h |
| 136 | 1.3.2.2.1.2 | unit test/selenium test | 2d? | 2009-03-09 A | 2009-03-11 A | 135 | 100% |  |  | Thai [60%]; Eric [40%] | 16h | 16h |
| 137 | 1.3.2.2.1.3 | code review | 0.62d? | 2009-03-11 A | 2009-03-12 A | 136 | 100% |  |  | Thai [20%]; Jim [20%] | 2h | 2h |
| 138 | 1.3.2.2.2 | **Time Point grid service** | 3.12d? | 2009-03-02 A | 2009-03-05 A |  | 100% |  |  |  | 10h | 10h |
| 139 | 1.3.2.2.2.1 | unit test | 3.12d? | 2009-03-02 A | 2009-03-05 A |  | 100% |  |  | Eric [40%] | 10h | 10h |
| 140 | 1.3.2.2.3 | **Time point UI change** | 8.96d? | 2009-03-12 A | 2009-03-25 A | 134 | 100% |  |  |  | 42h | 42h |
| 141 | 1.3.2.2.3.1 | Presentation changes | 3.33d? | 2009-03-12 A | 2009-03-17 A |  | 100% |  |  | Thai [60%] | 16h | 16h |
| 142 | 1.3.2.2.3.2 | Middle tier/Backend Modification | 3.33d? | 2009-03-17 A | 2009-03-23 A | 141 | 100% |  |  | Thai [60%] | 16h | 16h |
| 143 | 1.3.2.2.3.3 | Unit Test / Selenium Test | 1.67d? | 2009-03-23 A | 2009-03-24 A | 142 | 100% |  |  | Thai [60%] | 8h | 8h |
| 144 | 1.3.2.2.3.4 | Code Review | 0.62d? | 2009-03-24 A | 2009-03-25 A | 143 | 100% |  |  | Thai [20%]; Jim [20%] | 2h | 2h |
| 145 | 1.3.2.2.4 | BDA release integration (for external upgrade) | 11.46d? | 2009-03-12 A | 2009-03-27 A | 134 | 100% |  |  | Eric [60%] | 55h | 55h |
| 146 | 1.3.2.2.5 | **Data basket interface change to allow visualization** | 6.23d? | 2009-03-09 A | 2009-03-17 A | 131 | 100% |  |  |  | 34h | 34h |
| 147 | 1.3.2.2.5.1 | Implementation | 4.29d? | 2009-03-09 A | 2009-03-13 A |  | 100% |  |  | Jim [70%] | 24h | 24h |
| 148 | 1.3.2.2.5.2 | Unit Test | 1.67d? | 2009-03-13 A | 2009-03-17 A | 147 | 100% |  |  | Jim [60%] | 8h | 8h |
| 149 | 1.3.2.2.5.3 | code Review | 0.28d? | 2009-03-17 A | 2009-03-17 A | 148 | 100% |  |  | Jim [70%]; Eric [20%] | 2h | 2h |
| 150 | 1.3.2.2.6 | **CTP Modification** | 10.42d? | 2009-03-17 A | 2009-03-31 A | 146 | 100% |  |  |  | 72h | 72h |
| 151 | 1.3.2.2.6.1 | Diff the tag to find out the changes | 1.25d? | 2009-03-17 A | 2009-03-18 A |  | 100% |  |  | Jim [80%] | 8h | 8h |
| 152 | 1.3.2.2.6.2 | upgrade CTP Source code to the latest tag | 3.75d? | 2009-03-18 A | 2009-03-24 A | 151 | 100% |  |  | Jim [80%] | 24h | 24h |
| 153 | 1.3.2.2.6.3 | Modify the build script and default anonymization script | 2.5d? | 2009-03-24 A | 2009-03-26 A | 152 | 100% |  |  | Jim [80%] | 16h | 16h |
| 154 | 1.3.2.2.6.4 | Regressional Test based on the changes between tags | 2.92d? | 2009-03-26 A | 2009-03-31 A | 153 | 100% |  |  | Jim [60%]; Thai [50%] | 24h | 24h |
| 155 | 1.3.2.2.7 | Fix the image visualization for image submission via CTP | 15d? | 2009-03-02 A | 2009-03-26 A |  | 100% |  |  | Qinyan [10%] | 12h | 12h |
| 156 | 1.3.2.2.8 | Develop the migration step for CTP mount | 2.5d? | 2009-03-26 A | 2009-03-31 A | 155 | 100% |  |  | Qinyan [20%]; Eric [20%] | 8h | 8h |
| 157 | 1.3.2.2.9 | Fix AppScan issues (Waiting for second AppScan result… ) | 10d? | 2009-03-02 A | 2009-03-16 |  | 50% | 5d? | 11.77d | Eric [10%]; Jim [10%] | 16h | 8h |

| ID | WBS | Task | Duration | Start | Finish | Predecessors | Complete | Remaining | Baseline start | Baseline finish | Baseline duration | Total slack | Free slack | Resources | Work | Actual work |
| --- | --- | --- | --- | --- | --- | --- | --- | --- | --- | --- | --- | --- | --- | --- | --- | --- |
| 158 | 1.3.2.2.10 | **NCIA Rename to NBIA** | 5d? | 2009-03-02 A | 2009-03-09 A |  | 100% |  |  |  |  |  |  |  | 8h | 8h |
| 159 | 1.3.2.2.10.1 | Implement configurable Cancer center logo | 5d? | 2009-03-02 A | 2009-03-09 A |  | 100% |  |  |  |  |  |  | Jennifer [20%] | 8h | 8h |
| 160 | 1.3.2.3 | **Configuration & Change Management** | 12.5d? | 2009-03-02 A | 2009-03-19 A |  | 100% |  |  |  |  |  |  |  | 22h | 22h |
| 161 | 1.3.2.3.1 | Support External Deployment | 12.5d? | 2009-03-02 A | 2009-03-19 A |  | 100% |  |  |  |  |  |  | Eric [10%] | 10h | 10h |
| 162 | 1.3.2.3.2 | Support request regarding production data from AppSupport or CIP | 7.5d? | 2009-03-02 A | 2009-03-12 A |  | 100% |  |  |  |  |  |  | Eric [10%]; Thai [10%] | 12h | 12h |
| 163 | 1.3.2.4 | **Documentation** | 16.67d? | 2009-03-02 A | 2009-03-25 A |  | 100% |  |  |  |  |  |  |  | 40h | 40h |
| 164 | 1.3.2.4.1 | NCIA User Guide and Online help | 16.67d? | 2009-03-02 A | 2009-03-25 A |  | 100% |  |  |  |  |  |  | Jill Hadfiled [30%] | 40h | 40h |
| 165 | 1.3.2.5 | **Enviroment** | 7.5d? | 2009-03-02 A | 2009-03-12 |  | 89% | 0.81d? |  |  |  | 15.72d |  |  | 40h | 24h |
| 166 | 1.3.2.5.1 | Investigate the Staging DB upgrade issue | 0.91d? | 2009-03-02 | 2009-03-03 |  |  |  |  |  |  | 22.31d |  | Eric [20%]; BDA; System | 16h |  |
| 167 | 1.3.2.5.2 | Support NIAMS's NCIA set up and data submission | 7.5d? | 2009-03-02 A | 2009-03-12 A |  | 100% |  |  |  |  |  |  | Jennifer [20%]; Brian [20%] | 24h | 24h |
| 168 | 1.3.2.6 | **Test** | 22.6d? | 2009-03-02 A | 2009-04-02 A |  | 100% |  |  |  |  |  |  |  | 76h | 76h |
| 169 | 1.3.2.6.1 | Regressional Test on Dev | 1.67d? | 2009-03-31 A | 2009-04-02 A | 133 | 100% |  |  |  |  |  |  | Eric [40%]; Jim [40%]; Thai [40%] | 16h | 16h |
| 170 | 1.3.2.6.2 | QA testing function in Tag 1 | 9.38d? | 2009-03-02 A | 2009-03-16 A |  | 100% |  |  |  |  |  |  | QA [80%] | 60h | 60h |
| 171 | 1.3.2.6.3 | caIntegrator2 test Databasket function on Dev | 1d? | 2009-03-02 A | 2009-03-03 A |  | 100% |  |  |  |  |  |  |  |  |  |
| 172 | 1.3.2.7 | **Configuration & Change Management** | 0.62d? | 2009-04-02 A | 2009-04-03 A |  | 100% |  |  |  |  |  |  |  | 1h | 1h |
| 173 | 1.3.2.7.1 | Request for AppScan on NCIA | 0.62d? | 2009-04-02 A | 2009-04-03 A | 168 | 100% |  |  |  |  |  |  | Jennifer [20%] | 1h | 1h |
| 174 | 1.4 | **Transition** | 28.4d? | 2009-04-03 A | 2009-05-13 | 83 | 40% | 16.94d? | 2008-10-31 | 2008-11-24 | 15.62d? | 0d |  |  | 372.8h | 178h |
| 175 | 1.4.1 | **Iteration 1** | 28.4d? | 2009-04-03 A | 2009-05-13 |  | 40% | 16.94d? | 2008-10-31 | 2008-11-24 | 15.62d? | 0d |  |  | 372.8h | 178h |
| 176 | 1.4.1.1 | **Requirement** | 4.33d? | 2009-04-03 | 2009-04-09 |  |  |  |  |  |  | 11.5d |  |  | 8h |  |
| 177 | 1.4.1.1.1 | Dynamic Search form | 3.33d? | 2009-04-03 | 2009-04-08 |  |  |  |  |  |  | 11.5d | 0d | Jennifer [30%] | 8h |  |
| 178 | 1.4.1.1.2 | Administration functions (delete, VS, QC) | 1d? | 2009-04-08 | 2009-04-09 | 177 |  |  |  |  |  | 11.5d | 0d |  |  |  |
| 179 | 1.4.1.2 | **Analysis and Design** | 9.33d? | 2009-04-03 | 2009-04-16 |  |  |  |  |  |  | 11.5d |  |  | 24h |  |
| 180 | 1.4.1.2.1 | Dynamic Search form | 5d? | 2009-04-09 | 2009-04-16 | 178 |  |  |  |  |  | 11.5d |  | Jennifer [30%]; Thai [30%] | 24h |  |
| 181 | 1.4.1.2.2 | Switch Grid service container from Tomcat to Jboss 4.0.5 | 1d? | 2009-04-03 | 2009-04-06 |  |  |  |  |  |  | 19.83d |  |  |  |  |

| ID | WBS | Task | Duration | Start | Finish | Predecessors | Complete | Remaining | Baseline start | Baseline finish | Baseline duration | Total slack | Free slack | Resources | Work | Actual work |
| --- | --- | --- | --- | --- | --- | --- | --- | --- | --- | --- | --- | --- | --- | --- | --- | --- |
| 182 | 1.4.1.3 | **Implementation** | 11.75d? | 2009-04-03 A | 2009-04-20 |  | 78% | 2.54d? | 2008-11-03 | 2008-11-06 | 2.5d? | 16.65d |  |  | 154h | 119.2h |
| 183 | 1.4.1.3.1 | Integration with CTP X22 | 1.56d? | 2009-04-03 A | 2009-04-06 A |  | 100% |  |  |  |  |  |  | Jim [80%] | 10h | 10h |
| 184 | 1.4.1.3.2 | upgrade dcm4che library | 1d? | 2009-04-03 A | 2009-04-06 A |  | 100% |  |  |  |  |  |  | Thai [50%] | 4h | 4h |
| 185 | 1.4.1.3.3 | Capture/retain CTP documentation | 3.75d? | 2009-04-03 A | 2009-04-13 |  | 80% | 0.75d? |  |  |  | 14.08d |  | Thai [80%] | 24h | 19.2h |
| 186 | 1.4.1.3.4 | BDA .11 release integration | 5d? | 2009-04-03 A | 2009-04-10 A |  | 100% |  |  |  |  |  |  | Eric [40%] | 16h | 16h |
| 187 | 1.4.1.3.5 | Defect fix | 8.33d? | 2009-04-03 A | 2009-04-15 |  | 75% | 2.08d? | 2008-11-03 | 2008-11-06 | 2.5d? | 20.06d |  | Jim [50%]; Thai [50%]; Eric [20%] | 80h | 60h |
| 188 | 1.4.1.3.6 | Guest account authentication | 5d? | 2009-04-13 A | 2009-04-20 | 185 | 50% | 2.5d? |  |  |  | 16.65d |  | Thai [50%] | 20h | 10h |
| 189 | 1.4.1.4 | **Deployment** | 28.4d? | 2009-04-03 A | 2009-05-13 |  | 7% | 26.37d? | 2008-10-31 | 2008-11-19 | 13.12d? | 0d |  |  | 28h | 2h |
| 190 | 1.4.1.4.1 | Deployment to QA(NCIA App) | 0.62d? | 2009-04-03 A | 2009-04-03 |  | 50% | 0.31d? | 2008-10-31 | 2008-11-03 | 1.25d? | 27.77d |  | QA [80%] | 4h | 2h |
| 191 | 1.4.1.4.2 | Deployment to Stage | 1.88d? | 2009-05-07 | 2009-05-11 | 195 |  |  |  |  |  | 0d |  | System [80%] | 12h |  |
| 192 | 1.4.1.4.3 | Deployment to Production | 1.88d? | 2009-05-11 | 2009-05-13 | 196 |  |  |  |  |  | 0d |  | System [80%] | 12h |  |
| 193 | 1.4.1.5 | **Test** | 24.96d? | 2009-04-06 A | 2009-05-11 |  | 49% | 12.7d? |  |  |  | 0d |  |  | 118h | 56.8h |
| 194 | 1.4.1.5.1 | Test CTP X22 | 6d? | 2009-04-06 A | 2009-04-14 | 183 | 50% | 3d? |  |  |  | 8.33d | 0d | Thai [50%]; Jim [20%] | 30h | 16.8h |
| 195 | 1.4.1.5.2 | QA Test | 16.67d? | 2009-04-14 A | 2009-05-07 | 194 | 50% | 8.33d? |  |  |  | 0d |  | QA [60%] | 80h | 40h |
| 196 | 1.4.1.5.3 | UAT Test | 0.42d? | 2009-05-11 | 2009-05-11 | 191 |  |  |  |  |  | 0d |  | Jennifer [80%]; Brian; Justin | 8h |  |
| 197 | 1.4.1.6 | **Documentation** | 15.25d? | 2009-04-03 | 2009-04-24 |  |  |  |  |  |  | 13.15d |  |  | 40.8h |  |
| 198 | 1.4.1.6.1 | User Guide | 1.54d? | 2009-04-03 | 2009-04-06 |  |  |  |  |  |  | 26.86d |  | Jill Hadfied; Eric [20%]; Jennifer [20%] | 8h |  |
| 199 | 1.4.1.6.2 | Draft updates to System Installation Guide | 4d? | 2009-04-10 | 2009-04-16 | 186 |  |  |  |  |  | 13.15d | 0d | Thai [20%]; Eric [40%] | 12.8h |  |
| 200 | 1.4.1.6.3 | Finalize System Installation Guide | 6.25d? | 2009-04-16 | 2009-04-24 | 199 |  |  | 2008-10-31 | 2008-11-10 | 6.25d? | 13.15d |  | Jill Hadfield [40%] | 20h |  |
| 201 | 1.4.1.7 | **Enviroment** | 2.5d? | 2009-04-03 | 2009-04-07 |  |  |  |  |  |  | 18.33d |  |  |  |  |
| 202 | 1.4.1.7.1 | External site installation/upgrade | 2.5d? | 2009-04-03 | 2009-04-07 |  |  |  |  |  |  | 18.33d |  |  |  |  |
