# reengineeringPlanfor4.0

Schedule from MS Project, 2009-05-15 to 2009-10-15, A marks actual dates.
NCI

## Calendars

- Standard: Mon-Fri 08:00-12:00, 13:00-17:00; Sat-Sun off.

## Resources

| Resource |
| --- |
| Team |
| Jennifer |
| Jim |
| Qinyan |
| Eric |
| QA |
| Thai |
| Systems |
| Anand |
| Sudha |
| John F |
| Jill Hadfield |
| caIntegrator2 |
| Jill |
| Jill Hadfied |
| System |
| Brian |
| Justin |
| BDA |
| caI2 |
| tea |
| Jennifier |

## Schedule

| ID | WBS | Task | Duration | Start | Finish | Predecessors | Complete | Remaining | Baseline start | Baseline finish | Baseline duration | Total slack | Free slack | Constraint | Resources | Work | Actual work |
| --- | --- | --- | --- | --- | --- | --- | --- | --- | --- | --- | --- | --- | --- | --- | --- | --- | --- |
| 1 | 1 | **NCIA 4.3 release** | 109.56d? | 2009-05-15 A | 2009-10-15 |  | 46% | 59.24d? | 2008-09-25 | 2008-11-24 | 42.08d? | 0d |  |  |  | 2177.4h | 1158.52h |
| 2 | 1.1 | **Inception** | 8.33d? | 2009-05-15 A | 2009-05-27 |  | 87% | 1.12d? | 2008-09-25 | 2008-10-08 | 9.5d? | 0d |  | start no earlier than 2009-05-15 |  | 130h | 116h |
| 3 | 1.1.1 | **Iteration 1** | 8.33d? | 2009-05-15 A | 2009-05-27 |  | 87% | 1.12d? | 2008-09-25 | 2008-10-08 | 9.5d? | 0d |  |  |  | 130h | 116h |
| 4 | 1.1.1.1 | **Requirements** | 1d? | 2009-05-15 A | 2009-05-15 |  | 45% | 0.55d? | 2008-09-29 | 2008-10-03 | 5d | 7.33d |  |  |  | 3h | 1h |
| 5 | 1.1.1.1.1 | Grid service operations for caI2 use case | 0.83d? | 2009-05-15 A | 2009-05-15 A |  | 100% |  |  |  |  |  |  |  | Jennifer [5%]; Eric [5%]; Thai [5%] | 1h | 1h |
| 6 | 1.1.1.1.2 | QC Tool and Verify Submission | 1d? | 2009-05-15 | 2009-05-15 |  |  |  |  |  |  | 7.33d |  |  |  | 2h |  |
| 7 | 1.1.1.2 | **Analysis and Design** | 8.33d? | 2009-05-15 A | 2009-05-27 A |  | 100% |  | 2008-09-29 | 2008-10-07 | 6.5d? |  |  |  |  | 54h | 54h |
| 8 | 1.1.1.2.1 | Grid service operations to return a representive image for a series | 1.25d? | 2009-05-15 A | 2009-05-18 A |  | 100% |  |  |  |  |  |  |  | Thai [40%] | 4h | 4h |
| 9 | 1.1.1.2.2 | Dynamic Search Data Analysis | 8.33d? | 2009-05-15 A | 2009-05-27 A |  | 100% |  |  |  |  |  |  |  | Jim [60%] | 40h | 40h |
| 10 | 1.1.1.2.3 | Download Client | 3.12d? | 2009-05-15 A | 2009-05-20 A |  | 100% |  |  |  |  |  |  |  | Thai [40%] | 10h | 10h |
| 11 | 1.1.1.3 | **Implementation** | 7.5d? | 2009-05-15 A | 2009-05-26 |  | 86% | 1.02d? | 2008-09-29 | 2008-10-08 | 7.5d? | 0.83d |  |  |  | 42h | 34h |
| 12 | 1.1.1.3.1 | build script for deploying Grid service to Jboss | 7.5d? | 2009-05-15 A | 2009-05-26 A |  | 100% |  |  |  |  |  |  |  | Eric [40%] | 24h | 24h |
| 13 | 1.1.1.3.2 | Grid service operations to return a representive image for a series | 3.12d? | 2009-05-15 A | 2009-05-20 A | 8 | 100% |  |  |  |  |  |  |  | Thai [40%] | 10h | 10h |
| 14 | 1.1.1.3.3 | Data clean up | 1.67d? | 2009-05-15 | 2009-05-18 |  |  |  |  |  |  | 6.67d |  |  | Eric [60%] | 8h |  |
| 15 | 1.1.1.4 | **Configuration & Change Management** | 2.5d? | 2009-05-15 A | 2009-05-19 A |  | 100% |  | 2008-10-02 | 2008-10-02 | 0d |  |  |  |  | 1h | 1h |
| 16 | 1.1.1.4.1 | Request Jboss container for grid service | 2.5d? | 2009-05-15 A | 2009-05-19 A |  | 100% |  |  |  |  |  |  |  | Eric [5%] | 1h | 1h |
| 17 | 1.1.1.4.2 | Supporting Effort (App Support, Data submission) | 1d? | 2009-05-15 A | 2009-05-15 A |  | 100% |  |  |  |  |  |  |  |  |  |  |
| 18 | 1.1.1.5 | **Project Management** | 5d? | 2009-05-15 A | 2009-05-21 |  | 60% | 2d? | 2008-09-25 | 2008-10-08 | 9.12d | 3.33d |  |  |  | 10h | 6h |
| 19 | 1.1.1.5.1 | Draft Scope document | 1.25d? | 2009-05-15 A | 2009-05-18 A |  | 100% |  |  |  |  |  |  |  | Jennifer [20%] | 2h | 2h |
| 20 | 1.1.1.5.2 | Draft Project Plan | 5d? | 2009-05-15 A | 2009-05-21 |  | 50% | 2.5d? |  |  |  | 3.33d |  |  | Jennifer [20%] | 8h | 4h |
| 21 | 1.1.1.6 | **Support** | 1d? | 2009-05-15 A | 2009-05-15 A |  | 100% |  |  |  |  |  |  |  |  | 20h | 20h |
| 22 | 1.1.1.6.1 | App support | 1d? | 2009-05-15 A | 2009-05-15 A |  | 100% |  |  |  |  |  |  |  |  | 10h | 10h |
| 23 | 1.1.1.6.2 | External Installation | 1d? | 2009-05-15 A | 2009-05-15 A |  | 100% |  |  |  |  |  |  |  |  | 10h | 10h |
| 24 | 1.2 | **Elaboration** | 17.26d? | 2009-05-27 A | 2009-06-19 | 2 | 56% | 7.66d? | 2008-10-08 | 2008-10-20 | 8.5d? | 44.11d | 0d |  |  | 372.4h | 249h |
| 25 | 1.2.1 | **Iteration 1** | 17.26d? | 2009-05-27 A | 2009-06-19 |  | 56% | 7.66d? | 2008-10-08 | 2008-10-20 | 8.5d? | 44.11d |  |  |  | 372.4h | 249h |
| 26 | 1.2.1.1 | **Requirements** | 1.67d? | 2009-05-27 A | 2009-05-28 A |  | 100% |  | 2008-09-29 | 2008-10-03 | 5d |  |  |  |  | 4h | 4h |
| 27 | 1.2.1.1.1 | Verify Submission | 1.67d? | 2009-05-27 A | 2009-05-28 A |  | 100% |  |  |  |  |  |  |  | Jennifer [10%]; Eric [20%] | 4h | 4h |

| ID | WBS | Task | Duration | Start | Finish | Predecessors | Complete | Remaining | Baseline start | Baseline finish | Baseline duration | Total slack | Constraint | Resources | Work | Actual work |
| --- | --- | --- | --- | --- | --- | --- | --- | --- | --- | --- | --- | --- | --- | --- | --- | --- |
| 28 | 1.2.1.2 | **Analysis and Design** | 17.26d? | 2009-05-27 A | 2009-06-19 |  | 50% | 8.61d? | 2008-09-29 | 2008-10-07 | 6.5d? | 44.11d |  |  | 326.4h | 210h |
| 29 | 1.2.1.2.1 | **CTP security upgrade** | 11.6d? | 2009-06-04 A | 2009-06-19 A |  | 100% |  |  |  |  |  |  |  | 80h | 80h |
| 30 | 1.2.1.2.1.1 | code comparison | 3.47d? | 2009-06-04 A | 2009-06-09 A |  | 100% |  |  |  |  |  | start no earlier than 2009-06-04 | Eric [40%]; Jim [40%] | 20h | 20h |
| 31 | 1.2.1.2.1.2 | Integration code | 2.5d? | 2009-06-09 A | 2009-06-11 A | 30 | 100% |  |  |  |  |  |  | Jim [80%] | 16h | 16h |
| 32 | 1.2.1.2.1.3 | update the build script (includeing upgrade) | 3.12d? | 2009-06-09 A | 2009-06-12 A | 30 | 100% |  |  |  |  |  |  | Eric [80%] | 20h | 20h |
| 33 | 1.2.1.2.1.4 | Testing | 5d? | 2009-06-12 A | 2009-06-19 A | 32, 31 | 100% |  |  |  |  |  |  | Jim [60%] | 24h | 24h |
| 34 | 1.2.1.2.2 | **Data Analysis and prototype Dynamic Search (delayed due to CTP security patch)** | 14.29d? | 2009-05-27 | 2009-06-16 |  |  |  |  |  |  | 43.38d |  |  | 86.4h |  |
| 35 | 1.2.1.2.2.1 | UI Prototype | 1d? | 2009-05-27 | 2009-05-28 |  |  |  |  |  |  | 56.67d |  | Jim [80%] | 6.4h |  |
| 36 | 1.2.1.2.2.2 | Use case | 14.29d? | 2009-05-27 | 2009-06-16 |  |  |  |  |  |  | 43.38d |  | Jim [35%] | 40h |  |
| 37 | 1.2.1.2.2.3 | Design | 14.29d? | 2009-05-27 | 2009-06-16 |  |  |  |  |  |  | 43.38d |  | Jim [35%] | 40h |  |
| 38 | 1.2.1.2.3 | **Download Client** | 7.81d? | 2009-05-27 A | 2009-06-08 |  | 63% | 2.93d? |  |  |  | 53.56d |  |  | 80h | 50h |
| 39 | 1.2.1.2.3.1 | UI Prototype | 7.81d? | 2009-05-27 A | 2009-06-08 A |  | 100% |  |  |  |  |  |  | Thai [80%] | 50h | 50h |
| 40 | 1.2.1.2.3.2 | Servlet to get images/annotation for each series | 4.69d? | 2009-05-27 | 2009-06-03 |  |  |  |  |  |  | 57.53d |  | Thai [80%] | 30h |  |
| 41 | 1.2.1.2.4 | **Analysis and prototype Verify Submission** | 12.5d? | 2009-05-27 A | 2009-06-12 A |  | 100% |  |  |  |  |  |  |  | 80h | 80h |
| 42 | 1.2.1.2.4.1 | UI prototype with dummy data | 12.5d? | 2009-05-27 A | 2009-06-12 A |  | 100% |  |  |  |  |  |  | Eric [80%] | 80h | 80h |
| 43 | 1.2.1.3 | **Implementation** | 3.33d? | 2009-05-27 A | 2009-06-01 A |  | 100% |  | 2008-09-29 | 2008-10-08 | 7.5d? |  |  |  | 16h | 16h |
| 44 | 1.2.1.3.1 | Data clean up | 1d? | 2009-05-27 A | 2009-05-28 A |  | 100% |  |  |  |  |  |  |  |  |  |
| 45 | 1.2.1.3.2 | Upload/Search/Download curation data clean up | 3.33d? | 2009-05-27 A | 2009-06-01 A |  | 100% |  |  |  |  |  |  | Eric [60%] | 16h | 16h |
| 46 | 1.2.1.4 | **Configuration & Change Management** | 1d? | 2009-05-27 A | 2009-05-28 A |  | 100% |  | 2008-10-08 | 2008-10-10 | 2.16d? |  |  |  |  |  |
| 47 | 1.2.1.4.1 | deploy grid service to Dev Jboss container | 1d? | 2009-05-27 A | 2009-05-28 A |  | 100% |  |  |  |  |  |  |  |  |  |
| 48 | 1.2.1.5 | Environment | 1.76d | 2009-05-27 | 2009-05-29 |  |  |  | 2008-10-08 | 2008-10-14 | 4d? | 15.5d |  |  |  |  |
| 49 | 1.2.1.6 | **Testing** | 1d? | 2009-05-27 A | 2009-05-28 A |  | 100% |  | 2008-10-08 | 2008-10-15 | 5d? |  |  |  | 8h | 8h |
| 50 | 1.2.1.6.1 | grid operation getRepresentiveImageBySeries() | 1d? | 2009-05-27 A | 2009-05-28 A |  | 100% |  |  |  |  |  |  | caI2 | 8h | 8h |
| 51 | 1.2.1.7 | **Project Management** | 12.5d? | 2009-05-27 A | 2009-06-12 |  | 61% | 4.86d? | 2008-10-08 | 2008-10-17 | 6.62d? | 48.87d |  |  | 18h | 11h |
| 52 | 1.2.1.7.1 | annual meeting abstract | 10d? | 2009-05-27 A | 2009-06-10 A |  | 100% |  |  |  |  |  |  | Jennifer [10%] | 8h | 8h |
| 53 | 1.2.1.7.2 | User group presentation | 12.5d? | 2009-05-27 A | 2009-06-12 |  | 30% | 8.75d? |  |  |  | 49.72d |  | Jennifer [10%] | 10h | 3h |

| ID | WBS | Task | Duration | Start | Finish | Predecessors | Complete | Remaining | Baseline start | Baseline finish | Baseline duration | Total slack | Free slack | Constraint | Resources | Work | Actual work |
| --- | --- | --- | --- | --- | --- | --- | --- | --- | --- | --- | --- | --- | --- | --- | --- | --- | --- |
| 54 | 1.3 | **Construction** | 58.78d? | 2009-06-19 A | 2009-09-10 | 24 | 48% | 30.41d? | 2008-10-21 | 2008-10-31 | 8.46d? | 25.18d |  |  |  | 1332h | 793.52h |
| 55 | 1.3.1 | **Iteration 1** | 7.81d? | 2009-06-19 A | 2009-07-01 A |  | 100% |  | 2008-10-21 | 2008-10-31 | 8.46d? |  |  |  |  | 148h | 148h |
| 56 | 1.3.1.1 | **Implementation** | 7.81d? | 2009-06-19 A | 2009-07-01 A |  | 100% |  | 2008-10-21 | 2008-10-31 | 8.46d? |  |  |  |  | 148h | 148h |
| 57 | 1.3.1.1.1 | **CTP security upgrade** | 3.75d? | 2009-06-23 A | 2009-06-26 A |  | 100% |  |  |  |  |  |  |  |  | 24h | 24h |
| 58 | 1.3.1.1.1.1 | QA deployment / Test | 2.5d? | 2009-06-23 A | 2009-06-25 A |  | 100% |  |  |  |  |  |  |  | QA [80%] | 16h | 16h |
| 59 | 1.3.1.1.1.2 | Stage deployment | 0.62d? | 2009-06-25 A | 2009-06-26 A | 58 | 100% |  |  |  |  |  |  |  | System [80%] | 4h | 4h |
| 60 | 1.3.1.1.1.3 | Production deployment | 0.62d? | 2009-06-26 A | 2009-06-26 A | 59 | 100% |  |  |  |  |  |  |  | System [80%] | 4h | 4h |
| 61 | 1.3.1.1.2 | **Download Client** | 6.88d? | 2009-06-19 A | 2009-06-30 A |  | 100% |  |  |  |  |  |  |  |  | 44h | 44h |
| 62 | 1.3.1.1.2.1 | design doc | 1.88d? | 2009-06-19 A | 2009-06-23 A |  | 100% |  |  |  |  |  |  |  | Thai [80%] | 12h | 12h |
| 63 | 1.3.1.1.2.2 | dynamically generate and run jnlp | 2.5d? | 2009-06-23 A | 2009-06-25 A | 62 | 100% |  |  |  |  |  |  |  | Thai [80%] | 16h | 16h |
| 64 | 1.3.1.1.2.3 | Display data basket info on download manager | 2.5d? | 2009-06-25 A | 2009-06-30 A | 63 | 100% |  |  |  |  |  |  |  | Thai [80%] | 16h | 16h |
| 65 | 1.3.1.1.3 | **Dynamic Search** | 5.36d? | 2009-06-19 A | 2009-06-26 A |  | 100% |  |  |  |  |  |  |  |  | 30h | 30h |
| 66 | 1.3.1.1.3.1 | prototyping | 5.36d? | 2009-06-19 A | 2009-06-26 A |  | 100% |  |  |  |  |  |  |  | Jim [70%] | 30h | 30h |
| 67 | 1.3.1.1.4 | **Verify Submission** | 7.81d? | 2009-06-19 A | 2009-07-01 A |  | 100% |  |  |  |  |  |  |  |  | 50h | 50h |
| 68 | 1.3.1.1.4.1 | Describe and explore new log approach vs. old log approach (use case + FD) | 4.69d? | 2009-06-19 A | 2009-06-26 A |  | 100% |  |  |  |  |  |  |  | Eric [80%] | 30h | 30h |
| 69 | 1.3.1.1.4.2 | Implement data access layer + db migration script | 3.12d? | 2009-06-26 A | 2009-07-01 A | 68 | 100% |  |  |  |  |  |  |  | Eric [80%] | 20h | 20h |
| 70 | 1.3.1.2 | **Test** | 1d? | 2009-06-19 A | 2009-06-22 A |  | 100% |  |  |  |  |  |  |  |  |  |  |
| 71 | 1.3.1.2.1 | Integration test on Dev | 1d? | 2009-06-19 A | 2009-06-22 A |  | 100% |  |  |  |  |  |  |  |  |  |  |
| 72 | 1.3.2 | **iteration 2** | 46d? | 2009-06-29 A | 2009-08-31 |  | 34% | 30.55d? |  |  |  | 32.56d |  | start no earlier than 2009-06-29 |  | 846h | 353.62h |
| 73 | 1.3.2.1 | **Implementation** | 46d? | 2009-06-29 A | 2009-08-31 |  | 44% | 25.67d? |  |  |  | 32.56d |  |  |  | 726h | 343.62h |
| 74 | 1.3.2.1.1 | DAC system implementation | 20d? | 2009-07-27 | 2009-08-31 |  |  |  |  |  |  | 32.31d |  | start no earlier than 2009-07-27 | Eric [10%] | 16h |  |
| 75 | 1.3.2.1.2 | **Download Manager** | 36.94d? | 2009-06-29 A | 2009-08-18 |  | 43% | 21.12d? |  |  |  | 41.62d |  |  |  | 230h | 98.5h |
| 76 | 1.3.2.1.2.1 | Thread pooling | 7.81d? | 2009-06-29 A | 2009-07-08 |  | 95% | 0.39d? |  |  |  | 50.34d | 0d |  | Thai [80%] | 50h | 47.5h |
| 77 | 1.3.2.1.2.2 | Communication between download manager to Secure web server | 3.12d? | 2009-07-08 A | 2009-07-13 | 76 | 30% | 2.19d? |  |  |  | 49.4d | 0d |  | Thai [80%] | 20h | 6h |
| 78 | 1.3.2.1.2.3 | Pause and resume | 7.81d? | 2009-07-13 A | 2009-07-24 | 77 | 90% | 0.78d? |  |  |  | 41.37d | 0d |  | Thai [80%] | 50h | 45h |
| 79 | 1.3.2.1.2.4 | unit test | 4.69d? | 2009-07-24 | 2009-07-31 | 78 |  |  |  |  |  | 41.37d | 0d |  | Thai [80%] | 30h |  |
| 80 | 1.3.2.1.2.5 | component deployment tasks | 3.12d? | 2009-07-31 | 2009-08-05 | 79 |  |  |  |  |  | 41.37d | 0d |  | Thai [80%] | 20h |  |
| 81 | 1.3.2.1.2.6 | Testing on Mac | 4.69d? | 2009-08-05 | 2009-08-12 | 80 |  |  |  |  |  | 41.37d | 0d |  | Thai [80%] | 30h |  |
| 82 | 1.3.2.1.2.7 | Update the FTP download structures | 4.69d? | 2009-08-12 | 2009-08-18 | 81 |  |  |  |  |  | 41.37d |  |  | Thai [80%] | 30h |  |

| ID | WBS | Task | Duration | Start | Finish | Predecessors | Complete | Remaining | Total slack | Free slack | Constraint | Resources | Work | Actual work |
| --- | --- | --- | --- | --- | --- | --- | --- | --- | --- | --- | --- | --- | --- | --- |
| 83 | 1.3.2.1.3 | **Dynamic Search** | 43.94d? | 2009-06-29 A | 2009-08-27 |  | 30% | 30.57d? | 34.62d |  |  |  | 230h | 70h |
| 84 | 1.3.2.1.3.1 | Design Doc | 7.81d? | 2009-06-29 A | 2009-07-10 A |  | 100% |  |  |  |  | Jim [80%] | 50h | 50h |
| 85 | 1.3.2.1.3.2 | GUI implementation | 6.25d? | 2009-07-10 A | 2009-07-22 | 84 | 20% | 5d? | 41.24d | 0d |  | Jim [80%] | 40h | 8h |
| 86 | 1.3.2.1.3.3 | Backend (xml parser, query builder, data validation) | 9.38d? | 2009-07-22 A | 2009-08-04 | 85 | 20% | 7.5d? | 39.37d | 0d |  | Jim [80%] | 60h | 12h |
| 87 | 1.3.2.1.3.4 | Data access layer | 6.25d? | 2009-08-04 | 2009-08-12 | 86 |  |  | 39.37d | 0d |  | Jim [80%] | 40h |  |
| 88 | 1.3.2.1.3.5 | unit test | 6.25d? | 2009-08-12 | 2009-08-27 | 87 |  |  | 34.37d |  |  | Jim [80%] | 40h |  |
| 89 | 1.3.2.1.4 | **Verify Submission** | 42.43d? | 2009-06-29 A | 2009-08-26 |  | 74% | 11.23d? | 36.13d |  |  |  | 220h | 160.12h |
| 90 | 1.3.2.1.4.1 | Implement data access layer + db migration script | 14.49d? | 2009-06-29 A | 2009-07-17 |  | 90% | 1.45d? | 54.35d | 0d |  | Eric [70%] | 80h | 72.9h |
| 91 | 1.3.2.1.4.2 | unit test | 3.62d? | 2009-07-17 A | 2009-07-27 | 90 | 90% | 0.36d? | 49.09d | 0d |  | Eric [70%] | 20h | 18.22h |
| 92 | 1.3.2.1.4.3 | business logic + UI presentation logic | 5.36d? | 2009-07-27 A | 2009-08-03 | 91 | 50% | 2.68d? | 46.41d | 0d |  | Eric [70%] | 30h | 15h |
| 93 | 1.3.2.1.4.4 | Testing focus on submission (annotation/image/replace) | 5.07d? | 2009-08-03 A | 2009-08-18 | 92 | 89% | 0.54d? | 35.88d | 0d |  | Eric [74.5%] | 30h | 27h |
| 94 | 1.3.2.1.4.5 | Business logic unit test | 7.36d? | 2009-08-10 A | 2009-08-19 | 93 | 93% | 0.54d? | 36.13d | 0d |  | Eric [70%] | 30h | 27h |
| 95 | 1.3.2.1.4.6 | selenium test | 5.36d? | 2009-08-19 | 2009-08-26 | 94 |  |  | 35.88d |  |  | Eric [70%] | 30h |  |
| 96 | 1.3.2.1.5 | Build script and installer upgrad | 37.5d? | 2009-06-29 A | 2009-08-31 |  | 50% | 18.75d? | 32.81d |  |  | Eric [10%] | 30h | 15h |
| 97 | 1.3.2.2 | **Support** | 12.25d? | 2009-06-29 A | 2009-07-15 A |  | 100% |  |  |  |  |  | 10h | 10h |
| 98 | 1.3.2.2.1 | caBIG Annual meeting effort | 12.25d? | 2009-06-29 A | 2009-07-15 A |  | 100% |  |  |  |  | Thai [5%]; Jim [5%]; Eric [5%]; Jennifer [5%] | 10h | 10h |
| 99 | 1.3.2.3 | **Testing** | 37.5d? | 2009-06-29 | 2009-08-19 |  |  |  | 40.06d |  |  |  | 50h |  |
| 100 | 1.3.2.3.1 | Integration Testing | 37.5d? | 2009-06-29 | 2009-08-19 |  |  |  | 39.81d |  |  | Team [10%] | 30h |  |
| 101 | 1.3.2.3.2 | QA testing Verify Submission | 3.12d? | 2009-08-03 | 2009-08-06 | 92 |  |  | 49.71d |  |  | QA [80%] | 20h |  |
| 102 | 1.3.2.4 | **Documentation** | 37.5d? | 2009-06-29 | 2009-08-19 |  |  |  | 41.06d |  |  |  | 60h |  |
| 103 | 1.3.2.4.1 | Draft User Guide | 37.5d? | 2009-06-29 | 2009-08-19 |  |  |  | 40.81d |  |  | Jill Hadfield [20%] | 60h |  |
| 104 | 1.3.3 | **Itermation 3** | 25.38d? | 2009-08-06 A | 2009-09-10 |  | 84% | 4.06d? | 0d |  | start no earlier than 2009-08-06 |  | 338h | 291.9h |
| 105 | 1.3.3.1 | **Implementation** | 21.88d? | 2009-08-06 A | 2009-09-04 |  | 90% | 2.11d? | 2.25d | 0d |  |  | 250h | 224.9h |
| 106 | 1.3.3.1.1 | **Dynamic Search** | 21.56d? | 2009-08-06 A | 2009-09-04 |  | 84% | 3.36d? | 2.56d |  |  |  | 106h | 89.5h |
| 107 | 1.3.3.1.1.1 | Query builder | 3.12d? | 2009-08-06 A | 2009-08-11 A |  | 100% |  |  |  |  | Jim [80%] | 20h | 20h |
| 108 | 1.3.3.1.1.2 | Xml parser | 2.5d? | 2009-08-11 A | 2009-08-13 A | 107 | 100% |  |  |  |  | Jim [80%] | 16h | 16h |
| 109 | 1.3.3.1.1.3 | data access layer | 3.12d? | 2009-08-13 A | 2009-08-25 | 108 | 90% | 0.31d? | 7.55d | 0d |  | Jim [80%] | 20h | 18h |
| 110 | 1.3.3.1.1.4 | GUI | 4.69d? | 2009-08-25 A | 2009-09-01 | 109 | 85% | 0.7d? | 3.56d | 0d |  | Jim [80%] | 30h | 25.5h |
| 111 | 1.3.3.1.1.5 | unit test | 3.12d? | 2009-09-01 A | 2009-09-04 | 110 | 50% | 1.56d? | 2.56d |  |  | Jim [80%] | 20h | 10h |

| ID | WBS | Task | Duration | Start | Finish | Predecessors | Complete | Remaining | Baseline start | Baseline finish | Baseline duration | Total slack | Free slack | Resources | Work | Actual work |
| --- | --- | --- | --- | --- | --- | --- | --- | --- | --- | --- | --- | --- | --- | --- | --- | --- |
| 112 | 1.3.3.1.2 | **Download manager** | 19.38d? | 2009-08-06 A | 2009-09-02 |  | 94% | 1.11d? |  |  |  | 4.75d | 0d |  | 108h | 101.4h |
| 113 | 1.3.3.1.2.1 | Complete pause/resume | 3.33d? | 2009-08-06 A | 2009-08-11 |  | 90% | 0.33d? |  |  |  | 18.29d |  | Thai [60%] | 16h | 14.4h |
| 114 | 1.3.3.1.2.2 | Modify JNLP template structure/template | 3.12d? | 2009-08-11 A | 2009-08-14 A | 113 | 100% |  |  |  |  |  |  | Thai [80%] | 20h | 20h |
| 115 | 1.3.3.1.2.3 | Mac | 3.12d? | 2009-08-14 A | 2009-08-19 A | 114 | 100% |  |  |  |  |  |  | Thai [80%] | 20h | 20h |
| 116 | 1.3.3.1.2.4 | parameterize download manager configuration | 3.33d? | 2009-08-19 A | 2009-08-24 A | 115 | 100% |  |  |  |  |  |  | Thai [60%] | 16h | 16h |
| 117 | 1.3.3.1.2.5 | Request apache mapping for ssl socket factory | 3.33d? | 2009-08-24 A | 2009-08-28 A | 116 | 100% |  |  |  |  |  |  | Thai [60%] | 16h | 16h |
| 118 | 1.3.3.1.2.6 | Unit test | 3.12d? | 2009-08-28 A | 2009-09-02 | 117 | 75% | 0.78d? |  |  |  | 4.75d |  | Thai [80%] | 20h | 15h |
| 119 | 1.3.3.1.3 | GUI installer | 5d? | 2009-08-06 A | 2009-08-20 |  | 90% | 0.5d? |  |  |  | 13.12d |  | Eric [50%] | 20h | 18h |
| 120 | 1.3.3.1.4 | FTP download ftp server structure change | 2.5d? | 2009-09-02 A | 2009-09-04 A | 112 | 100% |  |  |  |  |  |  | Thai [80%] | 16h | 16h |
| 121 | 1.3.3.2 | **Deployment** | 4d? | 2009-08-21 A | 2009-08-26 A |  | 100% |  |  |  |  |  |  |  | 16h | 16h |
| 122 | 1.3.3.2.1 | Deployment instruction for first time DAC | 4d? | 2009-08-21 A | 2009-08-26 A | 119 | 100% |  |  |  |  |  |  | Eric [50%] | 16h | 16h |
| 123 | 1.3.3.3 | **Testing** | 25.38d? | 2009-08-06 A | 2009-09-10 |  | 72% | 7.09d? |  |  |  | 0d |  |  | 70h | 50h |
| 124 | 1.3.3.3.1 | Integration Testing | 2.5d? | 2009-09-04 A | 2009-09-10 | 105 | 50% | 1.25d? |  |  |  | 0d |  | Team [50%] | 10h | 5h |
| 125 | 1.3.3.3.2 | QA testing Verify Submission / Download Manager | 18.75d? | 2009-08-06 A | 2009-09-01 |  | 75% | 4.69d? |  |  |  | 6.62d |  | QA [40%] | 60h | 45h |
| 126 | 1.3.3.4 | **Documentation** | 2.5d? | 2009-09-02 A | 2009-09-04 |  | 50% | 1.25d? |  |  |  | 3.5d |  |  | 2h | 1h |
| 127 | 1.3.3.4.1 | User guide for Download manager section | 2.5d? | 2009-09-02 A | 2009-09-04 | 112 | 50% | 1.25d? |  |  |  | 3.5d |  | Thai [10%] | 2h | 1h |
| 128 | 1.4 | **Transition** | 25.18d? | 2009-09-10 | 2009-10-15 | 104 |  |  | 2008-10-31 | 2008-11-24 | 15.62d? | 0d |  |  | 343h |  |
| 129 | 1.4.1 | **Iteration 1** | 25.18d? | 2009-09-10 | 2009-10-15 |  |  |  | 2008-10-31 | 2008-11-24 | 15.62d? | 0d |  |  | 343h |  |
| 130 | 1.4.1.1 | **Implementation** | 17.39d? | 2009-09-10 | 2009-10-05 |  |  |  | 2008-11-03 | 2008-11-06 | 2.5d? | 7.79d |  |  | 100h |  |
| 131 | 1.4.1.1.1 | Defect fix | 17.39d? | 2009-09-10 | 2009-10-05 |  |  |  |  |  |  | 7.79d |  | Eric [60%]; Thai [60%]; Jim [60%] | 100h |  |
| 132 | 1.4.1.2 | **Deployment** | 9.56d? | 2009-10-02 | 2009-10-15 |  |  |  | 2008-10-31 | 2008-11-19 | 13.12d? | 0d |  |  | 16h |  |
| 133 | 1.4.1.2.1 | Stage Deployment | 2d? | 2009-10-02 | 2009-10-05 | 136 |  |  |  |  |  | 0d |  | Systems [50%] | 8h |  |
| 134 | 1.4.1.2.2 | Production Deployment | 2d? | 2009-10-13 | 2009-10-15 | 137 |  |  |  |  |  | 0d |  | Systems [50%] | 8h |  |
| 135 | 1.4.1.3 | **Test** | 23.18d? | 2009-09-10 | 2009-10-13 |  |  |  |  |  |  | 0d |  |  | 140h |  |
| 136 | 1.4.1.3.1 | QA deployment and testing | 15.62d? | 2009-09-10 | 2009-10-01 |  |  |  |  |  |  | 0d |  | QA [80%] | 100h |  |
| 137 | 1.4.1.3.2 | Sanity Check on Stage | 5.56d? | 2009-10-06 | 2009-10-13 | 133 |  |  |  |  |  | 0d |  | Jennifer [10%]; Jim [10%]; Thai [10%]; Eric [10%]; QA [50%] | 40h |  |
| 138 | 1.4.1.3.3 | Test Installation Guide | 1d? | 2009-09-10 | 2009-09-11 |  |  |  |  |  |  | 24.18d |  |  |  |  |

| ID | WBS | Task | Duration | Start | Finish | Predecessors | Total slack | Free slack | Resources | Work |
| --- | --- | --- | --- | --- | --- | --- | --- | --- | --- | --- |
| 139 | 1.4.1.4 | **Documentation** | 10d? | 2009-09-10 | 2009-09-24 |  | 15.18d |  |  | 87h |
| 140 | 1.4.1.4.1 | Draft the release announcement | 5d? | 2009-09-10 | 2009-09-17 |  | 19.56d | 0d | Jennifer [20%] | 8h |
| 141 | 1.4.1.4.2 | Email release announcement to all stakeholder | 0.62d? | 2009-09-17 | 2009-09-17 | 140 | 19.56d |  | Jennifer [20%] | 1h |
| 142 | 1.4.1.4.3 | Update the system installation guide | 10d? | 2009-09-10 | 2009-09-24 |  | 15.18d |  | Team [50%] | 40h |
| 143 | 1.4.1.4.4 | User guide for Dynamic search | 9.38d? | 2009-09-10 | 2009-09-23 |  | 15.81d |  | Jill Hadfield [40%] | 30h |
| 144 | 1.4.1.4.5 | Update download site and Gforge site | 5d? | 2009-09-10 | 2009-09-17 |  | 20.18d |  | Jennifer [20%] | 8h |
