# new_NBIA_4.4_Project_Plan

Schedule from MS Project, 2009-10-12 to 2010-03-19, A marks actual dates.
NIH

## Calendars

- Standard: Mon-Fri 08:00-12:00, 13:00-17:00; Sat-Sun off.

## Resources

| Resource |
| --- |
| Eric |
| Qinyan |
| Jim |
| Thai |
| Jennifer |
| Jill |
| Yiming |
| QA |
| UAT users |
| E |

## Schedule

| ID | WBS | Task | Duration | Start | Finish | Predecessors | Complete | Remaining | Total slack | Free slack | Constraint | Resources | Work | Actual work |
| --- | --- | --- | --- | --- | --- | --- | --- | --- | --- | --- | --- | --- | --- | --- |
| 1 | 1 | **NBIA 4.4 release** | 114.11d? | 2009-10-12 A | 2010-03-19 |  | 81% | 21.32d? | 0d |  | start no earlier than 2009-10-12 |  | 1861.4h | 1459.6h |
| 2 | 1.1 | **Inception** | 5d? | 2009-10-12 A | 2009-10-16 A |  | 100% |  |  |  |  |  | 136h | 136h |
| 3 | 1.1.1 | **Requirement** | 3.85d? | 2009-10-12 A | 2009-10-15 A |  | 100% |  |  |  |  |  | 16h | 16h |
| 4 | 1.1.1.1 | Customized series list | 3.85d? | 2009-10-12 A | 2009-10-15 A |  | 100% |  |  |  |  | Thai [40%]; Jennifer [20%] | 16h | 16h |
| 5 | 1.1.2 | **Analysis and Design** | 4.69d? | 2009-10-12 A | 2009-10-16 A |  | 100% |  |  |  |  |  | 40h | 40h |
| 6 | 1.1.2.1 | QC tool Design ? | 1.56d? | 2009-10-12 A | 2009-10-13 A |  | 100% |  |  |  |  | Qinyan [80%] | 10h | 10h |
| 7 | 1.1.2.2 | Delete function | 4.69d? | 2009-10-12 A | 2009-10-16 A |  | 100% |  |  |  |  | Jim [80%] | 30h | 30h |
| 8 | 1.1.3 | **Implementation** | 5d? | 2009-10-12 A | 2009-10-16 A |  | 100% |  |  |  |  |  | 44h | 44h |
| 9 | 1.1.3.1 | Remove existing remote search code | 3.33d | 2009-10-12 A | 2009-10-15 A |  | 100% |  |  |  |  | Eric [30%] | 8h | 8h |
| 10 | 1.1.3.2 | Customerized series list mockup | 5d? | 2009-10-12 A | 2009-10-16 A |  | 100% |  |  |  |  | Thai [40%] | 16h | 16h |
| 11 | 1.1.3.3 | QC tool pagination | 3.12d? | 2009-10-13 A | 2009-10-16 A | 6 | 100% |  |  |  |  | Qinyan [80%] | 20h | 20h |
| 12 | 1.1.4 | **Configuration and change management** | 1d? | 2009-10-12 A | 2009-10-12 A |  | 100% |  |  |  |  |  |  |  |
| 13 | 1.1.4.1 | Dev team starts to use trunk for 4.4 tasks modification | 1d? | 2009-10-12 A | 2009-10-12 A |  | 100% |  |  |  |  |  |  |  |
| 14 | 1.1.5 | **Support** | 5d? | 2009-10-12 A | 2009-10-16 A |  | 100% |  |  |  |  |  | 36h | 36h |
| 15 | 1.1.5.1 | NIAMS instance activities | 5d? | 2009-10-12 A | 2009-10-16 A |  | 100% |  |  |  |  | Jennifer [20%] | 8h | 8h |
| 16 | 1.1.5.2 | Data submission activities support | 3.33d? | 2009-10-12 A | 2009-10-15 A |  | 100% |  |  |  |  | Jennifer [30%] | 8h | 8h |
| 17 | 1.1.5.3 | 4.3 release effort | 5d? | 2009-10-12 A | 2009-10-16 A |  | 100% |  |  |  |  | Eric [50%] | 20h | 20h |
| 18 | 1.2 | **Elaboration** | 13.75d? | 2009-10-19 A | 2009-11-05 | 2 | 95% | 0.65d? | 48.87d | 0d |  |  | 393h | 372h |
| 19 | 1.2.1 | **Requirement** | 1.67d? | 2009-10-19 A | 2009-10-20 A |  | 100% |  |  |  |  |  | 8h | 8h |
| 20 | 1.2.1.1 | DICOMDIR requirement | 1.67d? | 2009-10-19 A | 2009-10-20 A |  | 100% |  |  |  |  | Jennifer [60%] | 8h | 8h |
| 21 | 1.2.2 | **Analysis and Design** | 12.5d? | 2009-10-19 A | 2009-11-04 |  | 90% | 1.29d? | 50.12d |  |  |  | 125h | 109h |
| 22 | 1.2.2.1 | Delete function design and prototype | 11.72d? | 2009-10-19 A | 2009-11-03 A |  | 100% |  |  |  |  | Jim [80%] | 75h | 75h |
| 23 | 1.2.2.2 | Detail Design Customized series list | 9.38d? | 2009-10-19 A | 2009-10-30 A |  | 100% |  |  |  |  | Thai [40%] | 30h | 30h |
| 24 | 1.2.2.3 | Detail Design collection description | 3.12d? | 2009-10-30 A | 2009-11-04 | 23 | 20% | 2.5d? | 70.94d |  |  | Thai [80%] | 20h | 4h |

| ID | WBS | Task | Duration | Start | Finish | Predecessors | Complete | Remaining | Total slack | Resources | Work | Actual work |
| --- | --- | --- | --- | --- | --- | --- | --- | --- | --- | --- | --- | --- |
| 25 | 1.2.3 | **Implementation** | 13.75d? | 2009-10-19 A | 2009-11-05 |  | 96% | 0.54d? | 48.87d |  | 184h | 179h |
| 26 | 1.2.3.1 | **Remote Search** | 12.5d? | 2009-10-19 A | 2009-11-04 A |  | 100% |  |  |  | 60h | 60h |
| 27 | 1.2.3.1.1 | Clean up Managed Beans | 10.42d? | 2009-10-19 A | 2009-11-02 A |  | 100% |  |  | Eric [60%] | 50h | 50h |
| 28 | 1.2.3.1.2 | Audit existing DTO | 2.08d? | 2009-11-02 A | 2009-11-04 A | 27 | 100% |  |  | Eric [60%] | 10h | 10h |
| 29 | 1.2.3.2 | **QC Tool** | 13.75d? | 2009-10-19 A | 2009-11-05 |  | 94% | 0.79d? | 48.87d |  | 124h | 119h |
| 30 | 1.2.3.2.1 | **Database modification** | 3.12d? | 2009-10-19 A | 2009-10-22 |  | 75% | 0.78d? | 59.5d |  | 20h | 15h |
| 31 | 1.2.3.2.1.1 | data migration script (liquibase script) | 3.12d? | 2009-10-19 A | 2009-10-22 A |  | 100% |  |  | Qinyan [40%] | 10h | 10h |
| 32 | 1.2.3.2.1.2 | data migration script for new super curator role and super admin role | 3.12d? | 2009-10-19 A | 2009-10-22 |  | 50% | 1.56d? | 80.32d | Qinyan [40%] | 10h | 5h |
| 33 | 1.2.3.2.2 | QC Tool UI including the pagination | 3.12d? | 2009-10-22 A | 2009-10-27 A | 31 | 100% |  |  | Qinyan [80%] | 20h | 20h |
| 34 | 1.2.3.2.3 | Merge code back to trunk | 2.5d? | 2009-10-27 A | 2009-10-29 A | 33 | 100% |  |  | Qinyan [80%] | 16h | 16h |
| 35 | 1.2.3.2.4 | Domain object change and unit test | 3.12d? | 2009-10-29 A | 2009-11-03 A | 34 | 100% |  |  | Qinyan [80%] | 20h | 20h |
| 36 | 1.2.3.2.5 | Modify DB Views and grid service code for the visibility change | 9.38d? | 2009-10-19 A | 2009-10-30 A |  | 100% |  |  | Thai [40%] | 30h | 30h |
| 37 | 1.2.3.2.6 | Modify classic search and others for visibility change | 1.25d? | 2009-11-04 A | 2009-11-05 A | 28 | 100% |  |  | Eric [80%] | 8h | 8h |
| 38 | 1.2.3.2.7 | Modify DB adator for visibility change | 1.56d? | 2009-11-03 A | 2009-11-05 A | 22 | 100% |  |  | Jim [80%] | 10h | 10h |
| 39 | 1.2.4 | **Testing** | 2.5d? | 2009-10-19 A | 2009-10-21 A |  | 100% |  |  |  | 16h | 16h |
| 40 | 1.2.4.1 | Deliver Tag for QA to do the regression test after cleaning up the Beans | 2.5d? | 2009-10-19 A | 2009-10-21 A |  | 100% |  |  | Yiming [80%] | 16h | 16h |
| 41 | 1.2.5 | **Support** | 10d? | 2009-10-19 A | 2009-10-30 A |  | 100% |  |  |  | 60h | 60h |
| 42 | 1.2.5.1 | Data Submission activities support | 8.33d? | 2009-10-19 A | 2009-10-29 A |  | 100% |  |  | Jennifer [30%] | 20h | 20h |
| 43 | 1.2.5.2 | External installation site support | 10d? | 2009-10-19 A | 2009-10-30 A |  | 100% |  |  | Jennifer [30%]; Eric [20%] | 40h | 40h |
| 44 | 1.3 | **Construction** | 53.43d? | 2009-11-05 A | 2010-01-20 | 18 | 91% | 4.56d? | 0d |  | 1012.4h | 951.6h |
| 45 | 1.3.1 | **Iteration 1** | 24.81d? | 2009-11-05 A | 2009-12-10 A |  | 100% |  |  |  | 550.4h | 550.4h |
| 46 | 1.3.1.1 | **Requirement** | 2.86d? | 2009-11-05 A | 2009-11-10 A |  | 100% |  |  |  | 16h | 16h |
| 47 | 1.3.1.1.1 | Remote Search | 2.86d? | 2009-11-05 A | 2009-11-10 A |  | 100% |  |  | Eric [70%] | 16h | 16h |
| 48 | 1.3.1.2 | **Analysis and Design** | 15.29d? | 2009-11-10 A | 2009-12-01 A |  | 100% |  |  |  | 80h | 80h |
| 49 | 1.3.1.2.1 | Remote Search prototype | 7.14d? | 2009-11-10 A | 2009-11-19 A | 47 | 100% |  |  | Eric [70%] | 40h | 40h |
| 50 | 1.3.1.2.2 | Design grid service/rquest/response/discovery | 7.14d? | 2009-11-19 A | 2009-12-01 A | 49 | 100% |  |  | Eric [70%] | 40h | 40h |

| ID | WBS | Task | Duration | Start | Finish | Predecessors | Complete | Resources | Work | Actual work |
| --- | --- | --- | --- | --- | --- | --- | --- | --- | --- | --- |
| 51 | 1.3.1.3 | **Implementation** | 23.88d? | 2009-11-05 A | 2009-12-09 A |  | 100% |  | 393.4h | 393.4h |
| 52 | 1.3.1.3.1 | **Customized List** | 21.47d? | 2009-11-05 A | 2009-12-07 A |  | 100% |  | 132h | 132h |
| 53 | 1.3.1.3.1.1 | GUI | 4.69d? | 2009-11-05 A | 2009-11-12 A | 23 | 100% | Thai [80%] | 30h | 30h |
| 54 | 1.3.1.3.1.2 | Backing Bean, business login, & validation | 6.25d? | 2009-11-12 A | 2009-11-20 A | 53 | 100% | Thai [80%] | 40h | 40h |
| 55 | 1.3.1.3.1.3 | Database change and migration script | 4.69d? | 2009-11-20 A | 2009-11-30 A | 54 | 100% | Thai [80%] | 30h | 30h |
| 56 | 1.3.1.3.1.4 | Data Access Layer | 4.69d? | 2009-11-30 A | 2009-12-07 A | 55 | 100% | Thai [80%] | 30h | 30h |
| 57 | 1.3.1.3.1.5 | Code Review | 0.16d? | 2009-12-07 A | 2009-12-07 A | 56 | 100% | Thai [80%]; Jim [80%] | 2h | 2h |
| 58 | 1.3.1.3.2 | **Delete** | 23.88d? | 2009-11-05 A | 2009-12-09 A |  | 100% |  | 120h | 120h |
| 59 | 1.3.1.3.2.1 | Implement and Test Audit Trail Object | 1.88d? | 2009-11-05 A | 2009-11-09 A |  | 100% | Jim [80%] | 12h | 12h |
| 60 | 1.3.1.3.2.2 | Implement and Test look up function | 1.25d? | 2009-11-10 A | 2009-11-12 A | 59 | 100% | Jim [80%] | 8h | 8h |
| 61 | 1.3.1.3.2.3 | Implement and Test delete Images(ct and general) | 1.88d? | 2009-11-12 A | 2009-11-13 A | 60 | 100% | Jim [80%] | 12h | 12h |
| 62 | 1.3.1.3.2.4 | Implement and Test delete series | 1.25d? | 2009-11-16 A | 2009-11-17 A | 61 | 100% | Jim [80%] | 8h | 8h |
| 63 | 1.3.1.3.2.5 | Implement and Test delete study | 1.88d? | 2009-11-17 A | 2009-11-19 A | 62 | 100% | Jim [80%] | 12h | 12h |
| 64 | 1.3.1.3.2.6 | Implement and Test delete patient | 1.88d? | 2009-11-19 A | 2009-11-23 A | 63 | 100% | Jim [80%] | 12h | 12h |
| 65 | 1.3.1.3.2.7 | Implement and test the CRON job | 1.25d? | 2009-11-23 A | 2009-11-24 A | 64 | 100% | Jim [80%] | 8h | 8h |
| 66 | 1.3.1.3.2.8 | Implement and Test online delete GUI | 1.88d? | 2009-11-24 A | 2009-11-27 A | 65 | 100% | Jim [80%] | 12h | 12h |
| 67 | 1.3.1.3.2.9 | Implement and Test the CTP modification | 2.5d? | 2009-12-01 A | 2009-12-03 A | 66 | 100% | Jim [80%] | 16h | 16h |
| 68 | 1.3.1.3.2.10 | Data migration to create delete admin (delete admin, super curator) | 0.62d? | 2009-12-04 A | 2009-12-04 A | 67 | 100% | Jim [80%] | 4h | 4h |
| 69 | 1.3.1.3.2.11 | Integration Test | 2.5d? | 2009-12-07 A | 2009-12-09 A | 68 | 100% | Jim [80%] | 16h | 16h |
| 70 | 1.3.1.3.3 | **QC Tool** | 21.08d? | 2009-11-05 A | 2009-12-04 A |  | 100% |  | 105h | 105h |
| 71 | 1.3.1.3.3.1 | Implement and Test the search and search result | 9.27d? | 2009-11-05 A | 2009-11-19 A |  | 100% | Qinyan [80%] | 55h | 55h |
| 72 | 1.3.1.3.3.2 | Implement and Test the QC status change from the result list | 7.81d? | 2009-11-19 A | 2009-12-04 A | 71 | 100% | Qinyan [80%] | 50h | 50h |
| 73 | 1.3.1.3.4 | **Remote Search** | 21.33d? | 2009-11-05 A | 2009-12-07 A |  | 100% |  | 36.4h | 36.4h |
| 74 | 1.3.1.3.4.1 | upgrade to caGrid 1.3.x and test | 1.56d? | 2009-12-01 A | 2009-12-03 A | 48 | 100% | Eric [80%] | 10h | 10h |
| 75 | 1.3.1.3.4.2 | change grid service name to NBIAService | 0.31d? | 2009-12-03 A | 2009-12-03 A | 74 | 100% | Eric [80%] | 2h | 2h |
| 76 | 1.3.1.3.4.3 | Discovery module | 2.81d? | 2009-11-05 A | 2009-11-10 A | 75 | 100% | Eric [80%] | 18h | 18h |
| 77 | 1.3.1.3.4.4 | Remove gridServiceUrl | 1d? | 2009-12-04 A | 2009-12-07 A | 76 | 100% | Eric [80%] | 6.4h | 6.4h |
| 78 | 1.3.1.4 | CTP implementation for creating Equipment object | 0.94d? | 2009-12-09 A | 2009-12-10 A | 58 | 100% | Jim [80%] | 6h | 6h |

| ID | WBS | Task | Duration | Start | Finish | Predecessors | Complete | Remaining | Total slack | Resources | Work | Actual work |
| --- | --- | --- | --- | --- | --- | --- | --- | --- | --- | --- | --- | --- |
| 79 | 1.3.1.5 | **Configuration and change management** | 12.5d? | 2009-11-05 A | 2009-11-24 A |  | 100% |  |  |  | 5h | 5h |
| 80 | 1.3.1.5.1 | Create tags for QA to testing individual functions | 12.5d? | 2009-11-05 A | 2009-11-24 A |  | 100% |  |  | Jennifer [5%] | 5h | 5h |
| 81 | 1.3.1.6 | **Support** | 22.89d? | 2009-11-05 A | 2009-12-08 A |  | 100% |  |  |  | 50h | 50h |
| 82 | 1.3.1.6.1 | Upgrade BDA patch for all-in-one deployment apptab issue. | 1.56d? | 2009-12-07 A | 2009-12-08 A | 73 | 100% |  |  | Eric [80%] | 10h | 10h |
| 83 | 1.3.1.6.2 | External installation | 12.5d? | 2009-11-05 A | 2009-11-24 A |  | 100% |  |  | Jennifer [40%] | 40h | 40h |
| 84 | 1.3.2 | **Iteration 2** | 28.61d? | 2009-12-10 A | 2010-01-20 | 45 | 81% | 5.53d? | 0d |  | 462h | 401.2h |
| 85 | 1.3.2.1 | **Implementation** | 26.28d? | 2009-12-10 A | 2010-01-15 |  | 82% | 4.74d? | 2.33d |  | 454h | 401.2h |
| 86 | 1.3.2.1.1 | **Code Review** | 5d? | 2009-12-10 A | 2009-12-17 |  | 40% | 3d? | 23.61d |  | 10h | 4h |
| 87 | 1.3.2.1.1.1 | Delete | 5d? | 2009-12-10 | 2009-12-17 |  |  |  | 22.61d | Eric [5%]; Jim [5%] | 4h |  |
| 88 | 1.3.2.1.1.2 | List | 2.5d? | 2009-12-10 | 2009-12-15 |  |  |  | 25.11d | Jim [5%]; Thai [5%] | 2h |  |
| 89 | 1.3.2.1.1.3 | QC Tool Search/Batch update | 5d? | 2009-12-10 A | 2009-12-17 A |  | 100% |  |  | Eric [5%]; Qinyan [5%] | 4h | 4h |
| 90 | 1.3.2.1.2 | **Remote Search** | 26.28d? | 2009-12-10 A | 2010-01-15 |  | 96% | 1.15d? | 0d |  | 144h | 140h |
| 91 | 1.3.2.1.2.1 | Disovery (search term each node) | 1.25d? | 2009-12-21 A | 2009-12-22 A | 117, 92 | 100% |  |  | Jim [80%] | 8h | 8h |
| 92 | 1.3.2.1.2.2 | Update the drilldown methods for remote search with security check | 2.34d? | 2009-12-17 A | 2009-12-22 A | 117 | 100% |  |  | Jim [80%] | 15h | 15h |
| 93 | 1.3.2.1.2.3 | Patient Search | 4.69d? | 2009-12-10 A | 2009-12-17 A |  | 100% |  |  | Eric [80%] | 30h | 30h |
| 94 | 1.3.2.1.2.4 | Drill Down to Study/Series | 1.56d? | 2009-12-17 A | 2009-12-18 A | 93 | 100% |  |  | Eric [80%] | 10h | 10h |
| 95 | 1.3.2.1.2.5 | Drill down to thumbnail | 2.34d? | 2009-12-18 A | 2009-12-31 A | 94 | 100% |  |  | Eric [80%] | 15h | 15h |
| 96 | 1.3.2.1.2.6 | DICOM tag viewing | 1.25d? | 2009-12-31 A | 2010-01-04 A | 95 | 100% |  |  | Eric [80%] | 8h | 8h |
| 97 | 1.3.2.1.2.7 | Classic download and download manager | 3.75d? | 2010-01-04 A | 2010-01-08 A | 96 | 100% |  |  | Eric [80%] | 24h | 24h |
| 98 | 1.3.2.1.2.8 | Testing including performance | 4.69d? | 2010-01-08 A | 2010-01-14 A | 97 | 100% |  |  | Eric [80%] | 30h | 30h |
| 99 | 1.3.2.1.2.9 | Code Review | 1d? | 2010-01-14 | 2010-01-15 | 98 |  |  | 0d | Eric [25%]; Jim [25%] | 4h |  |
| 100 | 1.3.2.1.3 | **Collection Description** | 20.19d? | 2009-12-10 A | 2010-01-07 |  | 97% | 0.63d? | 8.43d |  | 102h | 100h |
| 101 | 1.3.2.1.3.1 | Build UI to list all collection and editable component for selected collection | 1.25d? | 2009-12-10 A | 2009-12-11 A |  | 100% |  |  | Thai [80%] | 8h | 8h |
| 102 | 1.3.2.1.3.2 | script for table creation and new role | 1.25d? | 2009-12-11 A | 2009-12-15 A | 101 | 100% |  |  | Thai [80%] | 8h | 8h |
| 103 | 1.3.2.1.3.3 | check user authorization to edit collection description | 1.06d? | 2009-12-15 A | 2009-12-21 A | 102 | 100% |  |  | Thai [80%] | 8h | 8h |
| 104 | 1.3.2.1.3.4 | Implement backing bean and business logic | 1.25d? | 2009-12-16 A | 2009-12-21 A | 103 | 100% |  |  | Thai [80%] | 8h | 8h |
| 105 | 1.3.2.1.3.5 | Implement DAO to create/search/update collection description | 1.25d? | 2009-12-17 A | 2009-12-21 A | 104 | 100% |  |  | Thai [80%] | 8h | 8h |
| 106 | 1.3.2.1.3.6 | admin page to create/edit the collection description | 9.38d? | 2009-12-21 A | 2010-01-07 A | 105 | 100% |  |  | Thai [80%] | 60h | 60h |
| 107 | 1.3.2.1.3.7 | Code Review | 0.5d? | 2009-12-10 | 2009-12-11 |  |  |  | 28.11d | Thai [25%]; Qinyan [25%] | 2h |  |
| 108 | 1.3.2.1.4 | Grid Service Performance | 1d? | 2009-12-10 A | 2009-12-11 A |  | 100% |  |  |  |  |  |

| ID | WBS | Task | Duration | Start | Finish | Predecessors | Complete | Remaining | Total slack | Free slack | Resources | Work | Actual work |
| --- | --- | --- | --- | --- | --- | --- | --- | --- | --- | --- | --- | --- | --- |
| 109 | 1.3.2.1.5 | **QC Tool** | 21.75d? | 2009-12-10 A | 2010-01-11 |  | 74% | 5.57d? | 6.86d |  |  | 140h | 101.2h |
| 110 | 1.3.2.1.5.1 | Implement and Test the Super curator delete page | 6.25d? | 2009-12-10 A | 2009-12-18 A |  | 100% |  |  |  | Qinyan [80%] | 40h | 40h |
| 111 | 1.3.2.1.5.2 | Implement and Test the QC status change from the individual series page | 3.75d? | 2009-12-10 A | 2009-12-23 A | 110 | 100% |  |  |  | Qinyan [80%] | 24h | 24h |
| 112 | 1.3.2.1.5.3 | Implement and Test the the DICOM Header information based on the individaul images | 4.69d? | 2009-12-23 A | 2009-12-30 A | 111 | 100% |  |  |  | Qinyan [80%] | 30h | 30h |
| 113 | 1.3.2.1.5.4 | Remove old QC tool code | 1.25d? | 2009-12-30 A | 2009-12-31 | 112 | 90% | 0.12d? | 6.86d | 1d | Qinyan [80%] | 8h | 7.2h |
| 114 | 1.3.2.1.5.5 | Validate if the status change will impact the list in QC tool | 4.69d? | 2010-01-04 | 2010-01-08 | 113 |  |  | 5.86d | 0d | Qinyan [80%] | 30h |  |
| 115 | 1.3.2.1.5.6 | Code Review | 0.62d? | 2010-01-08 | 2010-01-11 | 114 |  |  | 6.86d |  | Qinyan [80%]; Eric [80%] | 8h |  |
| 116 | 1.3.2.1.6 | **CTP upgrade for object Tracker** | 17.09d? | 2009-12-15 A | 2010-01-07 |  | 95% | 0.92d? | 8.66d |  |  | 58h | 56h |
| 117 | 1.3.2.1.6.1 | db adaptor interface change and test | 2.5d? | 2009-12-15 A | 2009-12-17 A |  | 100% |  |  |  | Jim [80%] | 16h | 16h |
| 118 | 1.3.2.1.6.2 | code review | 0.5d? | 2009-12-17 | 2009-12-18 | 117 |  |  | 22.76d |  | Jim [25%]; Qinyan [25%] | 2h |  |
| 119 | 1.3.2.1.6.3 | upgrade CTP | 6.25d? | 2009-12-22 A | 2010-01-07 A | 92 | 100% |  |  |  | Jim [80%] | 40h | 40h |
| 120 | 1.3.2.2 | Support to evaluate public cloud provider | 1.33d? | 2010-01-15 | 2010-01-20 | 90 |  |  | 0d |  | Eric [75%] | 8h |  |
| 121 | 1.4 | **Transition** | 41.94d? | 2010-01-20 | 2010-03-19 | 44 |  |  | 0d |  |  | 320h |  |
| 122 | 1.4.1 | Requirement | 1d? | 2010-01-20 | 2010-01-21 |  |  |  | 33.75d |  |  |  |  |
| 123 | 1.4.2 | Analysis and Design | 1d? | 2010-01-20 | 2010-01-21 |  |  |  | 33.75d |  |  |  |  |
| 124 | 1.4.3 | **Implementation** | 41.94d? | 2010-01-20 | 2010-03-19 |  |  |  | 0d |  |  | 320h |  |
| 125 | 1.4.3.1 | **QA deployment** | 23.44d? | 2010-01-20 | 2010-02-22 |  |  |  | 0d |  |  | 250h |  |
| 126 | 1.4.3.1.1 | QA Testing | 23.44d? | 2010-01-20 | 2010-02-22 |  |  |  | 0d |  | QA [80%] | 150h |  |
| 127 | 1.4.3.1.2 | Defect fix | 1d? | 2010-01-20 | 2010-01-21 |  |  |  | 17.75d |  |  | 100h |  |
| 128 | 1.4.3.2 | **Stage deployment** | 17.5d? | 2010-02-22 | 2010-03-18 | 125 |  |  | 0d |  |  | 70h |  |
| 129 | 1.4.3.2.1 | UAT Testing | 17.5d? | 2010-02-22 | 2010-03-18 |  |  |  | 0d |  | UAT users [50%] | 70h |  |
| 130 | 1.4.3.3 | productioin deployment | 1d? | 2010-03-18 | 2010-03-19 | 128 |  |  | 0d |  |  |  |  |
| 131 | 1.4.4 | Configuration and change management | 1d? | 2010-01-20 | 2010-01-21 |  |  |  | 33.75d |  |  |  |  |
| 132 | 1.4.5 | Support | 1d? | 2010-01-20 | 2010-01-21 |  |  |  | 33.75d |  |  |  |  |
