# Grid Security

Schedule from MS Project, 2010-04-08 to 2011-01-21, A marks actual dates.
NCI

## Calendars

- Standard: Mon-Fri 08:00-12:00, 13:00-17:00; Sat-Sun off.

## Resources

| Resource |
| --- |
| Eric |
| Jim |
| Qinyan |
| Yiming |
| NBIA Team |
| ic |
| TBD |
| Robert |
| Peter |
| Paul M |
| Pat |
| Quy |

## Schedule

| ID | WBS | Task | Duration | Start | Finish | Predecessors | Complete | Remaining | Total slack | Free slack | Constraint | Deadline | Resources | Work | Actual work |
| --- | --- | --- | --- | --- | --- | --- | --- | --- | --- | --- | --- | --- | --- | --- | --- |
| 1 | 1 | Ongoing Support for NBIA 4.4/4.5 Adopters/NCI Production support (E) | 30.56w? | 2010-06-22 | 2011-01-21 |  |  |  | -10.8d | 0d |  | 2011-01-06 | Eric [5%] | 50h |  |
| 2 | 2 | Ongoing Support for NBIA 4.4/4.5 Adopters/NCI Production support (J) | 17w | 2010-04-14 | 2010-08-11 |  |  |  | 117.07d |  |  |  | Jim [5%] | 34h |  |
| 3 | 3 | Ongoing Support for NBIA 4.4/4.5 Adopters/NCI Production support (Q) | 17w | 2010-06-03 | 2010-09-30 |  |  |  | 81.3d |  |  |  | Qinyan [5%] | 34h |  |
| 5 | 4 | **NBIA 4.4** | 3.26d? | 2010-04-09 A | 2010-04-14 |  | 57% | 1.41d? | 202.54d |  |  |  |  | 10h | 10h |
| 6 | 4.1 | Fill out paperwork for production | 0.53d? | 2010-04-09 A | 2010-04-09 A |  | 100% |  |  |  | must start on 2010-04-09 |  | Eric [95%] | 4h | 4h |
| 7 | 4.2 | Sanity Check after deployment (E) | 2.1h | 2010-04-13 A | 2010-04-13 A |  | 100% |  |  |  | must start on 2010-04-13 |  | Eric [95%] | 2h | 2h |
| 8 | 4.3 | Sanity Check after deployment (J) | 2.1h | 2010-04-13 A | 2010-04-13 A |  | 100% |  |  |  | must start on 2010-04-13 |  | Jim [95%] | 2h | 2h |
| 9 | 4.4 | Sanity Check after deployment (Q) | 2.1h | 2010-04-13 A | 2010-04-13 A |  | 100% |  |  |  | must start on 2010-04-13 |  | Qinyan [95%] | 2h | 2h |
| 10 | 4.5 | Perform Summary and review of NBIA v4.4 | 1d? | 2010-04-13 | 2010-04-14 | 7, 8, 9 |  |  | 202.54d |  |  |  |  |  |  |
| 12 | 5 | **Security Work For NBIA ( a part of NBIA 4.5)** | 42.24d? | 2010-04-08 A | 2010-06-07 |  | 99% | 0.2d? | 164.56d |  |  |  |  | 274.2h | 272.36h |
| 13 | 5.1 | **Grid Security** | 42.24d? | 2010-04-08 A | 2010-06-07 |  | 99% | 0.2d? | 164.56d |  |  |  |  | 274.2h | 272.36h |
| 14 | 5.1.1 | Preliminary Scope Document | 2.11d? | 2010-04-08 A | 2010-04-12 |  | 90% | 0.21d? | 0d |  | must start on 2010-04-08 |  | Eric [95%] | 16h | 14.4h |
| 15 | 5.1.2 | Simple Architecture Diagram | 1.05d? | 2010-04-12 A | 2010-04-13 A | 14 | 100% |  |  |  |  |  | Eric [95%] | 8h | 8h |
| 16 | 5.1.3 | Work with Systems team to prepare DEV tier | 3w | 2010-04-13 A | 2010-05-04 A | 15 | 100% |  |  |  |  |  | Eric [1%] | 1.2h | 1.2h |
| 17 | 5.1.4 | Revise deployment scripts | 10.64d | 2010-04-13 A | 2010-04-28 A | 15 | 100% |  |  |  |  |  | Eric [94%] | 80h | 80h |
| 18 | 5.1.5 | Fix public filter to pay proper attention to site | 4.26d? | 2010-04-29 A | 2010-05-07 A |  | 100% |  |  |  |  |  | Eric [94%] | 32h | 32h |
| 19 | 5.1.6 | Revise service to pay attention to credentials | 5.32d? | 2010-04-28 A | 2010-05-13 A | 15 | 100% |  |  |  |  |  | Eric [94%] | 40h | 40h |
| 20 | 5.1.7 | **Automated Tests** | 2.11d? | 2010-05-19 A | 2010-05-21 A | 17, 19, 16 | 100% |  |  |  |  |  |  | 16h | 16h |
| 21 | 5.1.7.1 | Work with virtualPACS to validate security | 2.11d? | 2010-05-19 A | 2010-05-21 A |  | 100% |  |  |  |  |  | Eric [95%] | 16h | 16h |
| 22 | 5.1.8 | GUI Installer | 3.16d? | 2010-05-21 A | 2010-05-26 A | 17 | 100% |  |  |  |  |  | Eric [95%] | 24h | 24h |
| 23 | 5.1.9 | Promote to QA | 0.13d? | 2010-05-26 A | 2010-05-26 A | 21 | 100% |  |  |  |  |  | Eric [95%] | 1h | 1h |
| 24 | 5.1.10 | Investigate building script to add X.509 CSM users | 4.21d? | 2010-05-26 A | 2010-06-07 A |  | 100% |  |  |  |  |  | Eric [95%] | 32h | 32h |
| 25 | 5.1.11 | Ability to deploy second unsecured container | 3.16d? | 2010-05-05 A | 2010-05-17 |  | 99% | 0.03d? | 179.49d |  |  |  | Eric [95%] | 24h | 23.76h |
| 27 | 6 | **Bug Fixes** | 67d? | 2010-04-08 A | 2010-07-09 |  | 82% | 11.74d? | 74.59d | 0d |  |  |  | 690h | 492.2h |
| 28 | 6.1 | **[#27885] CTP db verifier can return misleading results when resending images** | 16.05d? | 2010-04-08 A | 2010-04-30 A |  | 100% |  |  |  |  |  |  | 120h | 120h |
| 29 | 6.1.1 | Schema Change (Liquibase) | 2.11d? | 2010-04-08 A | 2010-04-12 A |  | 100% |  |  |  |  |  | Jim [95%] | 16h | 16h |

Notes:
- 14: There was more then 8 hrs in this, but spent some time previously chatting with Peter Y. about the options for scope.
- 16: Estimating this time spent with systems team is a little voodoo. The time to create the requests is negligible.... but if there is pushback time with go up.... and time to test. This won't all happen at once / 1. Request Host Cert / 2. Open port for HTTPS / 3. Apache mapping for secure service
- 21: The availability of these external parties may be a risk factor.
- 23: should just be an 1hr or less given that DEV tier has gone smoothly

| ID | WBS | Task | Type | Duration | Start | Finish | Predecessors | Complete | Remaining | Total slack | Constraint | Resources | Work | Actual work |
| --- | --- | --- | --- | --- | --- | --- | --- | --- | --- | --- | --- | --- | --- | --- |
| 30 | 6.1.2 | **Database adapter changes** |  | 10.79d? | 2010-04-12 A | 2010-04-26 A |  | 100% |  |  |  |  | 80h | 80h |
| 31 | 6.1.2.1 | New Submission |  | 5.26d? | 2010-04-12 A | 2010-04-19 A | 29 | 100% |  |  |  | Jim [95%] | 40h | 40h |
| 32 | 6.1.2.2 | Re-Submission |  | 5.26d? | 2010-04-19 A | 2010-04-26 A | 29 | 100% |  |  |  | Jim [95%] | 40h | 40h |
| 33 | 6.1.3 | Testing |  | 3.16d? | 2010-04-26 A | 2010-04-30 A | 31, 32 | 100% |  |  |  | Jim [95%] | 24h | 24h |
| 34 | 6.2 | [#27778] Null study_date should be disallowed on submission |  | 2.95d? | 2010-04-30 A | 2010-05-04 A |  | 100% |  |  |  | Jim [95%] | 22.4h | 22.4h |
| 35 | 6.3 | [#17752] DICOM tags with type SQ (sequence) are not handled properly by database adapter code | milestone | 0d? | 2010-05-04 A | 2010-05-04 A |  | 100% |  |  |  | Jim [95%] |  |  |
| 36 | 6.4 | [#21826] Message for IRW is not consistent | milestone | 0d? | 2010-05-04 A | 2010-05-04 A |  | 100% |  |  |  | Jim [95%] |  |  |
| 37 | 6.5 | [#27758] Buttons are overlapping when click View Contents. | milestone | 0d? | 2010-05-04 A | 2010-05-04 A |  | 100% |  |  |  | Jim [95%] |  |  |
| 39 | 6.6 | [#28582] (Online) deletion sometimes leaves dangling rows in general_image |  | 2.11d? | 2010-05-20 A | 2010-05-24 A |  | 100% |  |  |  | Jim [95%] | 16h | 16h |
| 40 | 6.7 | [#21263] The progress bar is 100% complete but the page starts blinking while the data is removed. |  | 1.05d? | 2010-05-24 A | 2010-05-25 A |  | 100% |  |  |  | Jim [95%] | 8h | 8h |
| 41 | 6.8 | [#21827] FileSender displays error when it starts. |  | 1.05d? | 2010-05-27 A | 2010-05-28 A |  | 100% |  |  |  | Jim [95%] | 8h | 8h |
| 42 | 6.9 | [#27883] PrettyFaces is hacked with custom code |  | 2.11d? | 2010-06-07 A | 2010-06-09 A | 13 | 100% |  |  |  | Eric [95%] | 16h | 16h |
| 43 | 6.10 | [#24145] Nbia-Register is back to Nbia login page when User completes the User Registration. |  | 0.53d? | 2010-05-25 A | 2010-05-26 A |  | 100% |  |  |  | Jim [95%] | 4h | 4h |
| 44 | 6.11 | [#26599] The Criteria Selected in search result page display the white space incorrectly. |  | 1.05d? | 2010-06-02 A | 2010-06-03 A |  | 100% |  |  |  | Jim [95%] | 8h | 8h |
| 45 | 6.12 | [#28126] Formatting of CTP config.xml in client distribution is less than ideal |  | 3.16d | 2010-06-01 A | 2010-06-04 A |  | 100% |  |  |  | Eric [95%] | 24h | 24h |
| 46 | 6.13 | [#28438] NBIA Data Service Model is out of synch with caDSR model |  | 5.26d? | 2010-06-09 A | 2010-06-16 A |  | 100% |  |  |  | Eric [95%] | 40h | 40h |
| 47 | 6.14 | [#28441] Pathname of DICOM files in download zips is too long |  | 2.11d? | 2010-06-16 A | 2010-06-18 A |  | 100% |  |  |  | Eric [95%] | 16h | 16h |
| 49 | 6.15 | Install Cedara/ISG on DEV tier |  | 1.05d? | 2010-05-05 A | 2010-05-06 A |  | 100% |  |  |  | Jim [95%] | 8h | 8h |
| 50 | 6.16 | [#17518] IRW 2.0.0.3 has issue to display images |  | 1.05d? | 2010-05-06 A | 2010-05-07 A | 49 | 100% |  |  |  | Jim [95%] | 8h | 8h |
| 51 | 6.17 | [#27437] IndexOutOfBoundsException is displayed in I-Response when doing Visualization. |  | 3.16d? | 2010-05-07 A | 2010-05-12 A | 49 | 100% |  |  |  | Jim [95%] | 24h | 24h |
| 52 | 6.18 | Cedara 2.1 Regression |  | 5.26d? | 2010-05-12 A | 2010-05-19 A | 49 | 100% |  |  |  | Jim [95%] | 40h | 40h |
| 53 | 6.19 | [#28437] There's no way to get back to simple/advanced search from dynamic search |  | 1.05d? | 2010-05-19 A | 2010-05-20 A |  | 100% |  |  |  | Jim [95%] | 8h | 8h |
| 54 | 6.20 | [#28624] On the DEV tier, the CTP backup script is not preserving five backups |  | 0.53d? | 2010-04-08 A | 2010-04-08 A |  | 100% |  |  |  | Eric [95%] | 4h | 4h |
| 55 | 6.21 | [#28683] Download Manager chokes on annotation downloads |  | 1.05d? | 2010-04-08 A | 2010-04-09 A |  | 100% |  |  |  | Eric [95%] | 8h | 8h |
| 56 | 6.22 | [#28767] NBIA displays extra OK page when it connects to I-Response Client |  | 1.05d? | 2010-04-08 A | 2010-04-09 A |  | 100% |  |  |  | Jim [95%] | 8h | 8h |
| 57 | 6.23 | [#28805] (LIDC) Annotation submission fails because of study-uid injected into root element by default rule |  | 1d? | 2010-04-08 A | 2010-04-08 A |  | 100% |  |  |  | Jim [95%] | 7.6h | 7.6h |
| 58 | 6.24 | [#28877] Legitimate quarantine can cause every other image in queue to be quarantined |  | 5.26d? | 2010-04-08 A | 2010-05-26 |  | 90% | 0.53d? | 106.8d |  | Jim [95%] | 40h | 36h |
| 59 | 6.25 | [#28881] A body_part_examined that is too long should be truncated instead of quarantined |  | 0.53d? | 2010-04-08 A | 2010-04-08 A |  | 100% |  |  |  | Jim [95%] | 4h | 4h |
| 60 | 6.26 | [#28945] CTP grinds to a halt when under severe load |  | 15d | 2010-06-21 A | 2010-07-09 |  | 15% | 12.75d | 0d | must start on 2010-06-21 | Eric [95%]; Jim [95%] | 228h | 34.2h |
| 61 | 6.27 | [#28886] Restrict image visualization feature to series that Cedara can handle |  | 1.05d? | 2010-04-08 A | 2010-04-09 A |  | 100% |  |  |  | Jim [95%] | 8h | 8h |
| 62 | 6.28 | [#28947] Cine feature throws exception when viewing from data basket |  | 0.53d? | 2010-04-08 A | 2010-04-08 A |  | 100% |  |  |  | Eric [95%] | 4h | 4h |
| 63 | 6.29 | [#28978] Annotation size of series in data basket always show 0 |  | 1.05d? | 2010-04-08 A | 2010-04-09 A |  | 100% |  |  |  | Eric [95%] | 8h | 8h |

Notes:
- 40: The dependency here is fake. The grid security stuff is higher priority so it should be done first before doing these bug fixes
- 46: Regenerate the data service from caDSR model. / Decide whether to use NCIA 3 or NBIA 5 model. / Inform existing users of the change to the model. / Upgrade the version number for the grid service (1.4?)
- 50: There were more bugs, but they turned out to be OBE
- 52: This include documenting the steps taken to carry out the tests.
- 58: Eric was on this too.... but not adding as resource which will complicate plan.

| ID | WBS | Task | Type | Duration | Start | Finish | Predecessors | Complete | Remaining | Total slack | Free slack | Constraint | Resources | Work | Actual work |
| --- | --- | --- | --- | --- | --- | --- | --- | --- | --- | --- | --- | --- | --- | --- | --- |
| 65 | 7 | **CIP Support** |  | 101.68d? | 2010-04-08 A | 2010-08-27 |  | 55% | 46.13d? | 105.12d |  |  |  | 838.01h | 462.01h |
| 66 | 7.1 | **LIDC Conversion to AIM 2.0/3.0** |  | 57.26d? | 2010-04-08 A | 2010-06-28 |  | 87% | 7.58d? | 149.54d |  |  |  | 302.01h | 262.01h |
| 67 | 7.1.1 | Scope Document |  | 0.13d? | 2010-04-08 A | 2010-04-08 A |  | 100% |  |  |  |  | Qinyan [95%] | 1h | 1h |
| 68 | 7.1.2 | Compare with the Franken model to figure out the difference |  | 3.16d? | 2010-04-08 A | 2010-04-13 A |  | 100% |  |  |  |  | Qinyan [95%] | 24h | 24h |
| 69 | 7.1.3 | Kickoff meeting |  | 0.13d? | 2010-04-14 A | 2010-04-14 A | 68 | 100% |  |  |  | must start on 2010-04-14 | Qinyan [95%] | 1h | 1h |
| 70 | 7.1.4 | **Develop Mapping Description** |  | 15.79d? | 2010-04-14 A | 2010-05-05 A | 69 | 100% |  |  |  |  |  | 120h | 120h |
| 71 | 7.1.4.1 | Work with LIDC/AIM experts to have the controlled vocabularies agree with latest AIM 3.0 |  | 7.37d? | 2010-04-14 A | 2010-04-23 A |  | 100% |  |  |  |  | Qinyan [95%] | 56h | 56h |
| 72 | 7.1.4.2 | Map the general info section including patient, study and series mapping |  | 2.11d? | 2010-04-23 A | 2010-04-27 A | 71 | 100% |  |  |  |  | Qinyan [95%] | 16h | 16h |
| 73 | 7.1.4.3 | Map the image observation section |  | 2.11d? | 2010-04-27 A | 2010-04-29 A | 71 | 100% |  |  |  |  | Qinyan [95%] | 16h | 16h |
| 74 | 7.1.4.4 | Map the anatomic entity section |  | 2.11d? | 2010-04-29 A | 2010-05-03 A | 71 | 100% |  |  |  |  | Qinyan [95%] | 16h | 16h |
| 75 | 7.1.4.5 | Map the geometry shape section |  | 2.11d? | 2010-05-03 A | 2010-05-05 A | 71 | 100% |  |  |  |  | Qinyan [95%] | 16h | 16h |
| 76 | 7.1.5 | Modify the Java conversion code |  | 2.11d? | 2010-05-05 A | 2010-05-10 A | 70 | 100% |  |  |  |  | Qinyan [95%] | 16h | 16h |
| 77 | 7.1.6 | Convert All LIDC Annotation files |  | 1.05d? | 2010-05-10 A | 2010-05-11 A | 76 | 100% |  |  |  |  | Qinyan [95%] | 8h | 8h |
| 78 | 7.1.7 | Resubmit LIDC images to DEV or local box |  | 3.16d? | 2010-05-11 A | 2010-05-14 A | 77 | 100% |  |  |  |  | Qinyan [95%] | 24h | 24h |
| 79 | 7.1.8 | Run all files through "Max" to produce matching.xml |  | 1.05d? | 2010-05-14 A | 2010-05-17 A | 78 | 100% |  |  |  |  | Qinyan [95%] | 8h | 8h |
| 80 | 7.1.9 | Modify the XSLT files to make it comply with latest AIM model |  | 1.05d? | 2010-05-12 A | 2010-05-18 A | 79 | 100% |  |  |  |  | Qinyan [95%] | 8h | 8h |
| 81 | 7.1.10 | Convert all matching.xml to annotationOfAnnotation |  | 0.53d? | 2010-05-18 A | 2010-05-18 A | 80 | 100% |  |  |  |  | Qinyan [95%] | 4h | 4h |
| 82 | 7.1.11 | **Validation** |  | 28.29d? | 2010-05-18 A | 2010-06-28 |  | 44% | 15.72d? | 149.54d |  |  |  | 72h | 32h |
| 83 | 7.1.11.1 | Validate output against XSD (syntax) |  | 1.05d? | 2010-05-18 A | 2010-05-20 A | 81 | 100% |  |  |  |  | Qinyan [95%] | 8h | 8h |
| 84 | 7.1.11.2 | Load all LIDC/AIM 3.0 output into IBM DB2 |  | 3.16d? | 2010-05-20 A | 2010-05-25 A | 81 | 100% |  |  |  |  | Qinyan [95%] | 24h | 24h |
| 85 | 7.1.11.3 | ClearCanvas released | milestone | 0d | 2010-06-21 | 2010-06-21 |  |  |  | 149.54d | 0d | start no earlier than 2010-06-21 | Pat |  |  |
| 86 | 7.1.11.4 | Support LIDC/CIP exports in validating output (semantics) |  | 1.05w? | 2010-06-21 | 2010-06-28 | 85 |  |  | 149.54d |  |  | Qinyan [95%] | 40h |  |
| 87 | 7.1.12 | Write user guide for conversion |  | 2.11d? | 2010-04-13 A | 2010-05-26 A |  | 100% |  |  |  |  | Qinyan [95%] | 16h | 16h |
| 88 | 7.2 | Research AIM 2.0 Support in Cedara |  | 5.26d? | 2010-05-26 A | 2010-06-02 A |  | 100% |  |  |  |  | Qinyan [95%] | 40h | 40h |

Notes:
- 68: Until we do this..... these estimates might not be terribly accurate
- 71: This could be a black hole.

| ID | WBS | Task | Duration | Start | Finish | Predecessors | Complete | Remaining | Total slack | Free slack | Constraint | Resources | Work | Actual work |
| --- | --- | --- | --- | --- | --- | --- | --- | --- | --- | --- | --- | --- | --- | --- |
| 89 | 7.3 | **Convert LIDC AIM 3.0 back to AIM 2.0** | 25.32d? | 2010-06-03 A | 2010-07-08 A |  | 100% |  |  |  |  |  | 160h | 160h |
| 90 | 7.3.1 | **Convert LIDC AIM 3.0 to Cedara's version of AIM 2.0** | 25.32d? | 2010-06-03 A | 2010-07-08 A | 88 | 100% |  |  |  |  |  | 160h | 160h |
| 91 | 7.3.1.1 | Create xslt file for mapping LIDC AIM 3.0 to Cedara's version of AIM 2.0 | 10.53d? | 2010-06-03 A | 2010-06-17 A |  | 100% |  |  |  |  | Qinyan [95%] | 80h | 80h |
| 92 | 7.3.1.2 | Create script for mass conversion and convert all existing annotation files | 5.26d? | 2010-06-03 A | 2010-07-01 A |  | 100% |  |  |  |  | Qinyan [95%] | 40h | 40h |
| 93 | 7.3.1.3 | Develop a program for streaming line the converted files and loaded all files into NBIA dev database | 5.26d? | 2010-06-03 A | 2010-07-08 A |  | 100% |  |  |  |  | Qinyan [95%] | 40h | 40h |
| 94 | 7.4 | Revisit conversion program with final AIM 3.0 | 5.26d? | 2010-07-08 | 2010-07-15 |  |  |  | 136.22d |  |  | Qinyan [95%] | 40h |  |
| 96 | 7.5 | **AIM Data Services** | 101.68d? | 2010-04-08 | 2010-08-27 |  |  |  | 105.12d |  |  |  | 296h |  |
| 97 | 7.5.1 | ARC | 1d? | 2010-04-08 | 2010-04-08 |  |  |  | 205.8d |  |  |  |  |  |
| 98 | 7.5.2 | Research Xindice vs. IBM DB2+pureXML | 5.26d? | 2010-07-15 | 2010-07-22 |  |  |  | 130.96d |  |  | Qinyan [95%] | 40h |  |
| 99 | 7.5.3 | Generate AIM Data Service with Introduce | 2.11d? | 2010-07-13 | 2010-07-15 |  |  |  | 105.12d | 0d | start no earlier than 2010-07-13 | Qinyan [95%] | 16h |  |
| 100 | 7.5.4 | Deploy AIM data service locally | 5.26d? | 2010-07-15 | 2010-07-22 | 99 |  |  | 105.12d | 0d |  | Qinyan [95%] | 40h |  |
| 101 | 7.5.5 | Develop functional tests for AIM data service | 5.26d? | 2010-07-22 | 2010-07-29 | 100 |  |  | 105.12d | 0d |  | Qinyan [95%] | 40h |  |
| 102 | 7.5.6 | Automated Deployment with BDA | 21.05d? | 2010-07-29 | 2010-08-27 | 101 |  |  | 105.12d |  |  | Qinyan [95%] | 160h |  |
| 104 | 8 | **NBIA 4.4.1** | 30.39d? | 2010-05-07 A | 2010-06-18 | 18 | 50% | 15.12d? | 154.91d |  |  |  | 24h | 24h |
| 105 | 8.1 | Update 4.4.1 installation guide | 1.05d? | 2010-06-07 A | 2010-06-18 A |  | 100% |  |  |  |  | Eric [95%] | 8h | 8h |
| 106 | 8.2 | Release Notes/announcements/Gforge update | 0.97d? | 2010-05-07 A | 2010-06-18 A | 105 | 100% |  |  |  |  | Paul M; Robert; Eric [95%] | 16h | 16h |
| 107 | 8.3 | Promote to Staging | 1d? | 2010-05-07 | 2010-05-10 |  |  |  | 184.3d |  |  |  |  |  |
| 108 | 8.4 | Promote to production | 1d? | 2010-05-07 | 2010-05-10 |  |  |  | 184.3d |  |  |  |  |  |
| 110 | 9 | **NBIA 4.5** | 132.21d? | 2010-04-08 A | 2010-10-11 |  | 5% | 126.24d? | 74.59d |  |  |  | 543.6h | 23.6h |
| 111 | 9.1 | Update 4.5 User Guide | 2.11d | 2010-06-18 A | 2010-06-22 A | 22 | 100% |  |  |  |  | Eric [95%] | 16h | 16h |
| 112 | 9.2 | Update 4.5 Installation Guide | 1d? | 2010-04-08 A | 2010-04-08 A |  | 100% |  |  |  |  | Eric [95%] | 7.6h | 7.6h |
| 113 | 9.3 | Review and Approve the NBIA 4.5 Release | 0.5d? | 2010-04-08 | 2010-04-08 |  |  |  | 202.15d | 127.55d |  | Robert; Peter | 8h |  |
| 114 | 9.4 | QA Testing | 12w | 2010-07-12 | 2010-10-01 | 27 |  |  | 74.59d | 0d | start no earlier than 2010-06-30 | Quy | 480h |  |
| 115 | 9.5 | Promote to Staging | 1.05d? | 2010-10-04 | 2010-10-05 | 23, 27, 114 |  |  | 74.59d | 0d |  | Eric [95%] | 8h |  |
| 116 | 9.6 | Promote to production | 1.05d? | 2010-10-05 | 2010-10-06 | 113, 115 |  |  | 74.59d | 0d |  | Eric [95%] | 8h |  |
| 117 | 9.7 | Release Notes/announcements/Gforge update | 2.11d? | 2010-10-06 | 2010-10-08 | 116, 22 |  |  | 74.59d | 0d |  | Eric [95%] | 16h |  |
| 118 | 9.8 | Perform Summary and Review of NBIA Release 4.5 | 1d? | 2010-10-08 | 2010-10-11 | 117 |  |  | 74.59d |  |  |  |  |  |
| 121 | 10 | NIAMS 4.4 Staging | 0.13d? | 2010-05-17 | 2010-05-17 |  |  |  | 179.35d |  |  | Eric [95%] | 1h |  |
| 122 | 11 | NIAMS 4.4 Production | 0.53d? | 2010-05-17 | 2010-05-17 |  |  |  | 178.83d |  |  | Eric [95%] | 4h |  |
| 123 | 12 | NIAMS 4.5 Staging | 0.13d? | 2010-05-17 | 2010-05-18 |  |  |  | 178.7d |  |  | Eric [95%] | 1h |  |
| 124 | 13 | NIAMS 4.5 Production | 0.53d? | 2010-05-18 | 2010-05-18 |  |  |  | 178.17d |  |  | Eric [95%] | 4h |  |
| 126 | 14 | Deprecation plan for unsecured service | 1d? | 2010-04-08 | 2010-04-08 |  |  |  | 205.8d |  |  |  |  |  |
| 127 | 15 | 3 months for new QA guy | 1d? | 2010-04-08 | 2010-04-08 |  |  |  | 205.8d |  |  |  |  |  |

Notes:
- 114: We don't ask QA to test the grid service stuff or LIDC stuff.... just the UI / In reality, this task isn't dependent on all bugs being fixed, QA can start testing as bug fixes become available.
- 115: 1d because paperwork needs to be filled out and install.properties need to be double checked by tech lead.... and staging is always the odd man out of the tiers which requires troubleshooting.
- 121: Awaiting day from systems team
