# Burndown

Schedule from MS Project, 2010-07-19 to 2010-10-06, A marks actual dates.
NCI

## Calendars

- Standard: Mon-Fri 08:00-12:00, 13:00-17:00; Sat-Sun off.

## Resources

| Resource |
| --- |
| Eric |
| Robert |
| Quy |
| Qinyan |
| Jim |

## Schedule

| ID | WBS | Task | Type | Duration | Start | Finish | Predecessors | Complete | Remaining | Total slack | Free slack | Constraint | Resources | Work | Actual work |
| --- | --- | --- | --- | --- | --- | --- | --- | --- | --- | --- | --- | --- | --- | --- | --- |
| 1 | 1 | **NIAMS 4.4.1** |  | 12d | 2010-07-19 A | 2010-08-03 |  | 99% | 0d | 46d |  |  |  | 108h | 108h |
| 2 | 1.1 | **NIAMS 4.4.1 Production** |  | 12d | 2010-07-19 A | 2010-08-03 |  | 99% | 0d | 0d |  |  | Eric | 108h | 108h |
| 3 | 1.1.1 | Prepare Deployment Instructions |  | 4h | 2010-07-19 A | 2010-07-19 A |  | 100% |  |  |  |  | Eric | 4h | 4h |
| 4 | 1.1.2 | Obtain Permission from Program Mgmt to push | milestone | 0d | 2010-07-19 | 2010-07-19 | 3 |  |  | 10.5d |  |  | Eric |  |  |
| 5 | 1.1.3 | Issue DRT to push | milestone | 0d | 2010-08-03 | 2010-08-03 | 4 |  |  | 0d |  | must start on 2010-08-03 | Eric |  |  |
| 6 | 1.1.4 | Dev Team Sanity Check |  | 1d | 2010-08-03 A | 2010-08-03 A | 5 | 100% |  |  |  |  | Eric | 8h | 8h |
| 7 | 1.2 | Release Announcement | milestone | 0d | 2010-08-03 | 2010-08-03 | 2 |  |  | 46d |  |  | Robert |  |  |
| 9 | 2 | **NBIA 4.5** |  | 50d? | 2010-07-19 | 2010-09-24 |  |  |  | 3d |  |  |  | 320h |  |
| 10 | 2.1 | QA Testing |  | 37d | 2010-07-22 | 2010-09-10 |  |  |  | 0d |  | must finish on 2010-09-10 | Quy | 296h |  |
| 11 | 2.2 | Promote to Staging |  | 1d? | 2010-09-13 | 2010-09-13 | 10 |  |  | 0d |  | must start on 2010-09-13 | Eric | 8h |  |
| 12 | 2.3 | Pre-release to SCI group |  | 1d? | 2010-08-16 | 2010-08-16 |  |  |  | 0d |  | must start on 2010-08-16 | Eric | 8h |  |
| 13 | 2.4 | Obtain permission to Promote to Production |  | 1d? | 2010-07-19 | 2010-07-19 |  |  |  | 57d |  |  |  |  |  |
| 14 | 2.5 | Promote to Production |  | 1d | 2010-09-24 | 2010-09-24 |  |  |  | 0d |  | must start on 2010-09-24 | Eric | 8h |  |
| 16 | 3 | **LIDC Conversion to AIM** |  | 5d | 2010-07-19 A | 2010-07-23 A |  | 100% |  |  |  |  |  | 40h | 40h |
| 17 | 3.1 | Regenerate with Patient Information and Polyline |  | 5d | 2010-07-19 A | 2010-07-23 A |  | 100% |  |  |  |  | Qinyan | 40h | 40h |
| 19 | 4 | **AIM 1.7 Local Deployment** |  | 15d | 2010-07-19 A | 2010-08-06 |  | 77% | 3.41d | 5d | 0d |  |  | 88h | 68h |
| 20 | 4.1 | Generate AIM Data Service with Introduce and commit to svn |  | 1d | 2010-07-26 A | 2010-07-26 A |  | 100% |  |  |  |  | Qinyan | 8h | 8h |
| 21 | 4.2 | Integrate project with Hudson |  | 1d | 2010-08-04 A | 2010-08-04 A | 20 | 100% |  |  |  |  | Eric | 8h | 8h |
| 22 | 4.3 | Install DB2 locally | milestone | 0d | 2010-07-19 | 2010-07-19 |  |  |  | 20d |  |  | Qinyan |  |  |
| 23 | 4.4 | Deploy generated service to Tomcat |  | 1d | 2010-07-27 A | 2010-07-27 A | 20 | 100% |  |  |  |  | Qinyan | 8h | 8h |
| 24 | 4.5 | Redo with caGrid 1.3 |  | 1d | 2010-07-28 A | 2010-07-28 A | 23 | 100% |  |  |  |  | Qinyan | 8h | 8h |
| 25 | 4.6 | Deploy generated service to JBoss 4.0.5 |  | 2d | 2010-07-29 A | 2010-07-30 A | 24 | 100% |  |  |  |  | Qinyan | 16h | 16h |
| 26 | 4.7 | Develop simple functional tests |  | 1w | 2010-08-02 A | 2010-08-06 | 25 | 50% | 0.5w | 5d |  |  | Qinyan | 40h | 20h |
| 28 | 5 | AHP/Dev tier ARC TBD | milestone | 0d | 2010-07-19 | 2010-07-19 |  |  |  | 0d |  |  |  |  |  |

Notes:
- 28: Outcome of XML DB wars with systems team.... determine when we can re-do the ARC and get a real DEV tier.

| ID | WBS | Task | Duration | Start | Finish | Predecessors | Complete | Remaining | Total slack | Free slack | Resources | Work | Actual work |
| --- | --- | --- | --- | --- | --- | --- | --- | --- | --- | --- | --- | --- | --- |
| 30 | 6 | **AIM Automated Deployment** | 25d | 2010-08-09 A | 2010-09-10 | 19 | 33% | 16.67d | 18d |  |  | 216h | 72h |
| 31 | 6.1 | Study BDA Wiki page/initial immersion | 1w | 2010-08-09 | 2010-08-13 |  |  |  | 18d | 0d | Qinyan | 40h |  |
| 32 | 6.2 | deploy:local:install | 2w | 2010-08-16 A | 2010-08-27 | 31 | 90% | 0.2w | 18d | 0d | Qinyan | 80h | 72h |
| 33 | 6.3 | deploy:local:upgrade | 1w | 2010-08-30 | 2010-09-03 | 32 |  |  | 23d |  | Qinyan | 40h |  |
| 34 | 6.4 | deploy:remote:upgrade | 1w | 2010-09-06 | 2010-09-10 | 32, 28 |  |  | 18d |  | Qinyan | 40h |  |
| 35 | 6.5 | Setup Hudson project to install and test deployment | 2d | 2010-08-16 | 2010-08-17 | 31, 26 |  |  | 36d |  | Eric | 16h |  |
| 37 | 7 | AIM Security | 4w? | 2010-09-09 | 2010-10-06 | 28 |  |  | 0d |  | Qinyan | 160h |  |
