# Grid Security

Schedule from MS Project, 2010-06-21 to 2010-10-15, A marks actual dates.
NCI

## Calendars

- Standard: Mon-Fri 08:00-12:00, 13:00-17:00; Sat-Sun off.

## Resources

| Resource |
| --- |
| Eric |
| Jim |
| Qinyan |
| Yiming |
| NBIA Team |
| ic |
| TBD |
| Robert |
| Peter |
| Paul M |
| Pat |
| Quy |

## Schedule

| ID | WBS | Task | Type | Duration | Start | Finish | Predecessors | Remaining | Total slack | Free slack | Constraint | Resources | Work |
| --- | --- | --- | --- | --- | --- | --- | --- | --- | --- | --- | --- | --- | --- |
| 1 | 1 | Ongoing Support for NBIA 4.4/4.5 Adopters/NCI Production support (E) |  | 17w | 2010-06-21 | 2010-10-15 |  |  | 0d |  |  | Eric [5%] | 34h |
| 2 | 2 | Ongoing Support for NBIA 4.4/4.5 Adopters/NCI Production support (J) |  | 17w | 2010-06-21 | 2010-10-15 |  |  | 0d |  |  | Jim [5%] | 34h |
| 3 | 3 | Ongoing Support for NBIA 4.4/4.5 Adopters/NCI Production support (Q) |  | 17w | 2010-06-21 | 2010-10-15 |  |  | 0d |  |  | Qinyan [5%] | 34h |
| 5 | 4 | **Bug Fixes** |  | 15d? | 2010-06-21 | 2010-07-09 |  |  | 3d |  |  |  | 60h |
| 6 | 4.1 | [#28945] CTP grinds to a halt when under severe load |  | 15d | 2010-06-21 | 2010-07-09 |  |  | 65.29d |  |  |  |  |
| 7 | 4.2 | [#28886] Restrict image visualization feature to series that Cedara can handle |  | 1.05d? | 2010-06-21 | 2010-06-22 |  |  | 79.24d |  |  | Jim [95%] | 8h |
| 8 | 4.3 | [#28947] Cine feature throws exception when viewing from data basket |  | 0.53d? | 2010-06-21 | 2010-06-21 |  |  | 79.76d |  |  | Eric [95%] | 4h |
| 9 | 4.4 | [#28978] Annotation size of series in data basket always show 0 |  | 1.05d? | 2010-06-24 | 2010-06-25 |  |  | 0d |  | must start on 2010-06-24 | Eric [95%] | 8h |
| 10 | 4.5 | [#28877] Legitimate quarantine can cause every other image in queue to be quarantined (test) |  | 5.26d? | 2010-06-21 | 2010-06-28 |  |  | 75.03d |  |  | Jim [95%] | 40h |
| 12 | 5 | **NIAMS 4.4.1** |  | 8d? | 2010-06-21 A | 2010-06-30 |  | 8d? | 77d |  |  |  |  |
| 13 | 5.1 | Inform Imaging Program of need for Release Announcment |  | 1d? | 2010-06-30 A | 2010-06-30 |  | 1d? | 77d |  |  |  |  |
| 14 | 5.2 | **NIAMS 4.4.1 Staging** |  | 0d? | 2010-06-21 | 2010-06-21 |  |  | 85d | 0d |  |  |  |
| 15 | 5.2.1 | Prepare Deployment Instructions | milestone | 0d? | 2010-06-21 | 2010-06-21 |  |  | 85d | 0d |  | Eric [95%] |  |
| 16 | 5.2.2 | Obtain Permission from Program Mgmt to push | milestone | 0d? | 2010-06-21 | 2010-06-21 |  |  | 85d | 0d |  | Eric [95%] |  |
| 17 | 5.2.3 | Issue DRT to push | milestone | 0d? | 2010-06-21 | 2010-06-21 | 15, 16 |  | 85d |  |  | Eric [95%] |  |
| 18 | 5.3 | **NIAMS 4.4.1 Production** |  | 0d? | 2010-06-21 | 2010-06-21 | 14 |  | 85d | 0d |  | Eric [95%] |  |
| 19 | 5.3.1 | Prepare Deployment Instructions | milestone | 0d? | 2010-06-21 | 2010-06-21 |  |  | 85d |  |  | Eric [95%] |  |
| 20 | 5.3.2 | Obtain Permission from Program Mgmt to push | milestone | 0d? | 2010-06-21 | 2010-06-21 |  |  | 85d |  |  | Eric [95%] |  |
| 21 | 5.3.3 | Issue DRT to push | milestone | 0d? | 2010-06-21 | 2010-06-21 |  |  | 85d |  |  | Eric [95%] |  |
| 22 | 5.4 | Release Announcement | milestone | 0d? | 2010-06-21 | 2010-06-21 | 18 |  | 85d |  |  | Robert |  |
| 24 | 6 | **NBIA 4.5** |  | 72.71d? | 2010-06-21 | 2010-09-29 |  |  | 12.29d | 0d |  |  | 520h |
| 25 | 6.1 | Pre-Release to SCI Group |  | 1d? | 2010-06-21 | 2010-06-21 |  |  | 84d |  |  |  |  |
| 26 | 6.2 | QA Testing |  | 12w | 2010-07-01 | 2010-09-22 |  |  | 12.29d | 0d | start no earlier than 2010-07-01 | Quy | 480h |
| 27 | 6.3 | Promote to Staging |  | 1.05d? | 2010-09-23 | 2010-09-24 | 5, 26 |  | 12.29d | 0d |  | Eric [95%] | 8h |
| 28 | 6.4 | Review and Approve the NBIA 4.5 Release |  | 0.5d? | 2010-09-24 | 2010-09-24 | 27 |  | 12.29d | 0d |  | Robert; Peter | 8h |
| 29 | 6.5 | Promote to production |  | 1.05d? | 2010-09-24 | 2010-09-27 | 28 |  | 12.29d | 0d |  | Eric [95%] | 8h |
| 30 | 6.6 | Release Notes/announcements/Gforge update |  | 2.11d? | 2010-09-27 | 2010-09-29 | 29 |  | 12.29d |  |  | Eric [95%] | 16h |
| 31 | 6.7 | St. Joseph's Installation |  | 1d? | 2010-09-10 | 2010-09-10 |  |  | 0d |  | must start on 2010-09-10 |  |  |

Notes:
- 10: Eric was on this too.... but not adding as resource which will complicate plan.
- 24: Peter quoted release date as Sep 24. / Confirm production v. dist etc.
- 26: We don't ask QA to test the grid service stuff or LIDC stuff.... just the UI / In reality, this task isn't dependent on all bugs being fixed, QA can start testing as bug fixes become available.
- 27: 1d because paperwork needs to be filled out and install.properties need to be double checked by tech lead.... and staging is always the odd man out of the tiers which requires troubleshooting.

| ID | WBS | Task | Type | Duration | Start | Finish | Predecessors | Total slack | Free slack | Resources | Work |
| --- | --- | --- | --- | --- | --- | --- | --- | --- | --- | --- | --- |
| 33 | 7 | **NIAMS 4.5** |  | 72.71d? | 2010-06-21 | 2010-09-29 |  | 12.29d |  |  |  |
| 34 | 7.1 | Inform Imaging Program of need for Release Announcment |  | 1d? | 2010-06-21 | 2010-06-21 |  | 84d |  |  |  |
| 35 | 7.2 | **NIAMS 4.5 Staging** |  | 0d? | 2010-09-29 | 2010-09-29 | 24 | 12.29d | 0d |  |  |
| 36 | 7.2.1 | Prepare Deployment Instructions | milestone | 0d? | 2010-09-29 | 2010-09-29 |  | 12.29d | 0d | Eric [95%] |  |
| 37 | 7.2.2 | Obtain Permission from Program Mgmt to push | milestone | 0d? | 2010-09-29 | 2010-09-29 |  | 12.29d | 0d | Eric [95%] |  |
| 38 | 7.2.3 | Issue DRT to push | milestone | 0d? | 2010-09-29 | 2010-09-29 | 36, 37 | 12.29d |  | Eric [95%] |  |
| 39 | 7.3 | **NIAMS 4.5 Production** |  | 0d? | 2010-09-29 | 2010-09-29 | 35 | 12.29d | 0d | Eric [95%] |  |
| 40 | 7.3.1 | Prepare Deployment Instructions | milestone | 0d? | 2010-09-29 | 2010-09-29 |  | 12.29d |  | Eric [95%] |  |
| 41 | 7.3.2 | Obtain Permission from Program Mgmt to push | milestone | 0d? | 2010-09-29 | 2010-09-29 |  | 12.29d |  | Eric [95%] |  |
| 42 | 7.3.3 | Issue DRT to push | milestone | 0d? | 2010-09-29 | 2010-09-29 |  | 12.29d |  | Eric [95%] |  |
| 43 | 7.4 | Release Announcement | milestone | 0d? | 2010-09-29 | 2010-09-29 | 39 | 12.29d |  | Robert |  |
| 45 | 8 | **LIDC Conversion to AIM 2.0/3.0** |  | 5.26d? | 2010-06-21 | 2010-06-28 |  | 79.74d |  |  | 80h |
| 46 | 8.1 | Leftovers |  | 5.26d? | 2010-06-21 | 2010-06-28 |  | 79.74d |  | Qinyan [95%] | 40h |
| 47 | 8.2 | Revisit conversion program with final AIM 3.0 |  | 5.26d? | 2010-06-21 | 2010-06-28 |  | 79.74d |  | Qinyan [95%] | 40h |
| 49 | 9 | **AIM Data Services** |  | 5.26d? | 2010-06-21 | 2010-06-28 |  | 79.74d |  |  | 40h |
| 50 | 9.1 | ARC | milestone | 0d? | 2010-06-21 | 2010-06-21 |  | 85d |  | Eric [95%] |  |
| 51 | 9.2 | Research Xindice vs. IBM DB2+pureXML |  | 5.26d? | 2010-06-21 | 2010-06-28 |  | 79.74d |  | Qinyan [95%] | 40h |
| 53 | 10 | **Unscheduled, but anticipated Tasks:** |  | 5.26d? | 2010-06-21 | 2010-06-28 |  | 79.74d |  |  | 40h |
| 54 | 10.1 | Support LIDC/CIP exports in validating output (semantics) after ClearCanvas released |  | 1.05w? | 2010-06-21 | 2010-06-28 |  | 79.74d |  |  | 40h |
