# reengineeringPlanfor4.0

Schedule from MS Project, 2009-04-02 to 2009-07-07, A marks actual dates.
NCI

## Calendars

- Standard: Mon-Fri 08:00-12:00, 13:00-17:00; Sat-Sun off.

## Resources

| Resource |
| --- |
| Team |
| Jennifer |
| Jim |
| Qinyan |
| Eric |
| QA |
| Thai |
| Systems |
| Anand |
| Sudha |
| John F |
| Jill Hadfield |
| 8 |
| E |
| 100 |
| 60 |
| caIntegrator2 |
| Jill |
| Jill Hadfiled |
| Jill Hadfied |
| System |
| Brian |
| Justin |
| BDA |
| Link the data set with study |
| series and image to get required IDs |
| Parse the sheet to populate the AIM object |
| Qinyna |

## Schedule

| ID | WBS | Task | Duration | Start | Finish | Predecessors | Complete | Remaining | Total slack | Free slack | Resources | Work | Actual work |
| --- | --- | --- | --- | --- | --- | --- | --- | --- | --- | --- | --- | --- | --- |
| 1 | 1 | **Create AIM data service with LIDC and Vasari Data** | 68.56d? | 2009-04-02 A | 2009-07-07 |  | 41% | 40.59d? | 0d |  |  | 431.6h | 161.6h |
| 2 | 1.1 | **Implementation** | 68.56d? | 2009-04-02 A | 2009-07-07 |  | 39% | 41.6d? | 0d |  |  | 423.6h | 159.6h |
| 3 | 1.1.1 | **Convert LIDC Annotation to AIM 1.12** | 17.12d? | 2009-04-02 A | 2009-04-27 |  | 96% | 0.75d? | 51.44d |  |  | 88h | 83.2h |
| 4 | 1.1.1.1 | Parse LIDC annotation to AIM objects | 6.25d? | 2009-04-02 A | 2009-04-10 A |  | 100% |  |  |  | Qinyan [80%] | 40h | 40h |
| 5 | 1.1.1.2 | Generate AIM xml files based on AIM objects | 7.12d? | 2009-04-10 A | 2009-04-21 | 4 | 95% | 0.38d? | 54.81d | 0d | Qinyan [80%] | 24h | 21.6h |
| 6 | 1.1.1.3 | validate the result | 3.75d? | 2009-04-21 A | 2009-04-27 | 5 | 90% | 0.38d? | 51.44d |  | Qinyan [80%] | 24h | 21.6h |
| 7 | 1.1.2 | **Franken AIM** | 12.56d? | 2009-04-27 A | 2009-05-13 |  | 98% | 0.25d? | 0d |  |  | 78h | 76.4h |
| 8 | 1.1.2.1 | Update AIM 1.12 model to Franken AIM | 1.56d? | 2009-04-27 A | 2009-04-28 A | 3 | 100% |  |  |  | Qinyan [80%] | 10h | 10h |
| 9 | 1.1.2.2 | Generate xsd file based on Franken AIM eap | 2.5d? | 2009-04-28 A | 2009-05-01 A | 8 | 100% |  |  |  | Qinyan [80%] | 16h | 16h |
| 10 | 1.1.2.3 | Generate Franken AIM Data service | 1d? | 2009-05-01 A | 2009-05-04 A | 9 | 100% |  |  |  | Qinyan [50%] | 4h | 4h |
| 11 | 1.1.2.4 | Deploy Franken AIM Data Service to Dev | 2.5d? | 2009-05-04 A | 2009-05-06 A | 10 | 100% |  |  |  | Qinyan [80%] | 16h | 16h |
| 12 | 1.1.2.5 | Test Franken AIM Data Service | 1.25d? | 2009-05-06 A | 2009-05-07 A | 11 | 100% |  |  |  | Qinyan [80%] | 8h | 8h |
| 13 | 1.1.2.6 | Implement Unit Test for Franken AIM Data service | 2.5d? | 2009-05-07 A | 2009-05-12 | 12 | 95% | 0.12d? | 1.12d | 0d | Qinyan [80%] | 16h | 15.2h |
| 14 | 1.1.2.7 | Modify conversion program to Franken AIM model | 1.25d? | 2009-05-12 A | 2009-05-13 | 13 | 90% | 0.12d? | 0d |  | Qinyan [80%] | 8h | 7.2h |
| 15 | 1.1.3 | Re-convert LIDC annotation to Franken AIM model | 1.25d? | 2009-05-13 | 2009-05-14 | 14 |  |  | 0d |  | Qinyan [80%] | 8h |  |
| 16 | 1.1.4 | Generate AIM format LIDC annotation for the first 30 series to LIDC folks to validate | 2.5d? | 2009-05-14 | 2009-05-19 | 15 |  |  | 0d |  | Qinyan [80%] | 16h |  |
| 17 | 1.1.5 | **Parse vasari spreadsheet to AIM** | 12.5d? | 2009-05-19 | 2009-06-04 | 14, 16 |  |  | 0d |  |  | 80h |  |
| 18 | 1.1.5.1 | Link the data set with study,series and image to get required IDs | 6.25d? | 2009-05-19 | 2009-05-27 |  |  |  | 0d |  | Qinyan [80%] | 40h |  |
| 19 | 1.1.5.2 | Parse the sheet to populate the AIM object | 6.25d? | 2009-05-27 | 2009-06-04 | 18 |  |  | 0d |  | Qinyan [80%] | 40h |  |
| 20 | 1.1.6 | **Submit/upload generated AIM file to Data service** | 13.25d? | 2009-06-04 | 2009-06-24 | 17 |  |  | 0d |  |  | 93.6h |  |
| 21 | 1.1.6.1 | Write a tool to handle the mass submission | 3.75d? | 2009-06-04 | 2009-06-10 |  |  |  | 8.88d | 0d | Qinyan [80%] | 24h |  |
| 22 | 1.1.6.2 | submission | 0.62d? | 2009-06-10 | 2009-06-11 | 21 |  |  | 8.88d |  | Qinyan [80%] | 4h |  |
| 23 | 1.1.6.3 | Modify Max and write a tool to generate all p-maps using Modified Max software | 4d | 2009-06-04 | 2009-06-10 |  |  |  | 0d |  | Qinyan [80%] | 25.6h |  |
| 24 | 1.1.6.4 | Convert all p-maps to annotation of annotation using MapForce | 6.25d? | 2009-06-10 | 2009-06-19 | 23 |  |  | 0d |  | Qinyan [80%] | 40h |  |
| 25 | 1.1.6.5 | Validate and load annotation of annotation files to AIM data service | 3d | 2009-06-19 | 2009-06-24 | 24 |  |  | 0d |  |  |  |  |
| 26 | 1.1.7 | Create BDA certified deployment script | 9.38d? | 2009-06-24 | 2009-07-07 | 20 |  |  | 0d |  | Qinyan [80%] | 60h |  |

| ID | WBS | Task | Duration | Start | Finish | Predecessors | Complete | Remaining | Total slack | Resources | Work | Actual work |
| --- | --- | --- | --- | --- | --- | --- | --- | --- | --- | --- | --- | --- |
| 27 | 1.2 | **Document** | 1d? | 2009-04-02 A | 2009-04-02 |  | 28% | 0.72d? | 67.56d |  |  |  |
| 28 | 1.2.1 | architecture diagram for AIM that shows the relevant parts of NCIA interacting with it | 1d? | 2009-04-02 | 2009-04-02 |  |  |  | 67.56d |  |  |  |
| 29 | 1.2.2 | Update the NCIA architecture diagram | 1d? | 2009-04-02 A | 2009-04-02 |  | 56% | 0.44d? | 67.56d |  |  |  |
| 30 | 1.3 | **Enviorment** | 23.19d? | 2009-04-02 A | 2009-05-05 |  | 71% | 6.62d? | 45.38d |  | 8h | 2h |
| 31 | 1.3.1 | Request SVN repository | 5d? | 2009-04-02 A | 2009-04-08 A |  | 100% |  |  | Jennifer [5%] | 2h | 2h |
| 32 | 1.3.2 | Check in all developed code | 1d? | 2009-05-04 | 2009-05-05 | 10 |  |  | 45.38d | Qinyan [25%] | 2h |  |
| 33 | 1.3.3 | Create AHP track | 1d? | 2009-04-02 | 2009-04-02 |  |  |  | 67.56d |  | 4h |  |
| 34 | 1.4 | **Test** | 1d? | 2009-04-02 | 2009-04-02 |  |  |  | 67.56d |  |  |  |
| 35 | 1.4.1 | Validate the AIM format annoation (LIDC, Vasari) | 1d? | 2009-04-02 | 2009-04-02 |  |  |  | 67.56d |  |  |  |
| 36 | 1.4.2 | Submit/Retrieve AIM annotation from AIM service | 1d? | 2009-04-02 | 2009-04-02 |  |  |  | 67.56d |  |  |  |

Notes:
- 35: Who can validate?
